# SDK 3.2

How a schedule from MS Project changed from version to version. A marks actual dates.

## Version 1 (saved 2006-06-28)

Note of the change: *** empty log message ***

| ID | WBS | Task | Duration | Start | Finish | Predecessors | Complete | Total float | Constraint |
| --- | --- | --- | --- | --- | --- | --- | --- | --- | --- |
| 1 |  | Project startup | 0d | 2006-05-23 A | 2006-05-23 A |  | 100% |  |  |
| 2 | 2 | **Inception** | 22d | 2006-05-23 A | 2006-06-22 |  | 99% | 0d |  |
| 3 |  | Short term Inception plan | 2d | 2006-05-23 A | 2006-05-24 A | 1 | 100% |  |  |
| 4 |  | Project infrastructure set up | 2d | 2006-05-23 A | 2006-05-24 A | 3 | 100% |  |  |
| 5 |  | Transition repository from incumbent team | 5d | 2006-05-23 A | 2006-05-30 A | 3 | 100% |  |  |
| 6 |  | Scope and requirement review | 5d | 2006-05-23 A | 2006-05-30 A | 4 | 100% |  |  |
| 7 |  | Project plan development | 4d | 2006-05-23 A | 2006-05-26 A | 1 | 100% |  |  |
| 8 |  | Project Plan Draft (C1.C1 Draft) | 0d | 2006-05-26 A | 2006-05-26 A |  | 100% |  | start no earlier than 2006-05-26 |
| 9 |  | NCICB review of draft project plan | 2d | 2006-05-26 A | 2006-05-30 A | 8 | 100% |  |  |
| 10 |  | Requirements analysis and grouping | 1d | 2006-05-31 A | 2006-05-31 A | 6 | 100% |  |  |
| 11 |  | Schedule Transition Meetings | 1d | 2006-06-01 A | 2006-06-01 A | 10 | 100% |  |  |
| 12 |  | Risk analysis | 1d | 2006-06-02 A | 2006-06-02 A | 11 | 100% |  |  |
| 13 |  | Scope document preparation | 6d | 2006-06-05 A | 2006-06-12 A | 12 | 100% |  |  |
| 14 |  | Project Plan Final (C1.C1. Final) | 0d | 2006-06-05 A | 2006-06-05 A |  | 100% |  | start no earlier than 2006-06-05 |
| 15 |  | Overall Iteration plan and schedule | 1d | 2006-06-05 A | 2006-06-05 A | 14 | 100% |  |  |
| 16 |  | Scope document Draft | 1d | 2006-06-06 A | 2006-06-06 A | 15 | 100% |  |  |
| 17 |  | QA and internal review | 2d | 2006-06-07 A | 2006-06-08 A | 16 | 100% |  |  |
| 18 |  | Deliver draft scope document, iteration plan, risk list | 0d | 2006-06-08 A | 2006-06-08 A | 17 | 100% |  |  |
| 19 |  | NCICB review | 10d | 2006-06-09 A | 2006-06-22 A | 18 | 100% |  |  |
| 20 |  | Transition Checkpoint Review Meeting | 0d | 2006-06-14 A | 2006-06-14 |  | 50% | 0d | start no earlier than 2006-06-14 |
| 21 |  | Revise scope and iteration plan | 3d | 2006-06-14 A | 2006-06-16 A | 20 | 100% |  |  |
| 22 |  | Final scope document | 1d | 2006-06-19 A | 2006-06-19 A | 21 | 100% |  |  |
| 23 | 3 | **Elaboration** | 51d | 2006-06-01 A | 2006-08-11 |  | 19% | 198d |  |
| 24 | 3.1 | **Iteration 1** | 49d | 2006-06-01 A | 2006-08-09 |  | 22% | 200d |  |
| 25 |  | Detailed Plan for Elaboration | 1d | 2006-06-06 A | 2006-06-06 A | 15 | 100% |  |  |
| 26 |  | Develop Candidate Requirements Document | 1d | 2006-06-07 A | 2006-06-07 A | 25 | 100% |  |  |
| 27 | 3.1.3 | **Analysis and requirement gathering/LOEs** | 6.75d | 2006-06-01 A | 2006-06-09 A | 10 | 100% |  |  |
| 28 |  | Exception Handling | 1d | 2006-06-01 A | 2006-06-01 A |  | 100% |  |  |
| 29 |  | Meet With caAdapter Team | 0.25d | 2006-06-02 A | 2006-06-02 A | 28 | 100% |  | start no earlier than 2006-06-01 |
| 30 |  | caAdapter Support | 1d | 2006-06-02 A | 2006-06-05 A | 29 | 100% |  |  |
| 31 |  | Junit Framework | 1d | 2006-06-05 A | 2006-06-06 A | 30 | 100% |  | start no earlier than 2006-06-05 |
| 32 |  | Castor XML Serialization | 1d | 2006-06-06 A | 2006-06-07 A | 31 | 100% |  |  |
| 33 |  | caCore Dependency Removal | 0.5d | 2006-06-07 A | 2006-06-07 A | 32 | 100% |  |  |
| 34 |  | Query Performance | 1d | 2006-06-07 A | 2006-06-08 A | 33 | 100% |  |  |
| 35 |  | Identify Technical Document Deliverables | 1d | 2006-06-08 A | 2006-06-09 A | 34 | 100% |  |  |
| 36 |  | Create Scope Document Draft | 5d | 2006-06-05 A | 2006-06-09 A |  | 100% |  | start no earlier than 2006-06-05 |
| 37 |  | Revised Scope Document Complete | 0d | 2006-06-13 A | 2006-06-13 A |  | 100% |  | start no earlier than 2006-06-13 |
| 38 |  | Revise PM Project Plan | 6d | 2006-06-12 A | 2006-06-19 A | 36 | 100% |  |  |
| 39 |  | Revised PM Project Plan Submitted | 0d | 2006-06-19 A | 2006-06-19 A |  | 100% |  | start no earlier than 2006-06-19 |
| 40 |  | Write General Design | 6d | 2006-06-09 A | 2006-06-19 A | 35 | 100% |  |  |
| 41 |  | General Design Doc Posted for Review | 0d | 2006-06-19 A | 2006-06-19 A |  | 100% |  | start no earlier than 2006-06-19 |
| 42 |  | UML Model Changes Approved | 0d | 2006-06-30 A | 2006-06-30 A |  | 100% |  | start no earlier than 2006-06-30 |
| 43 |  | Develop Use Case model and Supp Spec | 5d | 2006-06-19 | 2006-06-26 | 40 |  | 27.25d |  |
| 44 |  | QA and internal review | 5d | 2006-06-26 | 2006-07-03 | 43 |  | 226.25d |  |
| 45 |  | Deliver Draft overall Requirements document (C1.C2 draft) | 0d | 2006-07-13 | 2006-07-13 |  |  | 2d | start no earlier than 2006-07-13 |
| 46 |  | Develop Test approach | 5d | 2006-07-13 | 2006-07-19 | 45 |  | 215d |  |
| 47 |  | Final 3.2 Scope/Project Plan to Gforge | 0d | 2006-06-26 | 2006-06-26 |  |  | 232d | start no earlier than 2006-06-26 |
| 48 |  | Deliver Final overall Requirements document (c1.C2 Final) | 0d | 2006-07-26 | 2006-07-26 | 45FS+10d, 47 |  | 14d | start no earlier than 2006-06-27 |
| 49 |  | Prepare Designs for integration with NCICB tools | 4d | 2006-06-26 | 2006-06-30 | 43 |  | 31.25d |  |
| 50 |  | Deliver draft design for tool integration (Group 1, C1.C6 Draft) | 0d | 2006-06-30 | 2006-06-30 | 49 |  | 31.25d |  |
| 51 |  | NCICB review | 10d | 2006-06-30 | 2006-07-17 | 50 |  | 39.25d |  |
| 52 |  | Revise design | 5d | 2006-07-17 | 2006-07-24 | 51 |  | 39.25d |  |
| 53 |  | Deliver Final design for tool integration (Group 1, C1.C6 Final)) | 0d | 2006-07-31 | 2006-07-31 | 52 |  | 35d | start no earlier than 2006-07-31 |
| 54 | 3.1.22 | **Develop draft software architecture** | 20d | 2006-06-30 | 2006-07-31 |  |  | 51.25d |  |
| 55 | 3.1.22.1 | **Develop architecture of code generation** | 20d | 2006-06-30 | 2006-07-31 |  |  | 51.25d |  |
| 56 |  | Build process/Design Thick Client Jar | 3d | 2006-06-30 | 2006-07-06 | 50 |  | 127.75d |  |
| 57 |  | Baseline draft build process/thick client jar design | 0d | 2006-07-06 | 2006-07-06 | 56 |  | 144.75d |  |
| 58 |  | Code generation framework | 15d | 2006-07-06 | 2006-07-27 | 56 |  | 127.75d |  |
| 59 |  | Baseline draft code generation framework design | 0d | 2006-07-27 | 2006-07-27 | 58 |  | 129.75d |  |
| 60 |  | Modeling constraints | 2d | 2006-07-27 | 2006-07-31 | 58 |  | 127.75d |  |
| 61 |  | Baseline draft modeling constraint | 0d | 2006-07-31 | 2006-07-31 | 60 |  | 127.75d |  |
| 62 | 3.1.22.2 | **Develop architecture of generated system** | 20d | 2006-06-30 | 2006-07-31 |  |  | 51.25d |  |
| 63 |  | Exception handling | 3d | 2006-06-30 | 2006-07-06 | 50 |  | 127.75d |  |
| 64 |  | Baseline draft exception handling design | 0d | 2006-07-06 | 2006-07-06 | 63 |  | 144.75d |  |
| 65 |  | Persistence tier design | 3d | 2006-07-06 | 2006-07-11 | 63 |  | 127.75d |  |
| 66 |  | Baseline draft persistence design | 0d | 2006-07-11 | 2006-07-11 | 65 |  | 141.75d |  |
| 67 |  | Business tier design | 3d | 2006-07-11 | 2006-07-14 | 65 |  | 127.75d |  |
| 68 |  | Baseline draft business tier design | 0d | 2006-07-14 | 2006-07-14 | 67 |  | 138.75d |  |
| 69 |  | Service layer design | 3d | 2006-07-14 | 2006-07-19 | 67 |  | 127.75d |  |
| 70 |  | Baseline draft service tier design | 0d | 2006-07-19 | 2006-07-19 | 69 |  | 135.75d |  |

| ID | WBS | Task | Duration | Start | Finish | Predecessors | Total float | Constraint |
| --- | --- | --- | --- | --- | --- | --- | --- | --- |
| 71 |  | Query mechanism design | 3d | 2006-07-19 | 2006-07-24 | 69 | 127.75d |  |
| 72 |  | Baseline draft query mechanism design | 0d | 2006-07-24 | 2006-07-24 | 71 | 132.75d |  |
| 73 |  | Security design | 2d | 2006-07-24 | 2006-07-26 | 71 | 127.75d |  |
| 74 |  | Baseline draft security design | 0d | 2006-07-26 | 2006-07-26 | 73 | 130.75d |  |
| 75 |  | Writable API design | 3d | 2006-07-26 | 2006-07-31 | 73 | 127.75d |  |
| 76 |  | Baseline draft writable API design | 0d | 2006-07-31 | 2006-07-31 | 75 | 127.75d |  |
| 77 |  | Deliver Draft Software Design for SDK enhancements (C1.C3 Draft) | 0d | 2006-07-18 | 2006-07-18 | 57, 64, 54 | 44d | start no earlier than 2006-07-18 |
| 78 |  | NCICB review | 10d | 2006-07-18 | 2006-07-31 | 77 | 49d |  |
| 79 |  | Revise/Update design | 5d | 2006-08-01 | 2006-08-07 | 78 | 49d |  |
| 80 |  | Deliver Final Software design for SDK enhancements (Group 2,3) (C1.C3, final) | 0d | 2006-08-08 | 2006-08-08 | 79 | 49d | start no earlier than 2006-08-08 |
| 81 |  | Review/Revise Task Plan | 2d | 2006-08-08 | 2006-08-09 | 80 | 198d |  |
| 82 | 3.2 | **Iteration 2** | 22d | 2006-07-13 | 2006-08-11 |  | 198d |  |
| 83 |  | Test Plan Development Intial Template Draft | 15d | 2006-07-13 | 2006-08-02 | 45 | 199.5d | start no earlier than 2006-06-21 |
| 84 |  | Test Plan Review | 0.5d | 2006-08-03 | 2006-08-03 | 83 | 199.5d | start no earlier than 2006-07-05 |
| 85 |  | Revise test plan | 3d | 2006-08-03 | 2006-08-08 | 84 | 199.5d |  |
| 86 |  | Test Plan Baselined | 0d | 2006-08-08 | 2006-08-08 | 85 | 199.5d |  |
| 87 |  | Review/Revise Task Plan | 2d | 2006-08-10 | 2006-08-11 | 86, 81 | 198d |  |
| 88 | 4 | **Construction** | 117d | 2006-06-16 | 2006-11-28 |  | 70d |  |
| 89 | 4.1 | **Development** | 70.25d | 2006-06-16 | 2006-09-25 |  | 127.75d |  |
| 90 | 4.1.1 | **Iteration1** | 10d | 2006-06-16 | 2006-06-29 |  | 188d |  |
| 91 |  | Code baselined | 0d | 2006-06-16 | 2006-06-16 |  | 188d | start no earlier than 2006-06-16 |
| 92 | 4.1.1.2 | **QA Test** | 10d | 2006-06-16 | 2006-06-29 | 91 | 188d |  |
| 93 |  | QA test (Code Separation, 1.4 backward compatability, Hibernate 3.1 Upgrade | 10d | 2006-06-16 | 2006-06-29 |  | 188d |  |
| 94 |  | QA Support | 10d | 2006-06-16 | 2006-06-29 |  | 188d |  |
| 95 | 4.1.2 | **Iteration2** | 44.5d | 2006-07-24 | 2006-09-25 |  | 127.75d |  |
| 96 | 4.1.2.1 | **Technology Stack Upgrade** | 6d | 2006-07-31 | 2006-08-08 | 54 | 127.75d |  |
| 97 |  | Design | 1d | 2006-07-31 | 2006-08-01 |  | 127.75d |  |
| 98 |  | Code/Unit Test | 5d | 2006-08-01 | 2006-08-08 | 97 | 127.75d |  |
| 99 | 4.1.2.2 | **Fix WS ability to retrieve objects which have more than** | 13d | 2006-07-24 | 2006-08-10 | 52 | 137.75d |  |
| 100 |  | Design | 2d | 2006-07-24 | 2006-07-26 |  | 148.75d |  |
| 101 |  | Code/Unit Test | 13d | 2006-07-24 | 2006-08-10 |  | 137.75d |  |
| 102 | 4.1.2.3 | **Fix CORESystem.properties not loading on client side** | 3.5d | 2006-08-08 | 2006-08-14 |  | 127.75d |  |
| 103 |  | Design | 0.5d | 2006-08-08 | 2006-08-09 | 96 | 127.75d |  |
| 104 |  | Code/Unit Test | 3d | 2006-08-09 | 2006-08-14 | 103 | 127.75d |  |
| 105 | 4.1.2.4 | **Performance Bench Marking/Improvements (Run Time)/Massive Query Defect** | 14.5d | 2006-08-10 | 2006-08-31 | 99 | 137.75d |  |
| 106 |  | Define Approach/Documentation | 1d | 2006-08-10 | 2006-08-11 |  | 137.75d |  |
| 107 |  | Perform Benchmarking | 5d | 2006-08-11 | 2006-08-18 | 106 | 137.75d |  |
| 108 |  | Define Resolution Strategy | 3d | 2006-08-18 | 2006-08-23 | 107 | 137.75d |  |
| 109 |  | Review Strategy/Design and Decide upon 3.2 fixes | 0.5d | 2006-08-23 | 2006-08-24 | 108 | 137.75d |  |
| 110 |  | Implement Fixes | 5d | 2006-08-24 | 2006-08-31 | 109 | 137.75d |  |
| 111 | 4.1.2.5 | **Generate "Thick" Client .jar** | 6d | 2006-08-14 | 2006-08-22 | 102 | 127.75d |  |
| 112 |  | Design | 1d | 2006-08-14 | 2006-08-15 |  | 127.75d |  |
| 113 |  | Code/Unit Test | 5d | 2006-08-15 | 2006-08-22 | 112 | 127.75d |  |
| 114 | 4.1.2.6 | **Improve Exception Handling** | 14d | 2006-08-22 | 2006-09-11 | 111 | 127.75d |  |
| 115 |  | Design | 2d | 2006-08-22 | 2006-08-24 |  | 127.75d |  |
| 116 |  | Code/Unit Test | 12d | 2006-08-24 | 2006-09-11 | 115 | 127.75d |  |
| 117 | 4.1.2.7 | **SDK build process always tries to start MYSQL** | 2d | 2006-09-11 | 2006-09-13 | 114 | 127.75d |  |
| 118 |  | Code/Unit Test | 2d | 2006-09-11 | 2006-09-13 |  | 127.75d |  |
| 119 | 4.1.2.8 | **Expand Junit and automated testing framework** | 17d | 2006-08-31 | 2006-09-25 |  | 127.75d |  |
| 120 |  | Design | 1d | 2006-09-13 | 2006-09-14 | 117 | 127.75d |  |
| 121 |  | Code/Unit Test | 7d | 2006-08-31 | 2006-09-11 | 105 | 137.75d |  |
| 122 |  | Code/Unit Test | 7d | 2006-09-14 | 2006-09-25 | 120 | 127.75d |  |
| 123 |  | Tag for QA | 0d | 2006-09-25 | 2006-09-25 | 119 | 127.75d |  |
| 124 | 4.2 | **QA Test Dev** | 9d | 2006-09-25 | 2006-10-06 |  | 127.75d |  |
| 125 |  | Execute Test | 9d | 2006-09-25 | 2006-10-06 | 89 | 129.75d |  |
| 126 |  | Test Support | 9d | 2006-09-25 | 2006-10-06 | 89 | 127.75d |  |
| 127 |  | Deploy for Integration testing (QA) | 0d | 2006-09-22 | 2006-09-22 |  | 1d | start no earlier than 2006-09-22 |
| 128 |  | Load Test | 10d | 2006-09-11 | 2006-09-25 | 124SS-10d | 167.75d |  |
| 129 | 4.5 | **Integration Test** | 15d | 2006-10-06 | 2006-10-27 |  | 127.75d |  |
| 130 |  | Execute Test | 15d | 2006-10-06 | 2006-10-27 | 125 | 129.75d |  |
| 131 |  | Test Support | 15d | 2006-10-06 | 2006-10-27 | 126 | 127.75d |  |
| 132 |  | Integration System Testing Comple (QA) | 0d | 2006-10-12 | 2006-10-12 |  | 155d | start no earlier than 2006-10-12 |
| 133 |  | Deliver system test plan and results (C1.C9 draft 1) | 0d | 2006-10-17 | 2006-10-17 |  | 0d | start no earlier than 2006-10-17 |
| 134 | 4.8 | **Internal System Test** | 14d | 2006-10-27 | 2006-11-16 |  | 127.75d |  |
| 135 |  | Execution | 14d | 2006-10-27 | 2006-11-16 | 130 | 129.75d | start no earlier than 2006-10-13 |
| 136 |  | Test Support | 14d | 2006-10-27 | 2006-11-16 | 131 | 127.75d | start no earlier than 2006-10-13 |
| 137 |  | Internal System Testing Complete (QA Tier) | 0d | 2006-11-01 | 2006-11-01 |  | 141d | start no earlier than 2006-11-01 |
| 138 |  | Push Candidate to Staging | 2d | 2006-11-16 | 2006-11-20 | 136 | 127.75d | start no earlier than 2006-11-02 |
| 139 |  | Release Candidate pushed to Stage Tier | 0d | 2006-11-03 | 2006-11-03 |  | 139d | start no earlier than 2006-11-03 |
| 140 | 4.12 | **Regression/UAT Testing** | 18d | 2006-11-03 | 2006-11-28 |  | 106d |  |

| ID | WBS | Task | Duration | Start | Finish | Predecessors | Total float | Constraint |
| --- | --- | --- | --- | --- | --- | --- | --- | --- |
| 141 |  | Execution | 18d | 2006-11-03 | 2006-11-28 |  | 121d | start no earlier than 2006-11-03 |
| 142 |  | Test Support | 18d | 2006-11-03 | 2006-11-28 |  | 106d | start no earlier than 2006-11-03 |
| 143 |  | UAT Complete | 0d | 2006-11-28 | 2006-11-28 |  | 122d | start no earlier than 2006-11-28 |
| 144 | 5 | **Transition** | 54.75d | 2006-10-06 | 2006-12-22 |  | 12.75d |  |
| 145 | 5.1 | **Documentation** | 50.75d | 2006-10-06 | 2006-12-15 |  | 12.75d |  |
| 146 |  | Write Draft Documentation/ Update User Guide | 14d | 2006-10-06 | 2006-10-26 | 126 | 144.75d | start no earlier than 2006-09-25 |
| 147 |  | Draft Documentation/User Documentation Completed | 0d | 2006-10-12 | 2006-10-12 |  | 9d | start no earlier than 2006-10-12 |
| 148 |  | Deliver Technical and User Guide draft (C1.C10 Draft 1) | 0d | 2006-10-12 | 2006-10-12 | 147 | 9d |  |
| 149 |  | Review Technical/User Docs | 21d | 2006-10-13 | 2006-11-10 |  | 121d | start no earlier than 2006-10-13 |
| 150 |  | Review Technical/User Docs Complete | 0d | 2006-11-10 | 2006-11-10 |  | 134d | start no earlier than 2006-11-10 |
| 151 |  | Incorporate Comments to User Docs | 12d | 2006-11-13 | 2006-11-28 | 149 | 121d | start no earlier than 2006-11-13 |
| 152 |  | Incorporate Comments to User Docs Complete | 0d | 2006-11-28 | 2006-11-28 |  | 122d | start no earlier than 2006-11-28 |
| 153 |  | Finalize Documents | 24d | 2006-11-14 | 2006-12-15 |  | 108d | start no earlier than 2006-11-14 |
| 154 |  | Final Version of User Documents Complete | 0d | 2006-12-15 | 2006-12-15 |  | 109d | start no earlier than 2006-12-15 |
| 155 |  | Staging | 15d | 2006-11-29 | 2006-12-19 | 142 | 106d | start no earlier than 2006-11-29 |
| 156 |  | Internal Staging Complete | 0d | 2006-12-19 | 2006-12-19 |  | 107d | start no earlier than 2006-12-19 |
| 157 |  | Push to Production | 0d | 2006-12-21 | 2006-12-21 |  | 105d | start no earlier than 2006-12-21 |
| 158 |  | Go Live | 0d | 2006-12-22 | 2006-12-22 |  | 104d | start no earlier than 2006-12-22 |
| 162 | 6 | **Ongoing tasks** | 260d | 2006-05-16 | 2007-05-16 |  | 0d |  |
| 163 |  | Support for SDK users/Support caBIG community | 255d | 2006-05-23 | 2007-05-16 | 1 | 0d |  |
| 164 |  | Maintain defect/feature list | 255d | 2006-05-23 | 2007-05-16 | 1 | 0d |  |
| 165 |  | Prioritize fixes and enhancements for next iteration | 255d | 2006-05-23 | 2007-05-16 | 1 | 0d |  |
| 168 | 6.4 | **Monthly status reports** | 238d | 2006-06-08 | 2007-05-08 |  | 6d |  |
| 169 |  | Monthly status reports 1 | 1d | 2006-06-08 | 2006-06-08 |  | 243d | start no earlier than 2006-06-08 |
| 170 |  | Monthly status reports 2 | 1d | 2006-07-10 | 2006-07-10 |  | 222d | start no earlier than 2006-07-08 |
| 171 |  | Monthly status reports 3 | 1d | 2006-08-08 | 2006-08-08 |  | 201d | start no earlier than 2006-08-08 |
| 172 |  | Monthly status reports 4 | 1d | 2006-09-08 | 2006-09-08 |  | 178d | start no earlier than 2006-09-08 |
| 173 |  | Monthly status reports 5 | 1d | 2006-10-09 | 2006-10-09 |  | 157d | start no earlier than 2006-10-08 |
| 174 |  | Monthly status reports 6 | 1d | 2006-11-08 | 2006-11-08 |  | 135d | start no earlier than 2006-11-08 |
| 175 |  | Monthly status reports 7 | 1d | 2006-12-08 | 2006-12-08 |  | 113d | start no earlier than 2006-12-08 |
| 176 |  | Monthly status reports 8 | 1d | 2007-01-08 | 2007-01-08 |  | 92d | start no earlier than 2007-01-08 |
| 177 |  | Monthly status reports 9 | 1d | 2007-02-08 | 2007-02-08 |  | 69d | start no earlier than 2007-02-08 |
| 178 |  | Monthly status reports 10 | 1d | 2007-03-08 | 2007-03-08 |  | 49d | start no earlier than 2007-03-08 |
| 179 |  | Monthly status reports 11 | 1d | 2007-04-09 | 2007-04-09 |  | 27d | start no earlier than 2007-04-08 |
| 180 |  | Monthly status reports 12 | 1d | 2007-05-08 | 2007-05-08 |  | 6d | start no earlier than 2007-05-08 |
| 181 | 6.5 | **Weekly Project Plan update** | 254d | 2006-05-16 | 2007-05-08 |  | 6d |  |
| 182 |  | Weekly Project Plan update 1 | 1d | 2006-05-16 | 2006-05-16 |  | 259d | start no earlier than 2006-05-16 |
| 183 |  | Weekly Project Plan update 2 | 1d | 2006-05-23 | 2006-05-23 |  | 254d | start no earlier than 2006-05-23 |
| 184 |  | Weekly Project Plan update 3 | 1d | 2006-05-30 | 2006-05-30 |  | 250d | start no earlier than 2006-05-30 |
| 185 |  | Weekly Project Plan update 4 | 1d | 2006-06-06 | 2006-06-06 |  | 245d | start no earlier than 2006-06-06 |
| 186 |  | Weekly Project Plan update 5 | 1d | 2006-06-13 | 2006-06-13 |  | 240d | start no earlier than 2006-06-13 |
| 187 |  | Weekly Project Plan update 6 | 1d | 2006-06-20 | 2006-06-20 |  | 235d | start no earlier than 2006-06-20 |
| 188 |  | Weekly Project Plan update 7 | 1d | 2006-06-27 | 2006-06-27 |  | 230d | start no earlier than 2006-06-27 |
| 189 |  | Weekly Project Plan update 8 | 1d | 2006-07-05 | 2006-07-05 |  | 225d | start no earlier than 2006-07-04 |
| 190 |  | Weekly Project Plan update 9 | 1d | 2006-07-11 | 2006-07-11 |  | 221d | start no earlier than 2006-07-11 |
| 191 |  | Weekly Project Plan update 10 | 1d | 2006-07-18 | 2006-07-18 |  | 216d | start no earlier than 2006-07-18 |
| 192 |  | Weekly Project Plan update 11 | 1d | 2006-07-25 | 2006-07-25 |  | 211d | start no earlier than 2006-07-25 |
| 193 |  | Weekly Project Plan update 12 | 1d | 2006-08-01 | 2006-08-01 |  | 206d | start no earlier than 2006-08-01 |
| 194 |  | Weekly Project Plan update 13 | 1d | 2006-08-08 | 2006-08-08 |  | 201d | start no earlier than 2006-08-08 |
| 195 |  | Weekly Project Plan update 14 | 1d | 2006-08-15 | 2006-08-15 |  | 196d | start no earlier than 2006-08-15 |
| 196 |  | Weekly Project Plan update 15 | 1d | 2006-08-22 | 2006-08-22 |  | 191d | start no earlier than 2006-08-22 |
| 197 |  | Weekly Project Plan update 16 | 1d | 2006-08-29 | 2006-08-29 |  | 186d | start no earlier than 2006-08-29 |
| 198 |  | Weekly Project Plan update 17 | 1d | 2006-09-05 | 2006-09-05 |  | 181d | start no earlier than 2006-09-05 |
| 199 |  | Weekly Project Plan update 18 | 1d | 2006-09-12 | 2006-09-12 |  | 176d | start no earlier than 2006-09-12 |
| 200 |  | Weekly Project Plan update 19 | 1d | 2006-09-19 | 2006-09-19 |  | 171d | start no earlier than 2006-09-19 |
| 201 |  | Weekly Project Plan update 20 | 1d | 2006-09-26 | 2006-09-26 |  | 166d | start no earlier than 2006-09-26 |
| 202 |  | Weekly Project Plan update 21 | 1d | 2006-10-03 | 2006-10-03 |  | 161d | start no earlier than 2006-10-03 |
| 203 |  | Weekly Project Plan update 22 | 1d | 2006-10-10 | 2006-10-10 |  | 156d | start no earlier than 2006-10-10 |
| 204 |  | Weekly Project Plan update 23 | 1d | 2006-10-17 | 2006-10-17 |  | 151d | start no earlier than 2006-10-17 |
| 205 |  | Weekly Project Plan update 24 | 1d | 2006-10-24 | 2006-10-24 |  | 146d | start no earlier than 2006-10-24 |
| 206 |  | Weekly Project Plan update 25 | 1d | 2006-10-31 | 2006-10-31 |  | 141d | start no earlier than 2006-10-31 |
| 207 |  | Weekly Project Plan update 26 | 1d | 2006-11-07 | 2006-11-07 |  | 136d | start no earlier than 2006-11-07 |
| 208 |  | Weekly Project Plan update 27 | 1d | 2006-11-14 | 2006-11-14 |  | 131d | start no earlier than 2006-11-14 |
| 209 |  | Weekly Project Plan update 28 | 1d | 2006-11-21 | 2006-11-21 |  | 126d | start no earlier than 2006-11-21 |
| 210 |  | Weekly Project Plan update 29 | 1d | 2006-11-28 | 2006-11-28 |  | 121d | start no earlier than 2006-11-28 |
| 211 |  | Weekly Project Plan update 30 | 1d | 2006-12-05 | 2006-12-05 |  | 116d | start no earlier than 2006-12-05 |
| 212 |  | Weekly Project Plan update 31 | 1d | 2006-12-12 | 2006-12-12 |  | 111d | start no earlier than 2006-12-12 |
| 213 |  | Weekly Project Plan update 32 | 1d | 2006-12-19 | 2006-12-19 |  | 106d | start no earlier than 2006-12-19 |
| 214 |  | Weekly Project Plan update 33 | 1d | 2006-12-26 | 2006-12-26 |  | 101d | start no earlier than 2006-12-26 |
| 215 |  | Weekly Project Plan update 34 | 1d | 2007-01-02 | 2007-01-02 |  | 96d | start no earlier than 2007-01-02 |

| ID | Task | Duration | Start | Finish | Total float | Constraint |
| --- | --- | --- | --- | --- | --- | --- |
| 216 | Weekly Project Plan update 35 | 1d | 2007-01-09 | 2007-01-09 | 91d | start no earlier than 2007-01-09 |
| 217 | Weekly Project Plan update 36 | 1d | 2007-01-16 | 2007-01-16 | 86d | start no earlier than 2007-01-16 |
| 218 | Weekly Project Plan update 37 | 1d | 2007-01-23 | 2007-01-23 | 81d | start no earlier than 2007-01-23 |
| 219 | Weekly Project Plan update 38 | 1d | 2007-01-30 | 2007-01-30 | 76d | start no earlier than 2007-01-30 |
| 220 | Weekly Project Plan update 39 | 1d | 2007-02-06 | 2007-02-06 | 71d | start no earlier than 2007-02-06 |
| 221 | Weekly Project Plan update 40 | 1d | 2007-02-13 | 2007-02-13 | 66d | start no earlier than 2007-02-13 |
| 222 | Weekly Project Plan update 41 | 1d | 2007-02-20 | 2007-02-20 | 61d | start no earlier than 2007-02-20 |
| 223 | Weekly Project Plan update 42 | 1d | 2007-02-27 | 2007-02-27 | 56d | start no earlier than 2007-02-27 |
| 224 | Weekly Project Plan update 43 | 1d | 2007-03-06 | 2007-03-06 | 51d | start no earlier than 2007-03-06 |
| 225 | Weekly Project Plan update 44 | 1d | 2007-03-13 | 2007-03-13 | 46d | start no earlier than 2007-03-13 |
| 226 | Weekly Project Plan update 45 | 1d | 2007-03-20 | 2007-03-20 | 41d | start no earlier than 2007-03-20 |
| 227 | Weekly Project Plan update 46 | 1d | 2007-03-27 | 2007-03-27 | 36d | start no earlier than 2007-03-27 |
| 228 | Weekly Project Plan update 47 | 1d | 2007-04-03 | 2007-04-03 | 31d | start no earlier than 2007-04-03 |
| 229 | Weekly Project Plan update 48 | 1d | 2007-04-10 | 2007-04-10 | 26d | start no earlier than 2007-04-10 |
| 230 | Weekly Project Plan update 49 | 1d | 2007-04-17 | 2007-04-17 | 21d | start no earlier than 2007-04-17 |
| 231 | Weekly Project Plan update 50 | 1d | 2007-04-24 | 2007-04-24 | 16d | start no earlier than 2007-04-24 |
| 232 | Weekly Project Plan update 51 | 1d | 2007-05-01 | 2007-05-01 | 11d | start no earlier than 2007-05-01 |
| 233 | Weekly Project Plan update 52 | 1d | 2007-05-08 | 2007-05-08 | 6d | start no earlier than 2007-05-08 |

## Version 2 (saved 2006-07-10)

Note of the change: *** empty log message ***

Last finish stays 2007-05-16. Complete tasks 37 → 42.

Changed:

| ID | Task | Start | Finish | Complete | Total float | Predecessors | Other |
| --- | --- | --- | --- | --- | --- | --- | --- |
| 23 | **Elaboration** |  |  | 19% → 25% |  |  |  |
| 24 | **Iteration 1** |  |  | 22% → 30% |  |  |  |
| 43 | Develop Use Case model and Supp Spec | 2006-06-19 A | 2006-06-26 A | 0% → 100% | 27.25d → none |  |  |
| 45 | Deliver Draft overall Requirements document (C1.C2 draft) | 2006-07-13 A | 2006-07-13 A | 0% → 100% | 2d → none |  |  |
| 47 | Final 3.2 Scope/Project Plan to Gforge | 2006-06-26 A | 2006-06-26 A | 0% → 100% | 232d → none |  |  |
| 48 | Deliver Final overall Requirements document (c1.C2 Final) |  |  |  |  | 45FS+10d, 47 → 45FS+10d |  |
| 49 | Prepare Designs for integration with NCICB tools | 2006-06-26 A | 2006-06-30 A | 0% → 100% | 31.25d → none |  |  |
| 50 | Deliver draft design for tool integration (Group 1, C1.C6 Draft) | 2006-06-30 A | 2006-06-30 A | 0% → 100% | 31.25d → none |  |  |
| 54 | **Software Architecture Documentation** |  |  |  |  |  | was named Develop draft software architecture |
| 55 | **Software Architecture Document - Code Generation** |  |  |  |  |  | was named Develop architecture of code generation |
| 62 | **Software Architecture Document - Generated System** |  |  |  |  |  | was named Develop architecture of generated system |
| 77 | Deliver Draft Software Design for SDK enhancements (C1.C3 Draft) |  |  |  |  | 57, 64, 54 → 57, 64 |  |

## Version 3 (saved 2006-07-19)

Note of the change: *** empty log message ***

Last finish stays 2007-05-16. Complete tasks 42 → 48.

Removed: 67 Business tier design; 68 Baseline draft business tier design; 69 Service layer design; 70 Baseline draft service tier design; 73 Security design; 74 Baseline draft security design; 75 Writable API design

Changed:

| ID | Task | Start | Finish | Duration | Complete | Total float | Predecessors |
| --- | --- | --- | --- | --- | --- | --- | --- |
| 23 | **Elaboration** |  |  |  | 25% → 44% |  |  |
| 24 | **Iteration 1** |  |  |  | 30% → 52% |  |  |
| 51 | NCICB review | 2006-06-30 A | 2006-07-17 A |  | 0% → 100% | 39.25d → none |  |
| 52 | Revise design | 2006-07-17 A | 2006-07-24 A |  | 0% → 100% | 39.25d → none |  |
| 54 | **Software Architecture Documentation** | 2006-06-30 A |  |  | 0% → 28% | 51.25d → 127.75d |  |
| 55 | **Software Architecture Document - Code Generation** | 2006-06-30 A |  |  | 0% → 23% | 51.25d → 127.75d |  |
| 56 | Build process/Design Thick Client Jar | 2006-06-30 A | 2006-07-06 A |  | 0% → 100% | 127.75d → none |  |
| 57 | Baseline draft build process/thick client jar design | 2006-07-06 A | 2006-07-06 A |  | 0% → 100% | 144.75d → none |  |
| 58 | Code generation framework | 2006-07-06 A |  |  | 0% → 10% |  |  |
| 62 | **Software Architecture Document - Generated System** | 2006-06-30 A |  |  | 0% → 34% | 51.25d → 127.75d |  |
| 63 | Exception handling | 2006-06-30 A | 2006-07-06 → 2006-07-11 A (+5d) | 3d → 6d | 0% → 100% | 127.75d → none |  |
| 64 | Baseline draft exception handling design | 2006-07-06 → 2006-07-11 A (+5d) | 2006-07-06 → 2006-07-11 A (+5d) |  | 0% → 100% | 144.75d → none |  |
| 65 | Persistence tier design | 2006-07-06 → 2006-07-11 A (+5d) | 2006-07-11 → 2006-07-20 (+9d) | 3d → 7d | 0% → 10% |  | 63 → 64 |
| 66 | Baseline draft persistence design | 2006-07-11 → 2006-07-20 (+9d) | 2006-07-11 → 2006-07-20 (+9d) |  |  | 141.75d → 127.75d |  |
| 67 | Query mechanism design | 2006-07-19 → 2006-07-20 (+1d) | 2006-07-24 → 2006-07-31 (+7d) | 3d → 7d |  |  | Service layer design → 66 |
| 68 | Baseline draft query mechanism design | 2006-07-24 → 2006-07-31 (+7d) | 2006-07-24 → 2006-07-31 (+7d) |  |  | 132.75d → 127.75d |  |
| 69 | Baseline draft writable API design |  |  |  |  |  | Writable API design → 68 |

## Version 4 (saved 2006-07-26)

Note of the change: updated with new scope items and milestones

Last finish 2007-05-16 → 2007-05-21 (+5d). Complete tasks 48 → 52.

Added:

| ID | Task | Duration | Start | Finish | Predecessors | Constraint | Resources |
| --- | --- | --- | --- | --- | --- | --- | --- |
| 110 | Construct/Unit Testing Complete | 0d | 2006-09-13 | 2006-09-13 |  | start no earlier than 2006-09-13 |  |
| 111 | **Testing** | 3d | 2006-09-13 | 2006-09-18 |  |  |  |
| 112 | QA Test Execution | 3d | 2006-09-13 | 2006-09-18 | 107, 104 |  | QA |
| 114 | Iteration 1 Dev/QA Complete | 0d | 2006-09-18 | 2006-09-18 |  | start no earlier than 2006-09-18 |  |
| 115 | **Iteration 2** | 15d | 2006-09-18 | 2006-10-09 |  |  |  |
| 116 | **Composition** | 10d | 2006-09-18 | 2006-10-02 | 111 |  |  |
| 118 | **One to one association naming problem and Super Class Package Defect** | 2d | 2006-10-02 | 2006-10-04 |  |  |  |
| 123 | Construct/Unit Testing Complete | 0d | 2006-09-29 | 2006-09-29 |  | start no earlier than 2006-09-29 |  |
| 124 | **Testing** | 3d | 2006-10-04 | 2006-10-09 |  |  |  |
| 125 | QA Test Execution | 3d | 2006-10-04 | 2006-10-09 | 116, 120 |  | QA |
| 127 | Iteration 2 Dev/QA Complete | 0d | 2006-10-03 | 2006-10-03 |  | start no earlier than 2006-10-03 |  |
| 128 | **Iteration 3** | 34.75d | 2006-10-09 | 2006-11-28 |  |  |  |
| 129 | Package Name Support (Feature Request #1807) | 6d | 2006-10-09 | 2006-10-17 | 124 |  | Satish Patel |
| 130 | Association Model as sequence (Defect #1311) | 6d | 2006-10-09 | 2006-10-17 | 124 |  | Dan Dumitru |
| 131 | Construct/Unit Testing Complete | 0d | 2006-10-17 | 2006-10-17 |  | start no earlier than 2006-10-17 |  |
| 132 | **Testing** | 3d | 2006-10-17 | 2006-10-20 |  |  |  |
| 133 | QA Test Execution | 3d | 2006-10-17 | 2006-10-20 | 129, 130 |  | QA |
| 135 | Iteration 3 Dev/QA Complete | 0d | 2006-10-20 | 2006-10-20 |  | start no earlier than 2006-10-20 |  |
| 142 | **Regression Testing** | 5d | 2006-11-03 | 2006-11-09 |  |  |  |
| 145 | **UAT Testing** | 5d | 2006-11-10 | 2006-11-16 |  |  |  |
| 146 | Test Execution/Suppport | 5d | 2006-11-10 | 2006-11-16 | 142 |  | Dan Dumitru; Satish Patel |
| 149 | **Documentation** | 35d | 2006-10-27 | 2006-12-15 |  |  |  |

Removed: 110 SDK build process always tries to start MYSQL; 116 Tag for QA; 117 QA Test Dev; 118 Execute Test; 120 Deploy for Integration testing (QA); 121 Load Test; 122 Integration Test; 123 Execute Test; 125 Integration System Testing Comple (QA); 126 Deliver system test plan and results (C1.C9 draft 1); 127 Internal System Test; 133 Regression/UAT Testing; 134 Execution; 141 Deliver Technical and User Guide draft (C1.C10 Draft 1)

Changed:

| ID | Task | Start | Finish | Duration | Complete | Total float | Predecessors | Other |
| --- | --- | --- | --- | --- | --- | --- | --- | --- |
| 2 | **Inception** |  | 2006-06-22 A |  | 99% → 100% | 0d → none |  |  |
| 20 | Transition Checkpoint Review Meeting |  | 2006-06-14 A |  | 50% → 100% | 0d → none |  |  |
| 81 | **Construction** | 2006-06-16 A |  | 117d → 114d | 0% → 13% | 70d → 124d |  |  |
| 82 | **Development** | 2006-06-16 A | 2006-09-25 → 2006-11-28 (+64d) | 70.25d → 114d | 0% → 13% | 127.75d → 124d |  |  |
| 83 | **Iteration 0.5** | 2006-06-16 A | 2006-06-29 A |  | 0% → 100% | 188d → none |  | was named Iteration1 |
| 84 | Code baselined | 2006-06-16 A | 2006-06-16 A |  | 0% → 100% | 188d → none |  |  |
| 85 | **QA Test** | 2006-06-16 A | 2006-06-29 A |  | 0% → 100% | 188d → none |  |  |
| 86 | QA test (Code Separation, 1.4 backward compatability, Hibernate 3.1 Upgrade | 2006-06-16 A | 2006-06-29 A |  | 0% → 100% | 188d → none |  |  |
| 87 | QA Support | 2006-06-16 A | 2006-06-29 A |  | 0% → 100% | 188d → none |  |  |
| 88 | **Iteration 1** | 2006-07-24 → 2006-07-31 (+7d) | 2006-09-25 → 2006-09-18 (-7d) | 44.5d → 33.5d |  | 127.75d → 140.75d |  | was named Iteration2 |
| 90 | Design |  |  |  |  | 127.75d → 140.75d |  | resources Dan Dumitru → Satish Patel |
| 91 | Code/Unit Test |  |  |  |  | 127.75d → 140.75d |  | resources Dan Dumitru → Satish Patel |
| 92 | **Fix WS ability to retrieve objects which have more than** | 2006-07-24 → 2006-08-08 (+15d) | 2006-08-10 → 2006-08-29 (+19d) | 13d → 15d |  | 137.75d → 140.75d | 52 → none |  |
| 93 | Design | 2006-07-24 → 2006-08-08 (+15d) | 2006-07-26 → 2006-08-10 (+15d) |  |  | 148.75d → 140.75d | none → 89 |  |
| 94 | Code/Unit Test | 2006-07-24 → 2006-08-10 (+17d) | 2006-08-10 → 2006-08-29 (+19d) |  |  | 137.75d → 140.75d | none → 93 |  |
| 95 | **Fix CORESystem.properties not loading on client side** | 2006-08-08 → 2006-08-29 (+21d) | 2006-08-14 → 2006-09-05 (+22d) |  |  | 127.75d → 140.75d |  |  |
| 96 | Design | 2006-08-08 → 2006-08-29 (+21d) | 2006-08-09 → 2006-08-30 (+21d) |  |  | 127.75d → 140.75d | 89 → 92 | resources Dan Dumitru → Satish Patel |
| 97 | Code/Unit Test | 2006-08-09 → 2006-08-30 (+21d) | 2006-08-14 → 2006-09-05 (+22d) |  |  | 127.75d → 140.75d |  | resources Dan Dumitru → Satish Patel |
| 98 | **Performance Bench Marking/Improvements (Run Time)/Massive Query Defect** | 2006-08-10 → 2006-07-31 (-10d) | 2006-08-31 → 2006-08-23 (-8d) | 14.5d → 16.5d |  | 137.75d → 140.75d | 92 → 54 |  |
| 99 | Define Approach/Documentation | 2006-08-10 → 2006-07-31 (-10d) | 2006-08-11 → 2006-08-01 (-10d) |  |  | 137.75d → 140.75d |  | resources Satish Patel → Dan Dumitru |
| 100 | Perform Benchmarking | 2006-08-11 → 2006-08-01 (-10d) | 2006-08-18 → 2006-08-09 (-9d) | 5d → 6d |  | 137.75d → 140.75d |  | resources Satish Patel → Dan Dumitru |
| 101 | Define Resolution Strategy | 2006-08-18 → 2006-08-09 (-9d) | 2006-08-23 → 2006-08-14 (-9d) |  |  | 137.75d → 140.75d |  | resources Satish Patel → Dan Dumitru |
| 102 | Review Strategy/Design and Decide upon 3.2 fixes | 2006-08-23 → 2006-08-14 (-9d) | 2006-08-24 → 2006-08-15 (-9d) |  |  | 137.75d → 140.75d |  | resources Avinash; Charles Griffin; Satish Patel → Avinash; Charles Griffin; Dan Dumitru |
| 103 | Implement Fixes | 2006-08-24 → 2006-08-15 (-9d) | 2006-08-31 → 2006-08-23 (-8d) | 5d → 6d |  | 137.75d → 140.75d |  | resources none → Dan Dumitru |
| 104 | **Generate "Thick" Client .jar and Build Script Rewrite** | 2006-08-14 → 2006-09-05 (+22d) | 2006-08-22 → 2006-09-13 (+22d) |  |  | 127.75d → 140.75d | 95 → none | was named Generate "Thick" Client .jar |
| 105 | Design | 2006-08-14 → 2006-09-05 (+22d) | 2006-08-15 → 2006-09-06 (+22d) |  |  | 127.75d → 140.75d | none → 95 | resources Dan Dumitru → Satish Patel |
| 106 | Code/Unit Test | 2006-08-15 → 2006-09-06 (+22d) | 2006-08-22 → 2006-09-13 (+22d) |  |  | 127.75d → 140.75d |  | resources Dan Dumitru → Satish Patel |
| 107 | **Improve Exception Handling** | 2006-08-22 → 2006-08-23 (+1d) | 2006-09-11 → 2006-09-13 (+2d) |  |  | 127.75d → 140.75d | 104 → none |  |
| 108 | Design | 2006-08-22 → 2006-08-23 (+1d) | 2006-08-24 → 2006-08-25 (+1d) |  |  | 127.75d → 140.75d | none → 98 |  |
| 109 | Code/Unit Test | 2006-08-24 → 2006-08-25 (+1d) | 2006-09-11 → 2006-09-13 (+2d) |  |  | 127.75d → 140.75d |  |  |
| 113 | Test Support | 2006-09-25 → 2006-09-13 (-12d) | 2006-10-06 → 2006-09-18 (-18d) | 9d → 3d |  | 127.75d → 140.75d | 82 → 107, 104 |  |
| 117 | Code/Unit Test | 2006-09-11 → 2006-09-18 (+7d) | 2006-09-13 → 2006-10-02 (+19d) | 2d → 10d |  | 127.75d → 142.75d |  | resources Dan Dumitru → Satish Patel |
| 119 | Code/Unit Test | 2006-09-14 → 2006-10-02 (+18d) | 2006-09-25 → 2006-10-04 (+9d) | 7d → 2d |  | 127.75d → 161.75d | 121 → 116 | resources Dan Dumitru → Satish Patel |
| 120 | **Expand Junit and automated testing framework** | 2006-08-31 → 2006-09-18 (+18d) | 2006-09-25 → 2006-10-04 (+9d) | 17d → 12d |  | 127.75d → 140.75d |  |  |
| 121 | Design | 2006-09-13 → 2006-09-18 (+5d) | 2006-09-14 → 2006-09-20 (+6d) | 1d → 2d |  | 127.75d → 140.75d | SDK build process always tries to start MYSQL → 111 |  |
| 122 | Code/Unit Test | 2006-08-31 → 2006-09-20 (+20d) | 2006-09-11 → 2006-10-04 (+23d) | 7d → 10d |  | 137.75d → 140.75d | 98 → 121 | resources Satish Patel → Dan Dumitru |
| 126 | Test Support | 2006-10-06 → 2006-10-04 (-2d) | 2006-10-27 → 2006-10-09 (-18d) | 15d → 3d |  | 127.75d → 140.75d | 113 → 120, 116 | resources Satish Patel [50%]; Dan Dumitru [50%] → Dan Dumitru; Satish Patel |
| 134 | Test Support | 2006-10-27 → 2006-10-17 (-10d) | 2006-11-16 → 2006-10-20 (-27d) | 14d → 3d |  | 127.75d → 140.75d | 126 → 129, 130 | constraint start no earlier than 2006-10-13 → none |
| 136 | **Documentation** | 2006-10-06 → 2006-10-20 (+14d) | 2006-12-15 → 2006-10-27 (-49d) | 50.75d → 5d |  | 12.75d → 113.75d |  |  |
| 137 | Write Draft Documentation/ Update User Guide | 2006-10-06 → 2006-10-20 (+14d) | 2006-10-26 → 2006-10-27 (+1d) | 14d → 5d |  | 144.75d → 140.75d | 113 → 132 | constraint start no earlier than 2006-09-25 → none; resources Satish Patel; Dan Dumitru → Dan Dumitru; Satish Patel |
| 138 | Draft Documentation/User Documentation Completed | 2006-10-12 → 2006-10-27 (+15d) | 2006-10-12 → 2006-10-27 (+15d) |  |  | 9d → 109d |  | constraint start no earlier than 2006-10-12 → start no earlier than 2006-10-27 |
| 140 | Push Candidate to Staging | 2006-11-16 → 2006-10-27 (-20d) | 2006-11-20 → 2006-11-02 (-18d) | 2d → 4d |  | 127.75d → 140.75d | 134 → 137 | constraint start no earlier than 2006-11-02 → none; resources Satish Patel; Dan Dumitru → Dan Dumitru; Satish Patel |
| 143 | Execution | 2006-10-27 → 2006-11-03 (+7d) | 2006-11-16 → 2006-11-09 (-7d) | 14d → 5d |  | 129.75d → 130d | Execute Test → 141 | constraint start no earlier than 2006-10-13 → none |
| 144 | Test Support |  | 2006-11-28 → 2006-11-09 (-19d) | 18d → 5d |  | 106d → 130d | none → 141 | constraint start no earlier than 2006-11-03 → none; resources Satish Patel; Dan Dumitru → Dan Dumitru; Satish Patel |
| 148 | **Transition** | 2006-10-06 → 2006-10-27 (+21d) |  | 54.75d → 39d |  | 12.75d → 106d |  |  |
| 150 | Review Technical/User Docs | 2006-10-13 → 2006-10-27 (+14d) |  | 21d → 11d |  | 121d → 109d | none → 138 | constraint start no earlier than 2006-10-13 → none |
| 152 | Incorporate Comments to User Docs |  | 2006-11-28 → 2006-11-27 (-1d) | 12d → 10d |  | 121d → 109d |  | constraint start no earlier than 2006-11-13 → none; resources Satish Patel; Dan Dumitru → Dan Dumitru; Satish Patel |
| 154 | Finalize Documents | 2006-11-14 → 2006-11-28 (+14d) |  | 24d → 14d |  | 108d → 110d | none → 152 | constraint start no earlier than 2006-11-14 → none |
| 156 | Staging | 2006-11-29 → 2006-11-28 (-1d) | 2006-12-19 → 2006-12-18 (-1d) |  |  | 106d → 109d | 144 → 152 | constraint start no earlier than 2006-11-29 → none; resources Satish Patel; Dan Dumitru → Dan Dumitru; Satish Patel |
| 163 | **Ongoing tasks** |  | 2007-05-16 → 2007-05-21 (+5d) |  |  |  |  |  |
| 164 | Support for SDK users/Support caBIG community |  | 2007-05-16 → 2007-05-21 (+5d) |  |  |  |  | resources Dan Dumitru [25%] → Dan Dumitru [25%]; Satish Patel |
| 165 | Maintain defect/feature list |  | 2007-05-16 → 2007-05-21 (+5d) |  |  |  |  | resources QA → Charles Griffin |
| 166 | Prioritize fixes and enhancements for next iteration |  | 2007-05-16 → 2007-05-21 (+5d) |  |  |  |  |  |
| 169 | **Monthly status reports** |  |  | 238d → 235d |  | 6d → 9d |  |  |
| 182 | **Weekly Project Plan update** |  |  | 254d → 251d |  | 6d → 9d |  |  |

## Version 5 (saved 2006-07-27)

Note of the change: *** empty log message ***

Last finish stays 2007-05-21. Complete tasks 52 → 55.

Changed:

| ID | Task | Start | Finish | Complete | Total float | Other |
| --- | --- | --- | --- | --- | --- | --- |
| 23 | **Elaboration** |  |  | 44% → 55% |  |  |
| 24 | **Iteration 1** |  |  | 52% → 65% |  |  |
| 54 | **Software Architecture Documentation** |  |  | 28% → 64% |  |  |
| 55 | **Software Architecture Document - Code Generation** |  |  | 23% → 60% |  |  |
| 58 | Code generation framework |  |  | 10% → 60% |  |  |
| 62 | **Software Architecture Document - Generated System** |  |  | 34% → 69% |  |  |
| 65 | Persistence tier design |  | 2006-07-20 A | 10% → 100% | 140.75d → none |  |
| 66 | Baseline draft persistence design | 2006-07-20 A | 2006-07-20 A | 0% → 100% | 140.75d → none |  |
| 67 | Query mechanism design | 2006-07-20 A |  | 0% → 10% |  |  |
| 69 | Baseline draft writable API design | 2006-07-31 A | 2006-07-31 A | 0% → 100% | 140.75d → none |  |
| 164 | Support for SDK users/Support caBIG community |  |  |  |  | resources Dan Dumitru [25%]; Satish Patel → Dan Dumitru [25%]; Satish Patel [25%] |

## Version 6 (saved 2006-08-10)

Note of the change: updated per status

Last finish 2007-05-21 → 2006-12-22 (-150d). Complete tasks 55 → 71.

Added:

| ID | Task | Duration | Start | Finish | Predecessors | Resources |
| --- | --- | --- | --- | --- | --- | --- |
| 92 | **BootCamp Support** | 2d | 2006-08-08 A | 2006-08-10 A |  |  |
| 93 | Support by Satish | 2d | 2006-08-08 A | 2006-08-10 A | 89 | Satish Patel |

Removed: 177 Monthly status reports 8; 178 Monthly status reports 9; 179 Monthly status reports 10; 180 Monthly status reports 11; 181 Monthly status reports 12; 215 Weekly Project Plan update 33; 216 Weekly Project Plan update 34; 217 Weekly Project Plan update 35; 218 Weekly Project Plan update 36; 219 Weekly Project Plan update 37; 220 Weekly Project Plan update 38; 221 Weekly Project Plan update 39; 222 Weekly Project Plan update 40; 223 Weekly Project Plan update 41; 224 Weekly Project Plan update 42; 225 Weekly Project Plan update 43; 226 Weekly Project Plan update 44; 227 Weekly Project Plan update 45; 228 Weekly Project Plan update 46; 229 Weekly Project Plan update 47; 230 Weekly Project Plan update 48; 231 Weekly Project Plan update 49; 232 Weekly Project Plan update 50; 233 Weekly Project Plan update 51; 234 Weekly Project Plan update 52

Changed:

| ID | Task | Start | Finish | Duration | Complete | Total float | Predecessors | Other |
| --- | --- | --- | --- | --- | --- | --- | --- | --- |
| 23 | **Elaboration** |  |  |  | 55% → 81% | 198d → 93d |  |  |
| 24 | **Iteration 1** |  |  |  | 65% → 96% | 200d → 95d |  |  |
| 46 | Develop Test approach | 2006-07-13 A | 2006-07-19 A |  | 0% → 100% | 215d → none |  |  |
| 53 | Deliver Final design for tool integration (Group 1, C1.C6 Final)) | 2006-07-31 A | 2006-07-31 A |  | 0% → 100% | 34d → none |  |  |
| 54 | **Software Architecture Documentation** |  | 2006-07-31 A |  | 64% → 100% | 140.75d → none |  |  |
| 55 | **Software Architecture Document - Code Generation** |  | 2006-07-31 A |  | 60% → 100% | 140.75d → none |  |  |
| 58 | Code generation framework |  | 2006-07-27 A |  | 60% → 100% | 140.75d → none |  |  |
| 59 | Baseline draft code generation framework design | 2006-07-27 A | 2006-07-27 A |  | 0% → 100% | 142.75d → none |  |  |
| 60 | Modeling constraints | 2006-07-27 A | 2006-07-31 A |  | 0% → 100% | 140.75d → none |  |  |
| 61 | Baseline draft modeling constraint | 2006-07-31 A | 2006-07-31 A |  | 0% → 100% | 140.75d → none |  |  |
| 62 | **Software Architecture Document - Generated System** |  | 2006-07-31 A |  | 69% → 100% | 140.75d → none |  |  |
| 67 | Query mechanism design |  | 2006-07-31 A |  | 10% → 100% | 140.75d → none |  |  |
| 68 | Baseline draft query mechanism design | 2006-07-31 A | 2006-07-31 A |  | 0% → 100% | 140.75d → none |  |  |
| 70 | Deliver Draft Software Design for SDK enhancements (C1.C3 Draft) | 2006-07-18 A | 2006-07-18 A |  | 0% → 100% | 43d → none |  |  |
| 71 | NCICB review | 2006-07-18 A | 2006-07-31 A |  | 0% → 100% | 48d → none |  |  |
| 72 | Revise/Update design | 2006-08-01 A | 2006-08-07 A |  | 0% → 100% | 48d → none |  |  |
| 73 | Deliver Final Software design for SDK enhancements (Group 2,3) (C1.C3, final) | 2006-08-08 A | 2006-08-08 A |  | 0% → 100% | 48d → none |  |  |
| 74 | Review/Revise Task Plan | 2006-08-08 A | 2006-08-09 A |  | 0% → 100% | 198d → none |  |  |
| 81 | **Construction** |  |  |  | 13% → 19% | 124d → 19d |  |  |
| 82 | **Development** |  |  |  | 13% → 19% | 124d → 19d |  |  |
| 88 | **Iteration 1** | 2006-07-31 A | 2006-09-18 → 2006-09-20 (+2d) | 33.5d → 35.5d | 0% → 14% | 140.75d → 66.75d |  |  |
| 89 | **Technology Stack Upgrade** | 2006-07-31 A |  |  | 0% → 17% | 140.75d → 33.75d |  |  |
| 90 | Design | 2006-07-31 A | 2006-08-01 A |  | 0% → 100% | 140.75d → none |  |  |
| 94 | **Fix WS ability to retrieve objects which have more than** | 2006-08-08 → 2006-08-10 (+2d) | 2006-08-29 → 2006-08-31 (+2d) |  |  | 140.75d → 33.75d |  |  |
| 95 | Design | 2006-08-08 → 2006-08-10 (+2d) | 2006-08-10 → 2006-08-14 (+4d) |  |  | 140.75d → 138.75d | 89 → 92 |  |
| 96 | Code/Unit Test | 2006-08-10 → 2006-08-14 (+4d) | 2006-08-29 → 2006-08-31 (+2d) |  |  | 140.75d → 138.75d |  |  |
| 97 | **Fix CORESystem.properties not loading on client side** | 2006-08-29 → 2006-08-31 (+2d) | 2006-09-05 → 2006-09-07 (+2d) |  |  | 140.75d → 33.75d |  |  |
| 98 | Design | 2006-08-29 → 2006-08-31 (+2d) | 2006-08-30 → 2006-09-01 (+2d) |  |  | 140.75d → 138.75d |  |  |
| 99 | Code/Unit Test | 2006-08-30 → 2006-09-01 (+2d) | 2006-09-05 → 2006-09-07 (+2d) |  |  | 140.75d → 138.75d |  |  |
| 100 | **Performance Bench Marking/Improvements (Run Time)/Massive Query Defect** | 2006-07-31 → 2006-08-18 (+18d) | 2006-08-23 → 2006-09-13 (+21d) |  |  | 140.75d → 35.75d | 54 → 109, 54 |  |
| 101 | Define Approach/Documentation | 2006-07-31 → 2006-08-18 (+18d) | 2006-08-01 → 2006-08-21 (+20d) |  |  |  |  |  |
| 102 | Perform Benchmarking | 2006-08-01 → 2006-08-21 (+20d) | 2006-08-09 → 2006-08-29 (+20d) |  |  |  |  |  |
| 103 | Define Resolution Strategy | 2006-08-09 → 2006-08-29 (+20d) | 2006-08-14 → 2006-09-01 (+18d) |  |  |  |  |  |
| 104 | Review Strategy/Design and Decide upon 3.2 fixes | 2006-08-14 → 2006-09-01 (+18d) | 2006-08-15 → 2006-09-05 (+21d) |  |  |  |  |  |
| 105 | Implement Fixes | 2006-08-15 → 2006-09-05 (+21d) | 2006-08-23 → 2006-09-13 (+21d) |  |  |  |  |  |
| 106 | **Generate "Thick" Client .jar and Build Script Rewrite** | 2006-09-05 → 2006-09-07 (+2d) | 2006-09-13 → 2006-09-15 (+2d) |  |  | 140.75d → 33.75d |  |  |
| 107 | Design | 2006-09-05 → 2006-09-07 (+2d) | 2006-09-06 → 2006-09-08 (+2d) |  |  | 140.75d → 138.75d |  |  |
| 108 | Code/Unit Test | 2006-09-06 → 2006-09-08 (+2d) | 2006-09-13 → 2006-09-15 (+2d) |  |  | 140.75d → 138.75d |  |  |
| 109 | **Improve Exception Handling** | 2006-08-23 → 2006-07-31 A (-23d) | 2006-09-13 → 2006-08-18 (-26d) |  | 0% → 49% | 140.75d → 35.75d |  |  |
| 110 | Design | 2006-08-23 → 2006-07-31 A (-23d) | 2006-08-25 → 2006-08-02 A (-23d) |  | 0% → 100% | 140.75d → none | 100 → 54 |  |
| 111 | Code/Unit Test | 2006-08-25 → 2006-08-02 A (-23d) | 2006-09-13 → 2006-08-18 (-26d) |  | 0% → 40% |  |  |  |
| 113 | **Testing** | 2006-09-13 → 2006-09-15 (+2d) | 2006-09-18 → 2006-09-20 (+2d) |  |  | 140.75d → 33.75d |  |  |
| 114 | QA Test Execution | 2006-09-13 → 2006-09-15 (+2d) | 2006-09-18 → 2006-09-20 (+2d) |  |  | 140.75d → 138.75d | 109, 106 → 106, 100 |  |
| 115 | Test Support | 2006-09-13 → 2006-09-15 (+2d) | 2006-09-18 → 2006-09-20 (+2d) |  |  | 140.75d → 138.75d | 109, 106 → 106, 100 |  |
| 117 | **Iteration 2** | 2006-09-18 → 2006-09-20 (+2d) | 2006-10-09 → 2006-10-11 (+2d) |  |  | 140.75d → 33.75d |  |  |
| 118 | **Composition** | 2006-09-18 → 2006-09-20 (+2d) | 2006-10-02 → 2006-10-04 (+2d) |  |  | 142.75d → 35.75d |  |  |
| 119 | Code/Unit Test | 2006-09-18 → 2006-09-20 (+2d) | 2006-10-02 → 2006-10-04 (+2d) |  |  | 142.75d → 140.75d |  |  |
| 120 | **One to one association naming problem and Super Class Package Defect** | 2006-10-02 → 2006-10-04 (+2d) | 2006-10-04 → 2006-10-06 (+2d) |  |  | 161.75d → 54.75d |  |  |
| 121 | Code/Unit Test | 2006-10-02 → 2006-10-04 (+2d) | 2006-10-04 → 2006-10-06 (+2d) |  |  | 161.75d → 159.75d |  |  |
| 122 | **Expand Junit and automated testing framework** | 2006-09-18 → 2006-09-20 (+2d) | 2006-10-04 → 2006-10-06 (+2d) |  |  | 140.75d → 33.75d |  |  |
| 123 | Design | 2006-09-18 → 2006-09-20 (+2d) | 2006-09-20 → 2006-09-22 (+2d) |  |  | 140.75d → 138.75d |  |  |
| 124 | Code/Unit Test | 2006-09-20 → 2006-09-22 (+2d) | 2006-10-04 → 2006-10-06 (+2d) |  |  | 140.75d → 138.75d |  |  |
| 126 | **Testing** | 2006-10-04 → 2006-10-06 (+2d) | 2006-10-09 → 2006-10-11 (+2d) |  |  | 140.75d → 33.75d |  |  |
| 127 | QA Test Execution | 2006-10-04 → 2006-10-06 (+2d) | 2006-10-09 → 2006-10-11 (+2d) |  |  | 140.75d → 138.75d |  |  |
| 128 | Test Support | 2006-10-04 → 2006-10-06 (+2d) | 2006-10-09 → 2006-10-11 (+2d) |  |  | 140.75d → 138.75d |  |  |
| 130 | **Iteration 3** | 2006-10-09 → 2006-10-11 (+2d) |  | 34.75d → 32.75d |  | 122.75d → 15.75d |  |  |
| 131 | Package Name Support (Feature Request #1807) | 2006-10-09 → 2006-10-11 (+2d) | 2006-10-17 → 2006-10-19 (+2d) |  |  | 140.75d → 138.75d |  |  |
| 132 | Association Model as sequence (Defect #1311) | 2006-10-09 → 2006-10-11 (+2d) | 2006-10-17 → 2006-10-19 (+2d) |  |  | 140.75d → 138.75d |  |  |
| 134 | **Testing** | 2006-10-17 → 2006-10-19 (+2d) | 2006-10-20 → 2006-10-24 (+4d) |  |  | 140.75d → 33.75d |  |  |
| 135 | QA Test Execution | 2006-10-17 → 2006-10-19 (+2d) | 2006-10-20 → 2006-10-24 (+4d) |  |  | 140.75d → 138.75d |  |  |
| 136 | Test Support | 2006-10-17 → 2006-10-19 (+2d) | 2006-10-20 → 2006-10-24 (+4d) |  |  | 140.75d → 138.75d |  |  |
| 138 | **Documentation** | 2006-10-20 → 2006-10-24 (+4d) | 2006-10-27 → 2006-10-31 (+4d) |  |  | 113.75d → 6.75d |  |  |
| 139 | Write Draft Documentation/ Update User Guide | 2006-10-20 → 2006-10-24 (+4d) | 2006-10-27 → 2006-10-31 (+4d) |  |  | 140.75d → 138.75d |  |  |
| 142 | Push Candidate to Staging | 2006-10-27 → 2006-10-31 (+4d) | 2006-11-02 → 2006-11-06 (+4d) |  |  | 140.75d → 138.75d |  |  |
| 165 | **Ongoing tasks** |  | 2007-05-21 → 2006-12-22 (-150d) | 260d → 155d |  |  |  |  |
| 166 | Support for SDK users/Support caBIG community | 2006-05-23 → 2006-06-07 (+15d) | 2007-05-21 → 2006-12-22 (-150d) | 255d → 140d |  |  |  | constraint none → finish no earlier than 2006-12-22 |
| 167 | Maintain defect/feature list | 2006-05-23 → 2006-06-07 (+15d) | 2007-05-21 → 2006-12-22 (-150d) | 255d → 140d |  |  |  | constraint none → start no earlier than 2006-06-07 |
| 168 | Prioritize fixes and enhancements for next iteration | 2006-05-23 → 2006-06-07 (+15d) | 2007-05-21 → 2006-12-22 (-150d) | 255d → 140d |  |  |  | constraint none → start no earlier than 2006-06-07 |
| 171 | **Monthly status reports** |  | 2007-05-08 → 2006-12-08 (-151d) | 235d → 129d |  | 9d → 10d |  |  |
| 179 | **Weekly Project Plan update** |  | 2007-05-08 → 2006-12-19 (-140d) | 251d → 152d |  | 9d → 3d |  |  |

## Version 7 (saved 2006-08-21)

Note of the change: updated from 8/21 status meeting

Last finish stays 2006-12-22. Complete tasks 71 → 74.

Changed:

| ID | Task | Start | Finish | Complete | Total float |
| --- | --- | --- | --- | --- | --- |
| 81 | **Construction** |  |  | 19% → 31% | 19d → 124d |
| 82 | **Development** |  |  | 19% → 31% | 19d → 124d |
| 88 | **Iteration 1** |  |  | 14% → 42% | 66.75d → 171.75d |
| 89 | **Technology Stack Upgrade** |  | 2006-08-08 A | 17% → 100% | 33.75d → none |
| 91 | Code/Unit Test | 2006-08-01 A | 2006-08-08 A | 0% → 100% | 140.75d → none |
| 94 | **Fix WS ability to retrieve objects which have more than** | 2006-08-10 A |  | 0% → 48% | 33.75d → 79.25d |
| 95 | Design | 2006-08-10 A | 2006-08-14 A | 0% → 100% | 138.75d → none |
| 96 | Code/Unit Test | 2006-08-14 A |  | 0% → 40% | 138.75d → 79.25d |
| 109 | **Improve Exception Handling** |  | 2006-08-18 A | 49% → 100% | 35.75d → none |
| 111 | Code/Unit Test |  | 2006-08-18 A | 40% → 100% | 140.75d → none |

## Version 8 (saved 2006-08-28)

Note of the change: Updated task status

Last finish stays 2006-12-22. Complete tasks 74 → 76.

Changed:

| ID | Task | Start | Finish | Complete | Total float |
| --- | --- | --- | --- | --- | --- |
| 81 | **Construction** |  |  | 31% → 37% |  |
| 82 | **Development** |  |  | 31% → 37% |  |
| 88 | **Iteration 1** |  |  | 42% → 58% |  |
| 94 | **Fix WS ability to retrieve objects which have more than** |  |  | 48% → 74% |  |
| 96 | Code/Unit Test |  |  | 40% → 70% |  |
| 100 | **Performance Bench Marking/Improvements (Run Time)/Massive Query Defect** | 2006-08-18 A |  | 0% → 42% | 35.75d → 140.75d |
| 101 | Define Approach/Documentation | 2006-08-18 A | 2006-08-21 A | 0% → 100% | 140.75d → none |
| 102 | Perform Benchmarking | 2006-08-21 A | 2006-08-29 A | 0% → 100% | 140.75d → none |

## Version 9 (saved 2006-09-11)

Note of the change: Updated per the 9/11 status meetings

Last finish stays 2006-12-22. Complete tasks 76 → 82.

Changed:

| ID | Task | Start | Finish | Complete | Total float |
| --- | --- | --- | --- | --- | --- |
| 81 | **Construction** |  |  | 37% → 51% |  |
| 82 | **Development** |  |  | 37% → 51% |  |
| 88 | **Iteration 1** |  |  | 58% → 89% |  |
| 94 | **Fix WS ability to retrieve objects which have more than** |  | 2006-08-31 A | 74% → 100% | 79.25d → none |
| 96 | Code/Unit Test |  | 2006-08-31 A | 70% → 100% | 79.25d → none |
| 97 | **Fix CORESystem.properties not loading on client side** | 2006-08-31 A | 2006-09-07 A | 0% → 100% | 33.75d → none |
| 98 | Design | 2006-08-31 A | 2006-09-01 A | 0% → 100% | 138.75d → none |
| 99 | Code/Unit Test | 2006-09-01 A | 2006-09-07 A | 0% → 100% | 138.75d → none |
| 100 | **Performance Bench Marking/Improvements (Run Time)/Massive Query Defect** |  |  | 42% → 98% | 140.75d → 71.75d |
| 103 | Define Resolution Strategy | 2006-08-29 A | 2006-09-01 A | 0% → 100% | 140.75d → none |
| 104 | Review Strategy/Design and Decide upon 3.2 fixes | 2006-09-01 A | 2006-09-05 A | 0% → 100% | 140.75d → none |
| 105 | Implement Fixes | 2006-09-05 A |  | 0% → 95% | 140.75d → 71.75d |
| 106 | **Generate "Thick" Client .jar and Build Script Rewrite** | 2006-09-07 A |  | 0% → 83% | 33.75d → 69.75d |
| 107 | Design | 2006-09-07 A | 2006-09-08 A | 0% → 100% | 138.75d → none |
| 108 | Code/Unit Test | 2006-09-08 A |  | 0% → 80% | 138.75d → 69.75d |

## Version 10 (saved 2006-09-25)

Note of the change: Updated per status meeting on 10/25/2006

Last finish stays 2006-12-22. Complete tasks 82 → 85.

Added:

| ID | Task | Duration | Start | Finish | Predecessors | Resources |
| --- | --- | --- | --- | --- | --- | --- |
| 132 | CQL Enhancement | 4d | 2006-10-16 | 2006-10-20 | 131 | Satish Patel |

Changed:

| ID | Task | Start | Finish | Duration | Complete | Total float | Predecessors | Other |
| --- | --- | --- | --- | --- | --- | --- | --- | --- |
| 81 | **Construction** |  |  |  | 51% → 52% |  |  |  |
| 82 | **Development** |  |  |  | 51% → 52% |  |  |  |
| 88 | **Iteration 1** |  |  |  | 89% → 91% |  |  |  |
| 100 | **Performance Bench Marking/Improvements (Run Time)/Massive Query Defect** |  | 2006-09-13 A |  | 98% → 100% | 71.75d → none |  |  |
| 105 | Implement Fixes |  | 2006-09-13 A |  | 95% → 100% | 71.75d → none |  |  |
| 106 | **Generate "Thick" Client .jar and Build Script Rewrite** |  | 2006-09-15 A |  | 83% → 100% | 69.75d → none |  |  |
| 108 | Code/Unit Test |  | 2006-09-15 A |  | 80% → 100% | 69.75d → none |  |  |
| 112 | Construct/Unit Testing Complete | 2006-09-13 A | 2006-09-13 A |  | 0% → 100% | 177d → none |  |  |
| 117 | **Iteration 2** | 2006-09-20 A |  |  | 0% → 9% | 33.75d → 156.75d |  |  |
| 120 | **One to one association naming problem and Super Class Package Defect** | 2006-10-04 A |  |  | 0% → 50% | 54.75d → 41.75d |  |  |
| 121 | Code/Unit Test | 2006-10-04 A |  |  | 0% → 50% | 159.75d → 54.75d |  |  |
| 122 | **Expand Junit and automated testing framework** | 2006-09-20 A |  |  | 0% → 13% | 33.75d → 42.75d |  |  |
| 123 | Analysis | 2006-09-20 A |  |  | 0% → 75% | 138.75d → 64.75d |  | was named Design |
| 128 | Create QA Build |  | 2006-10-11 → 2006-10-09 (-2d) | 3d → 1d |  | 138.75d → 44.75d |  | was named Test Support; resources Dan Dumitru; Satish Patel → Dan Dumitru |
| 130 | **Iteration 3** | 2006-10-11 → 2006-10-06 (-5d) |  | 32.75d → 35.75d |  | 15.75d → 18.75d |  |  |
| 131 | Package Name Support (Feature Request #1807) | 2006-10-11 → 2006-10-06 (-5d) | 2006-10-19 → 2006-10-16 (-3d) |  |  | 138.75d → 41.75d | 126 → 120 |  |
| 135 | **Testing** | 2006-10-19 → 2006-10-20 (+1d) | 2006-10-24 → 2006-10-27 (+3d) | 3d → 5d |  | 33.75d → 39.75d |  |  |
| 136 | QA Test Execution | 2006-10-19 → 2006-10-20 (+1d) | 2006-10-24 → 2006-10-25 (+1d) |  |  | 138.75d → 41.75d | 131, 133 → 133, 132, 131 |  |
| 137 | Test Support | 2006-10-19 → 2006-10-20 (+1d) | 2006-10-24 → 2006-10-27 (+3d) | 3d → 5d |  | 138.75d → 39.75d | 131, 133 → 133, 132, 131 | constraint none → start no earlier than 2006-10-19 |
| 139 | **Documentation** | 2006-10-24 → 2006-10-27 (+3d) | 2006-10-31 → 2006-11-03 (+3d) | 5d → 5.25d |  | 6.75d → 4d |  |  |
| 140 | Write Draft Documentation/ Update User Guide | 2006-10-24 → 2006-10-27 (+3d) | 2006-10-31 → 2006-11-03 (+3d) |  |  | 138.75d → 135.75d |  |  |
| 143 | Push Candidate to Staging | 2006-10-31 → 2006-11-03 (+3d) | 2006-11-06 → 2006-11-09 (+3d) |  |  | 138.75d → 135.75d |  |  |

## Version 11 (saved 2006-09-26)

Note of the change: Modified for the new CQL request.

Last finish stays 2006-12-22.

Changed:

| ID | Task | Start | Finish | Duration | Complete | Total float | Predecessors | Other |
| --- | --- | --- | --- | --- | --- | --- | --- | --- |
| 117 | **Iteration 2** |  |  |  | 9% → 12% | 156.75d → 51.75d |  |  |
| 118 | **Composition (#2546)** |  | 2006-10-04 → 2006-09-25 (-9d) | 10d → 3d |  | 42.75d → 38.25d |  | was named Composition |
| 119 | Design |  | 2006-10-04 → 2006-09-25 (-9d) | 10d → 3d |  | 140.75d → 38.25d |  | was named Code/Unit Test |
| 120 | **One to one association naming problem and Super Class Package Defect** | 2006-10-04 A → 2006-09-26 A (-8d) | 2006-10-06 → 2006-09-28 (-8d) | 2d → 2.5d | 50% → 40% | 41.75d → 36.5d |  |  |
| 121 | Code/Unit Test | 2006-10-04 A → 2006-09-26 A (-8d) | 2006-10-06 → 2006-09-28 (-8d) | 2d → 2.5d | 50% → 40% | 54.75d → 36.5d |  |  |
| 128 | Create QA Build |  | 2006-10-09 → 2006-10-06 (-3d) | 1d → 0.5d |  | 44.75d → 34.25d |  |  |
| 130 | **Iteration 3** | 2006-10-06 → 2006-09-28 (-8d) |  | 35.75d → 41.5d |  | 18.75d → 19d |  |  |
| 131 | Package Name Support (Feature Request #1807) | 2006-10-06 → 2006-10-12 (+6d) | 2006-10-16 → 2006-10-20 (+4d) |  |  | 41.75d → 44.5d | 120 → 132 |  |
| 132 | CQL Enhancement (#2896) | 2006-10-16 → 2006-09-28 (-18d) | 2006-10-20 → 2006-10-12 (-8d) | 4d → 10d |  | 41.75d → 36.5d | 131 → 120 | was named CQL Enhancement |
| 133 | Association Model as sequence (Defect #1311) | 2006-10-11 → 2006-10-06 (-5d) | 2006-10-19 → 2006-10-16 (-3d) |  |  | 42.75d → 34.25d | 126 → 128, 126 |  |
| 135 | **Testing** | 2006-10-20 → 2006-10-17 (-3d) | 2006-10-27 → 2006-10-25 (-2d) | 5d → 7d |  | 39.75d → 32d |  |  |
| 136 | Execute Tests | 2006-10-20 → 2006-10-17 (-3d) | 2006-10-25 → 2006-10-23 (-2d) | 3d → 5d |  | 41.75d → 34d | 133, 132, 131 → 134, 131, 133 | was named QA Test Execution |
| 137 | Test Support | 2006-10-20 → 2006-10-19 (-1d) | 2006-10-27 → 2006-10-25 (-2d) |  |  | 39.75d → 32d |  |  |
| 139 | **Documentation** | 2006-10-27 → 2006-10-26 (-1d) | 2006-11-03 → 2006-11-01 (-2d) | 5.25d → 5d |  | 4d → 5d |  |  |
| 140 | Write Draft Documentation/ Update User Guide | 2006-10-27 → 2006-10-26 (-1d) | 2006-11-03 → 2006-11-01 (-2d) |  |  | 135.75d → 32d | 135 → 137, 135 |  |
| 143 | Push Candidate to Staging | 2006-11-03 → 2006-11-02 (-1d) | 2006-11-09 → 2006-11-07 (-2d) |  |  | 135.75d → 32d |  |  |

## Version 12 (saved 2006-10-02)

Note of the change: updated per 10/2 status meeting

Last finish stays 2006-12-22. Complete tasks 85 → 86.

Changed:

| ID | Task | Start | Finish | Complete | Total float |
| --- | --- | --- | --- | --- | --- |
| 81 | **Construction** |  |  | 52% → 59% | 19d → 124d |
| 82 | **Development** |  |  | 52% → 59% | 19d → 124d |
| 117 | **Iteration 2** |  |  | 12% → 71% | 51.75d → 156.75d |
| 118 | **Composition (#2546)** | 2006-09-20 A |  | 0% → 99% | 38.25d → 63.75d |
| 119 | Design | 2006-09-20 A |  | 0% → 99% | 38.25d → 63.75d |
| 122 | **Expand Junit and automated testing framework** |  |  | 13% → 92% |  |
| 123 | Analysis |  | 2006-09-22 A | 75% → 100% | 64.75d → none |
| 124 | Code/Unit Test | 2006-09-22 A |  | 0% → 90% | 138.75d → 34.25d |

## Version 13 (saved 2006-10-12)

Note of the change: *** empty log message ***

Last finish stays 2006-12-22. Complete tasks 86 → 94.

Added:

| ID | Task | Duration | Start | Finish | Predecessors |
| --- | --- | --- | --- | --- | --- |
| 131 | Hibernate Fix | 3d | 2006-09-28 A | 2006-10-03 A | 120 |

Removed: 131 Package Name Support (Feature Request #1807)

Changed:

| ID | Task | Start | Finish | Duration | Complete | Total float | Predecessors |
| --- | --- | --- | --- | --- | --- | --- | --- |
| 81 | **Construction** |  |  |  | 59% → 70% |  |  |
| 82 | **Development** |  |  |  | 59% → 70% |  |  |
| 88 | **Iteration 1** |  | 2006-09-20 A |  | 91% → 100% | 66.75d → none |  |
| 100 | **Performance Bench Marking/Improvements (Run Time)/Massive Query Defect** |  |  |  |  |  | 109, 54 → 109 |
| 113 | **Testing** | 2006-09-15 A | 2006-09-20 A |  | 0% → 100% | 66.72d → none |  |
| 114 | QA Test Execution | 2006-09-15 A | 2006-09-20 A |  | 0% → 100% | 66.72d → none |  |
| 115 | Test Support | 2006-09-15 A | 2006-09-20 A |  | 0% → 100% | 66.72d → none |  |
| 116 | Iteration 1 Dev/QA Complete | 2006-09-18 A | 2006-09-18 A |  | 0% → 100% | 174d → none |  |
| 117 | **Iteration 2** |  |  |  | 71% → 83% |  |  |
| 118 | **Composition (#2546)** |  | 2006-09-25 A |  | 99% → 100% | 63.75d → none |  |
| 119 | Design |  | 2006-09-25 A |  | 99% → 100% | 63.75d → none |  |
| 120 | **One to one association naming problem and Super Class Package Defect** |  | 2006-09-28 A |  | 40% → 100% | 36.5d → none |  |
| 121 | Code/Unit Test |  | 2006-09-28 A |  | 40% → 100% | 36.5d → none |  |
| 122 | **Expand Junit and automated testing framework** |  | 2006-10-06 A |  | 92% → 100% | 34.25d → none |  |
| 124 | Code/Unit Test |  | 2006-10-06 A |  | 90% → 100% | 34.25d → none |  |
| 125 | Construct/Unit Testing Complete | 2006-09-29 A | 2006-09-29 A |  | 0% → 100% | 165d → none |  |
| 128 | Create QA Build |  |  |  |  |  | 122, 118 → 122 |
| 130 | **Iteration 3** | 2006-09-28 A |  |  | 0% → 15% |  |  |
| 132 | CQL Enhancement (#2896) | 2006-09-28 → 2006-10-03 A (+5d) | 2006-10-12 → 2006-10-18 (+6d) | 10d → 11d | 0% → 20% | 36.5d → 32.5d | 120 → 131 |
| 133 | Association Model as sequence (Defect #1311) | 2006-10-06 A | 2006-10-16 → 2006-10-17 (+1d) | 6d → 7d | 0% → 43% | 34.25d → 33.25d | 128, 126 → 128 |
| 136 | Execute Tests |  |  |  |  | 34d → 43d | 134, Package Name Support (Feature Request #1807), 133 → 134 |
| 137 | Test Support |  |  |  |  |  | 133, 132, Package Name Support (Feature Request #1807) → 133, 132 |
| 140 | Write Draft Documentation/ Update User Guide |  |  |  |  |  | 137, 135 → 137 |

## Version 14 (saved 2006-10-16)

Note of the change: *** empty log message ***

Last finish stays 2006-12-22. Complete tasks 94 → 95.

Changed:

| ID | Task | Finish | Complete | Total float | Other |
| --- | --- | --- | --- | --- | --- |
| 81 | **Construction** |  | 70% → 76% |  |  |
| 82 | **Development** |  | 70% → 76% |  |  |
| 130 | **Iteration 3** |  | 15% → 34% |  |  |
| 132 | CQL Enhancement (#2896) |  | 20% → 80% |  |  |
| 133 | Association Model as sequence (Defect #1311) | 2006-10-17 A | 43% → 100% | 33.25d → none |  |
| 147 | Test Support/All Inclusive Test Model Enhancement |  |  |  | was named Test Support |
