# SDK 4.0

How a schedule from MS Project changed from version to version. A marks actual dates.

## Version 1 (saved 2007-02-14)

Note of the change: Draft Version

| ID | WBS | Task | Duration | Start | Finish | Predecessors | Complete | Total float | Constraint |
| --- | --- | --- | --- | --- | --- | --- | --- | --- | --- |
| 1 | 1 | **caCORE SDK v4.0** | 129d? | 2007-01-19 A | 2007-07-24 |  | 13% | 0d |  |
| 2 | 1.1 | **Inception** | 3d | 2007-01-19 A | 2007-01-23 A |  | 100% |  |  |
| 3 |  | 4.0 Kickoff meeting | 0d | 2007-01-19 A | 2007-01-19 A |  | 100% |  | start no earlier than 2007-01-19 |
| 4 |  | Create initial task plan | 1d | 2007-01-23 A | 2007-01-23 A |  | 100% |  |  |
| 5 | 1.2 | **Eloboration** | 13d | 2007-01-23 A | 2007-02-13 |  | 71% | 114d |  |
| 6 | 1.2.1 | **Requiements meetings** | 6.25d | 2007-01-23 A | 2007-01-31 A |  | 100% |  |  |
| 7 |  | Requirements meeting (CGEMS, Rambrandt) | 0.25d | 2007-01-29 A | 2007-01-29 A |  | 100% |  | start no earlier than 2007-01-29 |
| 8 |  | Requirements Meeting (caCORE API) | 0.25d | 2007-01-23 A | 2007-01-23 A |  | 100% |  |  |
| 9 |  | Requirements meeting (caAdapter) | 0.25d | 2007-01-30 A | 2007-01-30 A |  | 100% |  | start no earlier than 2007-01-30 |
| 10 |  | Requirements meeting (caDSR) | 0.25d | 2007-01-30 A | 2007-01-30 A |  | 100% |  | start no earlier than 2007-01-30 |
| 11 |  | Requirements meeting (caGRID) | 0.25d | 2007-01-31 A | 2007-01-31 A |  | 100% |  | start no earlier than 2007-01-31 |
| 12 |  | Requirements meeting (other teams) | 2d | 2007-01-29 A | 2007-01-30 A |  | 100% |  | start no earlier than 2007-01-29 |
| 13 | 1.2.2 | **Scope Document** | 10d | 2007-01-26 A | 2007-02-13 |  | 53% | 114d |  |
| 14 |  | Prepare list of scope items on gforge | 1d | 2007-01-26 A | 2007-01-26 |  | 80% | 44.35d | start no earlier than 2007-01-26 |
| 15 |  | Draft scope document | 3d | 2007-01-29 A | 2007-01-31 A | 14 | 100% |  |  |
| 16 |  | Estimate LOE for Iteration 1 - 3 scope items | 1d | 2007-02-01 A | 2007-02-01 A | 15 | 100% |  |  |
| 17 |  | Prepare risk list | 1d | 2007-02-02 A | 2007-02-02 | 16 | 50% | 110d |  |
| 18 |  | NCICB Review of scope document | 3d | 2007-02-08 | 2007-02-12 | 17 |  | 44d |  |
| 19 |  | Revise scope document | 1d | 2007-02-13 | 2007-02-13 | 18 |  | 44d |  |
| 20 | 1.2.3 | **QA Actvities** | 7d | 2007-01-23 A | 2007-01-31 |  | 80% | 120d |  |
| 21 |  | Setup QA repository | 0d | 2007-01-23 A | 2007-01-23 A |  | 100% |  |  |
| 22 |  | Modify Unit test cases and data | 5d | 2007-01-23 A | 2007-01-29 | 21 | 80% | 121.6d |  |
| 23 |  | Validate test case | 2d | 2007-01-30 A | 2007-01-31 | 22 | 80% | 120d |  |
| 24 |  | Revise task plan | 0.5d | 2007-01-23 A | 2007-01-23 A |  | 100% |  |  |
| 25 | 1.3 | **Construction** | 122d? | 2007-01-23 A | 2007-07-17 |  | 8% | 5d |  |
| 26 | 1.3.1 | **Iteration 1** | 32d | 2007-01-23 A | 2007-03-12 |  | 22% | 95d |  |
| 27 | 1.3.1.1 | **SDK 3.2.1 Release** | 14d | 2007-01-23 A | 2007-02-14 A |  | 100% |  |  |
| 28 |  | Integrate new UI | 14d | 2007-01-23 A | 2007-02-14 A |  | 100% |  |  |
| 29 | 1.3.1.2 | **QA** | 3d | 2007-02-15 | 2007-02-19 |  |  | 103d |  |
| 30 |  | Test new UI | 3d | 2007-02-15 | 2007-02-19 | 28 |  | 103d |  |
| 31 | 1.3.1.3 | **caGrid Integration** | 21d | 2007-02-12 | 2007-03-12 |  |  | 4.5d |  |
| 32 | 1.3.1.3.1 | **Support multiple ApplicationService in same JVM** | 13d | 2007-02-12 | 2007-02-28 |  |  | 4.5d |  |
| 33 |  | Design | 3d | 2007-02-12 | 2007-02-14 |  |  | 4.5d | start no earlier than 2007-02-12 |
| 34 |  | Design Review | 0.5d | 2007-02-20 | 2007-02-20 | 38 |  | 4.5d |  |
| 35 |  | Design Update | 0.5d | 2007-02-20 | 2007-02-20 | 34 |  | 4.5d |  |
| 36 |  | Development/Unit Test | 6d | 2007-02-21 | 2007-02-28 | 35 |  | 4.5d |  |
| 37 | 1.3.1.3.2 | **Support multiple concurrent users on the same ApplicationService** | 13d | 2007-02-15 | 2007-03-05 |  |  | 4.5d |  |
| 38 |  | Design | 3d | 2007-02-15 | 2007-02-19 | 33 |  | 4.5d |  |
| 39 |  | Development | 3d | 2007-03-01 | 2007-03-05 | 36 |  | 4.5d |  |
| 40 |  | Castor related work was performed on SDK 3.1 branch move to SDK 3.2 | 3d | 2007-02-15 | 2007-02-19 | 28 |  | 28.25d |  |
| 41 |  | Castor mapping for inheritance defect (GF#4031) | 0.25d | 2007-02-20 | 2007-02-20 | 40 |  | 28.25d |  |
| 42 |  | Improved CSM Installation with SDK | 1d | 2007-02-20 | 2007-02-21 | 41 |  | 28.25d |  |
| 43 | 1.3.1.3.6 | **Performance due to unnecessary nested sub-selects** | 6d | 2007-02-21 | 2007-03-01 |  |  | 28.25d |  |
| 44 |  | Analysis/Development | 6d | 2007-02-21 | 2007-03-01 | 42 |  | 28.25d |  |
| 45 | 1.3.1.3.7 | **QA** | 15d | 2007-02-20 | 2007-03-12 |  |  | 14.5d |  |
| 46 |  | Test Development | 7d | 2007-02-20 | 2007-02-28 | 30 |  | 103d | start no earlier than 2007-02-14 |
| 47 |  | Test Execution | 5d | 2007-03-06 | 2007-03-12 | 39, 44 |  | 95d |  |
| 48 |  | Test Support | 3d | 2007-03-06 | 2007-03-08 | 39 |  | 4.5d |  |
| 49 | 1.3.1.3.8 | **Documentation** | 2d | 2007-03-01 | 2007-03-05 |  |  | 28.25d |  |
| 50 |  | Update Programmers Guide, Release Notes | 1d | 2007-03-01 | 2007-03-02 | 44 |  | 28.25d |  |
| 51 |  | Review | 0.5d | 2007-03-02 | 2007-03-02 | 50 |  | 28.25d |  |
| 52 |  | Final | 0.5d | 2007-03-02 | 2007-03-05 | 51 |  | 28.25d |  |
| 53 |  | Release Packaging | 2d | 2007-03-05 | 2007-03-07 | 52 |  | 98.75d |  |
| 54 | 1.3.1.3.10 | **Iteration Plan** | 2d | 2007-03-02 | 2007-03-06 | 50 |  | 99.75d |  |
| 55 |  | Review Client Feature Request/Revise Task Plan | 2d | 2007-03-02 | 2007-03-06 |  |  | 99.75d |  |
| 56 |  | 3.2.1 Release Complete | 0d | 2007-03-06 | 2007-03-06 | 55 |  | 99.75d |  |
| 57 | 1.3.2 | **Iteration 2** | 39.75d | 2007-03-05 | 2007-04-27 |  |  | 8.25d |  |
| 58 | 1.3.2.1 | **SDK 4.0 Release** | 39.75d | 2007-03-05 | 2007-04-27 |  |  | 8.25d |  |
| 59 | 1.3.2.1.1 | **XMI Processor changes** | 33.75d | 2007-03-05 | 2007-04-19 |  |  | 4.5d |  |
| 60 |  | Detailed design of new code generation framework | 5d | 2007-03-09 | 2007-03-15 | 48 |  | 4.5d |  |
| 61 |  | Design Review/Update | 1d | 2007-03-16 | 2007-03-16 | 60 |  | 4.5d |  |
| 62 |  | Implement new code generation framework | 3d | 2007-03-19 | 2007-03-21 | 61 |  | 4.5d |  |
| 63 |  | Rewrite bean generation for JDK 1.5 | 2d | 2007-03-22 | 2007-03-23 | 62 |  | 4.5d |  |
| 64 |  | Rewrite O/R mapping generation (.hbm.xml, .cfg.xml, ehcache.xml) | 10d | 2007-03-26 | 2007-04-06 | 63 |  | 4.5d |  |
| 65 |  | Implement class cache for JDK 1.5 | 4d | 2007-03-05 | 2007-03-09 | 49 |  | 28.25d |  |
| 66 |  | Rewrite XML schema generaotor | 2d | 2007-03-09 | 2007-03-13 | 65 |  | 28.25d |  |
| 67 |  | Rewrite XML mapping file generator | 2d | 2007-03-13 | 2007-03-15 | 66 |  | 28.25d |  |
| 68 |  | Supporting files generation (coreBeans.properties, DAOConfig.xml) | 5d | 2007-04-09 | 2007-04-13 | 64 |  | 4.5d |  |
| 69 |  | Change nestedCriteria to use JDK 1.5 beans | 2d | 2007-04-16 | 2007-04-17 | 65, 68 |  | 4.5d |  |
| 70 |  | Change CQL translator to use JDK 1.5 beans | 2d | 2007-04-18 | 2007-04-19 | 65, 69 |  | 4.5d |  |

| ID | WBS | Task | Duration | Start | Finish | Predecessors | Total float | Constraint |
| --- | --- | --- | --- | --- | --- | --- | --- | --- |
| 71 | 1.3.2.1.2 | **QA** | 30d | 2007-03-16 | 2007-04-26 |  | 29.5d |  |
| 72 |  | Test Development | 5d | 2007-03-16 | 2007-03-22 | 60 | 86d | start no earlier than 2007-03-05 |
| 73 |  | Test Execution | 5d | 2007-04-20 | 2007-04-26 | 70 | 61d |  |
| 74 |  | Test Support | 2.5d | 2007-04-20 | 2007-04-24 | 70 | 4.5d |  |
| 75 | 1.3.2.1.3 | **Iteration Plan** | 1d | 2007-04-27 | 2007-04-27 |  | 61d |  |
| 76 |  | Review Client Feature Request/Revise Task Plan | 1d | 2007-04-27 | 2007-04-27 | 71 | 61d |  |
| 77 | 1.3.3 | **Iteration 3** | 33.75d | 2007-03-15 | 2007-05-01 | 67 | 26.75d |  |
| 78 | 1.3.3.1 | **Release 4.0 Beta 1** | 7d | 2007-03-15 | 2007-03-26 |  | 26.75d |  |
| 79 | 1.3.3.1.1 | **Use documentation in the Java docs (GF#1243) & Integrate JavaDocs in the web system** | 3.5d | 2007-03-15 | 2007-03-20 |  | 28.25d |  |
| 80 |  | Design | 0.5d | 2007-03-15 | 2007-03-15 | 40 | 28.25d |  |
| 81 |  | Development | 3d | 2007-03-15 | 2007-03-20 | 80 | 28.25d |  |
| 82 | 1.3.3.1.2 | **Improved logging/trace messages** | 2.5d | 2007-03-20 | 2007-03-23 |  | 26.75d |  |
| 83 |  | Development | 2.5d | 2007-03-20 | 2007-03-23 | 81 | 26.75d |  |
| 84 |  | Unrecognized database format for EA (GF#3955) | 0.5d | 2007-03-23 | 2007-03-23 | 82 | 85.75d |  |
| 85 |  | Build script change for downloading MySQL (GF#2933) | 0.5d | 2007-03-23 | 2007-03-26 | 84 | 85.75d |  |
| 86 |  | Release 4.0 Beta 1 Complete | 0d | 2007-05-01 | 2007-05-01 | 74, 82 | 0d | start no earlier than 2007-05-01 |
| 87 |  | Review Client Feature Request/Revise Task Plan | 1d | 2007-05-01 | 2007-05-01 | 86 | 59d |  |
| 88 | 1.3.4 | **Iteration 5** | 21d? | 2007-05-01 | 2007-05-29 | 86 | 0d |  |
| 89 |  | Release 4.0 Beta 2 | 20d | 2007-05-01 | 2007-05-28 |  | 0d |  |
| 90 |  | Review Client Feature Request/Revise Task Plan | 1d? | 2007-05-29 | 2007-05-29 | 89 | 39d |  |
| 91 | 1.3.5 | **Iteration 6** | 15d | 2007-05-29 | 2007-06-18 | 89 | 0d |  |
| 92 |  | Release 4.0 Final | 15d | 2007-05-29 | 2007-06-18 |  | 0d |  |
| 93 |  | Integration Test | 10d | 2007-06-19 | 2007-07-02 | 91 | 5d |  |
| 94 |  | UAT Test | 10d | 2007-07-03 | 2007-07-17 | 93 | 5d |  |
| 95 | 1.4 | **Transition** | 25d | 2007-06-19 | 2007-07-24 |  | 0d |  |
| 96 | 1.4.1 | **Documentation** | 25d | 2007-06-19 | 2007-07-24 | 91 | 0d |  |
| 97 |  | New users guide | 10d | 2007-06-19 | 2007-07-02 |  | 0d | start no earlier than 2007-06-15 |
| 98 |  | New technical guide | 10d | 2007-07-03 | 2007-07-17 | 97 | 0d | start no earlier than 2007-06-15 |
| 99 |  | How to example | 5d | 2007-07-18 | 2007-07-24 | 98 | 0d | start no earlier than 2007-06-15 |
| 100 |  | 4.0 Release Complete | 0d | 2007-07-24 | 2007-07-24 | 96 | 0d |  |

## Version 2 (saved 2007-02-21)

Note of the change: *** empty log message ***

Last finish stays 2007-07-24. Complete tasks 13 → 19.

Added:

| ID | Task | Duration | Start | Finish | Predecessors | Resources |
| --- | --- | --- | --- | --- | --- | --- |
| 34 | Prototype | 3d | 2007-02-15 A | 2007-02-19 A | 33 | Satish |
| 79 | Design Review | 0.5d | 2007-03-20 | 2007-03-20 | 78 | Satish; Kunal; Doug; Avinash |
| 80 | Design Update | 0.5d | 2007-03-20 | 2007-03-21 | 79 | Dan |

Changed:

| ID | Task | Start | Finish | Duration | Complete | Total float | Predecessors | Other |
| --- | --- | --- | --- | --- | --- | --- | --- | --- |
| 1 | **caCORE SDK v4.0** |  |  |  | 13% → 20% |  |  |  |
| 5 | **Eloboration** |  |  |  | 71% → 91% |  |  |  |
| 13 | **Scope Document** |  |  |  | 53% → 95% |  |  |  |
| 17 | Prepare risk list |  |  |  | 50% → 90% | 110d → 118d |  |  |
| 18 | NCICB Review of scope document | 2007-02-08 A | 2007-02-12 A |  | 0% → 100% | 44d → none |  |  |
| 19 | Revise scope document | 2007-02-13 A |  |  | 0% → 80% | 44d → 114d |  |  |
| 25 | **Construction** |  |  |  | 8% → 14% |  |  |  |
| 26 | **Iteration 1** |  | 2007-03-12 → 2007-03-08 (-4d) | 32d → 29.25d | 22% → 46% | 95d → 97.75d |  |  |
| 29 | **QA** | 2007-02-15 A |  |  | 0% → 80% |  |  |  |
| 30 | Test new UI | 2007-02-15 A |  |  | 0% → 80% |  |  |  |
| 31 | **caGrid Integration** | 2007-02-12 A | 2007-03-12 → 2007-03-08 (-4d) | 21d → 18.25d | 0% → 25% | 4.5d → 97.75d |  |  |
| 32 | **Support multiple concurrent users on the same ApplicationService** | 2007-02-15 → 2007-02-12 A (-3d) | 2007-03-05 → 2007-02-22 (-11d) | 13d → 8.5d | 0% → 76% | 4.5d → 12d |  |  |
| 33 | Design | 2007-02-15 → 2007-02-12 A (-3d) | 2007-02-19 → 2007-02-14 A (-5d) |  | 0% → 100% | 4.5d → none |  |  |
| 35 | Design Review | 2007-02-20 A | 2007-02-20 A |  | 0% → 100% | 4.5d → none | 33 → 34 |  |
| 36 | Design Update |  | 2007-02-20 → 2007-02-21 (+1d) | 0.5d → 1d |  | 4.5d → 12d |  | resources Satish/Kunal → Satish |
| 37 | Development | 2007-03-01 → 2007-02-21 (-8d) | 2007-03-05 → 2007-02-22 (-11d) | 3d → 1d |  | 4.5d → 12d | 81 → 36 |  |
| 38 | Castor related work was performed on SDK 3.1 branch move to SDK 3.2 | 2007-02-15 A | 2007-02-19 A |  | 0% → 100% | 28.25d → none |  |  |
| 39 | Castor mapping for inheritance defect (GF#4031) | 2007-02-20 A | 2007-02-20 A |  | 0% → 100% | 28.25d → none |  |  |
| 43 | **QA** |  | 2007-03-12 → 2007-03-08 (-4d) | 15d → 12.25d |  |  |  |  |
| 45 | Test Execution | 2007-03-06 → 2007-03-01 (-5d) | 2007-03-12 → 2007-03-08 (-4d) |  |  | 95d → 97.75d | 37, 42 → 34, 42 |  |
| 46 | Test Support | 2007-03-06 → 2007-02-22 (-12d) | 2007-03-08 → 2007-02-27 (-9d) |  |  | 4.5d → 12d |  |  |
| 55 | **Iteration 2** | 2007-03-05 → 2007-02-27 (-6d) | 2007-04-27 → 2007-04-18 (-9d) | 39.75d → 36d |  | 8.25d → 12d |  |  |
| 56 | **SDK 4.0 Release** | 2007-03-05 → 2007-02-27 (-6d) | 2007-04-27 → 2007-04-18 (-9d) | 39.75d → 36d |  | 8.25d → 12d |  |  |
| 57 | **XMI Processor changes** | 2007-03-05 → 2007-02-27 (-6d) | 2007-04-19 → 2007-04-10 (-9d) | 33.75d → 30d |  | 4.5d → 12d |  |  |
| 58 | Detailed design of new code generation framework | 2007-03-09 → 2007-02-27 (-10d) | 2007-03-15 → 2007-03-06 (-9d) |  |  | 4.5d → 12d |  |  |
| 59 | Design Review/Update | 2007-03-16 → 2007-03-06 (-10d) | 2007-03-16 → 2007-03-07 (-9d) |  |  | 4.5d → 12d |  |  |
| 60 | Implement new code generation framework | 2007-03-19 → 2007-03-07 (-12d) | 2007-03-21 → 2007-03-12 (-9d) |  |  | 4.5d → 12d |  |  |
| 61 | Rewrite bean generation for JDK 1.5 | 2007-03-22 → 2007-03-12 (-10d) | 2007-03-23 → 2007-03-14 (-9d) |  |  | 4.5d → 12d |  |  |
| 62 | Rewrite O/R mapping generation (.hbm.xml, .cfg.xml, ehcache.xml) | 2007-03-26 → 2007-03-14 (-12d) | 2007-04-06 → 2007-03-28 (-9d) |  |  | 4.5d → 12d |  |  |
| 66 | Supporting files generation (coreBeans.properties, DAOConfig.xml) | 2007-04-09 → 2007-03-28 (-12d) | 2007-04-13 → 2007-04-04 (-9d) |  |  | 4.5d → 12d |  |  |
| 67 | Change nestedCriteria to use JDK 1.5 beans | 2007-04-16 → 2007-04-04 (-12d) | 2007-04-17 → 2007-04-06 (-11d) |  |  | 4.5d → 12d |  |  |
| 68 | Change CQL translator to use JDK 1.5 beans | 2007-04-18 → 2007-04-06 (-12d) | 2007-04-19 → 2007-04-10 (-9d) |  |  | 4.5d → 12d |  |  |
| 69 | **QA** | 2007-03-16 → 2007-03-06 (-10d) | 2007-04-26 → 2007-04-17 (-9d) |  |  | 29.5d → 37d |  |  |
| 70 | Test Development | 2007-03-16 → 2007-03-06 (-10d) | 2007-03-22 → 2007-03-13 (-9d) |  |  | 86d → 93.5d |  |  |
| 71 | Test Execution | 2007-04-20 → 2007-04-10 (-10d) | 2007-04-26 → 2007-04-17 (-9d) |  |  | 61d → 68.5d |  |  |
| 72 | Test Support | 2007-04-20 → 2007-04-10 (-10d) | 2007-04-24 → 2007-04-12 (-12d) |  |  | 4.5d → 12d |  |  |
| 73 | **Iteration Plan** | 2007-04-27 → 2007-04-17 (-10d) | 2007-04-27 → 2007-04-18 (-9d) |  |  | 61d → 68.5d |  |  |
| 74 | Review Client Feature Request/Revise Task Plan | 2007-04-27 → 2007-04-17 (-10d) | 2007-04-27 → 2007-04-18 (-9d) |  |  | 61d → 68.5d |  |  |
| 76 | **Release 4.0 Beta 1** |  | 2007-03-26 → 2007-04-09 (+14d) | 7d → 17d |  | 26.75d → 16.75d |  |  |
| 77 | **Support multiple ApplicationService in same JVM** | 2007-02-12 → 2007-03-15 (+31d) | 2007-02-28 → 2007-03-29 (+29d) | 13d → 10d |  | 4.5d → 16.75d |  |  |
| 78 | Design | 2007-02-12 → 2007-03-15 (+31d) | 2007-02-14 → 2007-03-20 (+34d) |  |  | 4.5d → 16.75d | none → 38 | resources Satish → Dan |
| 81 | Development/Unit Test | 2007-02-21 → 2007-03-21 (+28d) | 2007-02-28 → 2007-03-29 (+29d) |  |  | 4.5d → 16.75d | 36 → 80 | resources Satish → Dan |
| 82 | **Use documentation in the Java docs (GF#1243) & Integrate JavaDocs in the web system** | 2007-03-15 → 2007-03-29 (+14d) | 2007-03-20 → 2007-04-03 (+14d) |  |  | 28.25d → 16.75d |  |  |
| 83 | Design | 2007-03-15 → 2007-03-29 (+14d) | 2007-03-15 → 2007-03-29 (+14d) |  |  | 28.25d → 16.75d | 38 → 77 |  |
| 84 | Development | 2007-03-15 → 2007-03-29 (+14d) | 2007-03-20 → 2007-04-03 (+14d) |  |  | 28.25d → 16.75d |  |  |
| 85 | **Improved logging/trace messages** | 2007-03-20 → 2007-04-03 (+14d) | 2007-03-23 → 2007-04-06 (+14d) |  |  | 26.75d → 16.75d |  |  |
| 86 | Development | 2007-03-20 → 2007-04-03 (+14d) | 2007-03-23 → 2007-04-06 (+14d) |  |  | 26.75d → 16.75d |  |  |
| 87 | Unrecognized database format for EA (GF#3955) | 2007-03-23 → 2007-04-06 (+14d) | 2007-03-23 → 2007-04-06 (+14d) |  |  | 85.75d → 75.75d |  |  |
| 88 | Build script change for downloading MySQL (GF#2933) | 2007-03-23 → 2007-04-06 (+14d) | 2007-03-26 → 2007-04-09 (+14d) |  |  | 85.75d → 75.75d |  |  |

## Version 3 (saved 2007-03-07)

Note of the change: *** empty log message ***

Last finish 2007-07-24 → 2007-07-27 (+3d). Complete tasks 19 → 24.

Added:

| ID | Task | Duration | Start | Finish | Predecessors | Constraint | Resources |
| --- | --- | --- | --- | --- | --- | --- | --- |
| 38 | Use documentation in the Java docs (GF#1243) & Integrate JavaDocs in the web system | 2d | 2007-02-23 A | 2007-02-27 A | 36 |  | Satish |
| 39 | **Security** | 10.5d | 2007-02-27 A | 2007-03-13 |  |  |  |
| 40 | Implement Security in Thick Client | 4d | 2007-02-27 A | 2007-03-05 | 38 |  | Satish |
| 41 | **Integration of new Installation Process into SDK** | 3d | 2007-03-02 A | 2007-03-06 |  |  |  |
| 42 | Code | 3d | 2007-03-02 A | 2007-03-06 |  | start no earlier than 2007-03-02 | Kunal |
| 43 | **Upgrade to CSM to Support Grid ability to leverage new CSM installation steps** | 3d | 2007-03-07 | 2007-03-09 |  |  |  |
| 44 | Code | 3d | 2007-03-07 | 2007-03-09 | 41 |  | Kunal |
| 45 | **Configurable Authentication and Authorization for SDK Generated System** | 4d | 2007-03-08 | 2007-03-13 |  |  |  |
| 46 | Code | 4d | 2007-03-08 | 2007-03-13 |  | start no earlier than 2007-03-08 | Satish |
| 47 | **Documentation** | 2d | 2007-03-12 | 2007-03-13 |  |  |  |
| 48 | SDK Programmer's/Technical Guide | 2d | 2007-03-12 | 2007-03-13 | 43 |  | Kunal/Satish |
| 53 | Provide the ability to only generate an XSD and castor mapping based on xmi input | 2d | 2007-02-28 A | 2007-03-02 | 51 |  | Dan |
| 54 | Ability to generate interfaces/POJO for domain classes in our UML model | 3d | 2007-03-02 | 2007-03-07 | 53 |  | Dan |
| 69 | Update Requirements Document | 5d | 2007-03-23 | 2007-03-29 | 65 |  | Charles [15%] |
| 70 | **Open Source Modeling Tool XMI Processor** | 20d | 2007-03-07 | 2007-04-04 |  |  |  |
| 71 | Evaluation | 4d | 2007-03-07 | 2007-03-13 | 54, 62 |  | Dan |
| 72 | Present Evaluation for review | 0.5d | 2007-03-13 | 2007-03-13 | 71 |  | Dan |
| 73 | Revise Evaluation/Finalize On Tool | 1d | 2007-03-13 | 2007-03-14 | 72 |  | Dan |
| 74 | Build caCORE Test Model | 2d | 2007-03-14 | 2007-03-16 | 73 |  | Dan |
| 76 | Design Review | 0.5d | 2007-03-27 | 2007-03-28 | 75 |  | Dan; Satish; Christophe; Ye |
| 77 | Finalize Design | 1d | 2007-03-28 | 2007-03-29 | 76 |  | Dan |
| 78 | Evaluate LOE/Revise Task Plan for Development | 4d | 2007-03-29 | 2007-04-04 | 77 |  | Charles; Steve A.; Ye Wu |
| 99 | Update Requirements Document | 5d | 2007-04-10 | 2007-04-17 | 87 |  | Charles [15%] |
| 109 | **QA** | 19.75d | 2007-04-17 | 2007-05-14 |  |  |  |
| 110 | Test Development | 5d | 2007-04-17 | 2007-04-24 | 99, 92 |  | Steve |
| 111 | Test Execution | 5d | 2007-05-08 | 2007-05-14 | 93 |  | Steve |
| 112 | Test Support | 2.5d | 2007-05-08 | 2007-05-10 | 93 |  | Dan |

Removed: 40 Improved CSM Installation with SDK; 82 Use documentation in the Java docs (GF#1243) & Integrate JavaDocs in the web system; 84 Development

Changed:

| ID | Task | Start | Finish | Duration | Complete | Total float | Predecessors | Other |
| --- | --- | --- | --- | --- | --- | --- | --- | --- |
| 1 | **caCORE SDK v4.0** |  | 2007-07-24 → 2007-07-27 (+3d) | 129d? → 132d? | 20% → 23% |  |  |  |
| 5 | **Eloboration** |  |  |  | 91% → 98% | 114d → 117d |  |  |
| 13 | **Scope Document** |  |  |  | 95% → 96% | 114d → 117d |  |  |
| 19 | Revise scope document |  |  |  | 80% → 90% |  |  |  |
| 20 | **QA Actvities** |  |  |  | 80% → 99% | 120d → 123d |  |  |
| 22 | Modify Unit test cases and data |  | 2007-01-29 A |  | 80% → 100% | 121.6d → none |  |  |
| 23 | Validate test case |  |  |  | 80% → 95% |  |  |  |
| 25 | **Construction** |  | 2007-07-17 → 2007-07-20 (+3d) | 122d? → 125d? | 14% → 19% |  |  |  |
| 26 | **Iteration 1** |  | 2007-03-08 → 2007-03-28 (+20d) | 29.25d → 44d | 46% → 56% | 97.75d → 86d |  |  |
| 29 | **QA** |  |  |  | 80% → 95% | 103d → 94d |  |  |
| 30 | Test new UI |  |  |  | 80% → 95% | 103d → 98d |  |  |
| 31 | **caGrid Integration** |  | 2007-03-08 → 2007-03-28 (+20d) | 18.25d → 33d | 25% → 45% | 97.75d → 86d |  |  |
| 32 | **Support multiple concurrent users on the same ApplicationService** |  | 2007-02-22 → 2007-03-01 A (+7d) | 8.5d → 13.5d | 76% → 100% | 12d → none |  |  |
| 36 | Design Update/Prototype | 2007-02-20 A | 2007-02-21 → 2007-02-23 A (+2d) | 1d → 3d | 0% → 100% | 12d → none |  | was named Design Update |
| 37 | Development | 2007-02-21 → 2007-02-26 A (+5d) | 2007-02-22 → 2007-03-01 A (+7d) | 1d → 3d | 0% → 100% | 12d → none | 36 → 38 |  |
| 51 | **Performance due to unnecessary nested sub-selects** | 2007-02-21 → 2007-02-20 A (-1d) | 2007-03-01 → 2007-02-28 A (-1d) |  | 0% → 100% | 16.75d → none | none → 50 |  |
| 52 | Analysis/Development | 2007-02-21 → 2007-02-20 A (-1d) | 2007-03-01 → 2007-02-28 A (-1d) |  | 0% → 100% | 16.75d → none | Improved CSM Installation with SDK → none |  |
| 55 | **QA** |  | 2007-03-08 → 2007-03-20 (+12d) | 12.25d → 21d |  | 14.5d → 16d |  |  |
| 57 | Test Execution | 2007-03-01 → 2007-03-14 (+13d) | 2007-03-08 → 2007-03-20 (+12d) |  |  | 97.75d → 85d | 34, 52 → 39, 56 |  |
| 58 | Test Support | 2007-02-22 → 2007-03-14 (+20d) | 2007-02-27 → 2007-03-16 (+17d) |  |  | 12d → 0d | 37 → 39 | resources Satish → Satish/Dan |
| 59 | **Documentation** | 2007-03-01 → 2007-03-16 (+15d) | 2007-03-05 → 2007-03-20 (+15d) |  |  | 16.75d → 5.25d |  |  |
| 60 | Update Programmers Guide, Release Notes | 2007-03-01 → 2007-03-16 (+15d) | 2007-03-02 → 2007-03-19 (+17d) |  |  | 16.75d → 5.25d | 52 → 74 |  |
| 61 | Review | 2007-03-02 → 2007-03-19 (+17d) | 2007-03-02 → 2007-03-20 (+18d) |  |  | 16.75d → 5.25d |  |  |
| 62 | Final | 2007-03-02 → 2007-03-20 (+18d) | 2007-03-05 → 2007-03-20 (+15d) |  |  | 16.75d → 5.25d |  |  |
| 63 | Release Packaging | 2007-03-05 → 2007-03-21 (+16d) | 2007-03-07 → 2007-03-28 (+21d) |  |  | 98.75d → 86d | 62 → 57 | resources Dan → Satish |
| 64 | **Iteration Plan** | 2007-03-02 → 2007-03-21 (+19d) | 2007-03-06 → 2007-03-22 (+16d) |  |  | 99.75d → 85d | 60 → 57 |  |
| 65 | Review Client Feature Request/Revise Task Plan | 2007-03-02 → 2007-03-21 (+19d) | 2007-03-06 → 2007-03-22 (+16d) |  |  | 99.75d → 85d |  |  |
| 66 | 3.2.1 Release Complete | 2007-03-06 → 2007-03-22 (+16d) | 2007-03-06 → 2007-03-22 (+16d) |  |  | 99.75d → 90d |  |  |
| 67 | **Iteration 2** | 2007-02-27 → 2007-03-07 (+8d) | 2007-04-18 → 2007-05-07 (+19d) | 36d → 43.75d |  | 12d → 5.25d |  |  |
| 68 | **SDK 4.0 Release** | 2007-02-27 → 2007-03-07 (+8d) | 2007-04-18 → 2007-05-07 (+19d) | 36d → 43.75d |  | 12d → 5.25d |  |  |
| 75 | Design | 2007-03-29 → 2007-03-20 (-9d) | 2007-03-29 → 2007-03-27 (-2d) | 0.5d → 5d |  | 16.75d → 5.25d | 100 → 62, 74 |  |
| 79 | **NCICB XMI Processor changes** | 2007-02-27 → 2007-03-19 (+20d) | 2007-04-10 → 2007-04-30 (+20d) | 30d → 31d |  | 12d → 0d |  | was named XMI Processor changes |
| 80 | Detailed design of new code generation framework | 2007-02-27 → 2007-03-19 (+20d) | 2007-03-06 → 2007-03-26 (+20d) | 5d → 6d |  | 12d → 0d |  |  |
| 81 | Design Review/Update | 2007-03-06 → 2007-03-27 (+21d) | 2007-03-07 → 2007-03-27 (+20d) |  |  | 12d → 0d |  |  |
| 82 | Implement new code generation framework | 2007-03-07 → 2007-03-28 (+21d) | 2007-03-12 → 2007-03-30 (+18d) |  |  | 12d → 0d |  |  |
| 83 | Rewrite bean generation for JDK 1.5 | 2007-03-12 → 2007-04-02 (+21d) | 2007-03-14 → 2007-04-03 (+20d) |  |  | 12d → 0d |  |  |
| 84 | Rewrite O/R mapping generation (.hbm.xml, .cfg.xml, ehcache.xml) | 2007-03-14 → 2007-04-04 (+21d) | 2007-03-28 → 2007-04-17 (+20d) |  |  | 12d → 0d |  |  |
| 85 | Implement class cache for JDK 1.5 | 2007-03-05 → 2007-03-29 (+24d) | 2007-03-09 → 2007-04-04 (+26d) |  |  | 16.75d → 5.25d | 59 → 77 |  |
| 86 | Rewrite XML schema generaotor | 2007-03-09 → 2007-04-04 (+26d) | 2007-03-13 → 2007-04-06 (+24d) |  |  | 16.75d → 5.25d |  |  |
| 87 | Rewrite XML mapping file generator | 2007-03-13 → 2007-04-06 (+24d) | 2007-03-15 → 2007-04-10 (+26d) |  |  | 16.75d → 5.25d |  |  |
| 88 | Supporting files generation (coreBeans.properties, DAOConfig.xml) | 2007-03-28 → 2007-04-18 (+21d) | 2007-04-04 → 2007-04-24 (+20d) |  |  | 12d → 0d |  |  |
| 89 | Change nestedCriteria to use JDK 1.5 beans | 2007-04-04 → 2007-04-25 (+21d) | 2007-04-06 → 2007-04-26 (+20d) |  |  | 12d → 0d |  |  |
| 90 | Change CQL translator to use JDK 1.5 beans | 2007-04-06 → 2007-04-27 (+21d) | 2007-04-10 → 2007-04-30 (+20d) |  |  | 12d → 0d |  |  |
| 91 | **QA** | 2007-03-06 → 2007-03-27 (+21d) | 2007-04-17 → 2007-05-07 (+20d) |  |  | 37d → 25d |  |  |
| 92 | Test Development | 2007-03-06 → 2007-03-27 (+21d) | 2007-03-13 → 2007-04-02 (+20d) |  |  | 93.5d → 78d |  |  |
| 93 | Test Execution | 2007-04-10 → 2007-05-01 (+21d) | 2007-04-17 → 2007-05-07 (+20d) |  |  | 68.5d → 53d |  |  |
| 94 | Test Support | 2007-04-10 → 2007-05-01 (+21d) | 2007-04-12 → 2007-05-03 (+21d) | 2.5d → 3d |  | 12d → 0d |  |  |
| 95 | **Iteration Plan** | 2007-04-17 → 2007-04-10 (-7d) | 2007-04-18 → 2007-04-11 (-7d) |  |  | 68.5d → 76.75d |  |  |
| 96 | Review Client Feature Request/Revise Task Plan | 2007-04-17 → 2007-04-10 (-7d) | 2007-04-18 → 2007-04-11 (-7d) |  |  | 68.5d → 76.75d | 91 → 87 |  |
| 97 | **Iteration 3** | 2007-03-15 → 2007-04-10 (+26d) | 2007-05-01 → 2007-05-14 (+13d) | 33.75d → 24.75d |  | 16.75d → 5.25d |  |  |
| 98 | **Release 4.0 Beta 1** | 2007-03-15 → 2007-04-10 (+26d) | 2007-04-09 → 2007-05-14 (+35d) | 17d → 24.75d |  | 16.75d → 5.25d |  |  |
| 100 | **Support multiple ApplicationService in same JVM** | 2007-03-15 → 2007-04-10 (+26d) | 2007-03-29 → 2007-04-24 (+26d) |  |  | 16.75d → 5.25d |  |  |
| 101 | Design | 2007-03-15 → 2007-04-10 (+26d) | 2007-03-20 → 2007-04-13 (+24d) |  |  | 16.75d → 5.25d | 49 → 87 |  |
| 102 | Design Review | 2007-03-20 → 2007-04-13 (+24d) | 2007-03-20 → 2007-04-13 (+24d) |  |  | 16.75d → 5.25d |  |  |
| 103 | Design Update | 2007-03-20 → 2007-04-13 (+24d) | 2007-03-21 → 2007-04-16 (+26d) |  |  | 16.75d → 5.25d |  |  |
| 104 | Development/Unit Test | 2007-03-21 → 2007-04-16 (+26d) | 2007-03-29 → 2007-04-24 (+26d) |  |  | 16.75d → 5.25d |  |  |
| 105 | **Improved logging/trace messages** | 2007-04-03 → 2007-04-24 (+21d) | 2007-04-06 → 2007-04-26 (+20d) |  |  | 16.75d → 5.25d | none → 100 |  |
| 106 | Development | 2007-04-03 → 2007-04-24 (+21d) | 2007-04-06 → 2007-04-26 (+20d) |  |  | 16.75d → 5.25d | Development → none |  |
| 107 | Unrecognized database format for EA (GF#3955) | 2007-04-06 → 2007-04-26 (+20d) | 2007-04-06 → 2007-04-27 (+21d) |  |  | 75.75d → 64.25d |  |  |
| 108 | Build script change for downloading MySQL (GF#2933) | 2007-04-06 → 2007-04-27 (+21d) | 2007-04-09 → 2007-04-27 (+18d) |  |  | 75.75d → 64.25d |  |  |
| 113 | Release 4.0 Beta 1 Complete | 2007-05-01 → 2007-05-03 (+2d) | 2007-05-01 → 2007-05-03 (+2d) |  |  |  |  |  |
| 114 | Review Client Feature Request/Revise Task Plan | 2007-05-01 → 2007-05-04 (+3d) | 2007-05-01 → 2007-05-04 (+3d) |  |  |  |  |  |
| 115 | **Iteration 5** | 2007-05-01 → 2007-05-04 (+3d) | 2007-05-29 → 2007-06-01 (+3d) |  |  |  |  |  |
| 116 | Release 4.0 Beta 2 | 2007-05-01 → 2007-05-04 (+3d) | 2007-05-28 → 2007-05-31 (+3d) |  |  |  |  |  |
| 117 | Review Client Feature Request/Revise Task Plan | 2007-05-29 → 2007-06-01 (+3d) | 2007-05-29 → 2007-06-01 (+3d) |  |  |  |  |  |
| 118 | **Iteration 6** | 2007-05-29 → 2007-06-01 (+3d) | 2007-06-18 → 2007-06-21 (+3d) |  |  |  |  |  |
| 119 | Release 4.0 Final | 2007-05-29 → 2007-06-01 (+3d) | 2007-06-18 → 2007-06-21 (+3d) |  |  |  |  |  |
| 120 | Integration Test | 2007-06-19 → 2007-06-22 (+3d) | 2007-07-02 → 2007-07-06 (+4d) |  |  |  |  |  |
| 121 | UAT Test | 2007-07-03 → 2007-07-09 (+6d) | 2007-07-17 → 2007-07-20 (+3d) |  |  |  |  |  |
| 122 | **Transition** | 2007-06-19 → 2007-06-22 (+3d) | 2007-07-24 → 2007-07-27 (+3d) |  |  |  |  |  |

| ID | Task | Start | Finish |
| --- | --- | --- | --- |
| 123 | **Documentation** | 2007-06-19 → 2007-06-22 (+3d) | 2007-07-24 → 2007-07-27 (+3d) |
| 124 | New users guide | 2007-06-19 → 2007-06-22 (+3d) | 2007-07-02 → 2007-07-06 (+4d) |
| 125 | New technical guide | 2007-07-03 → 2007-07-09 (+6d) | 2007-07-17 → 2007-07-20 (+3d) |
| 126 | How to example | 2007-07-18 → 2007-07-23 (+5d) | 2007-07-24 → 2007-07-27 (+3d) |
| 127 | 4.0 Release Complete | 2007-07-24 → 2007-07-27 (+3d) | 2007-07-24 → 2007-07-27 (+3d) |

## Version 4 (saved 2007-03-12)

Note of the change: updated per status meeting

Last finish stays 2007-07-27.

Changed:

| ID | Task | Start | Complete | Total float | Predecessors |
| --- | --- | --- | --- | --- | --- |
| 1 | **caCORE SDK v4.0** |  | 23% → 26% |  |  |
| 25 | **Construction** |  | 19% → 22% |  |  |
| 26 | **Iteration 1** |  | 56% → 66% |  |  |
| 31 | **caGrid Integration** |  | 45% → 58% |  |  |
| 39 | **Security** |  | 26% → 39% |  |  |
| 40 | Implement Security in Thick Client |  | 95% → 98% | 2.5d → 6.5d |  |
| 45 | **Configurable Authentication and Authorization for SDK Generated System** | 2007-03-08 A | 0% → 50% |  |  |
| 46 | Code | 2007-03-08 A | 0% → 50% |  |  |
| 55 | **QA** | 2007-02-20 A | 0% → 40% | 16d → 85d |  |
| 56 | Test Development | 2007-02-20 A | 0% → 50% | 94d → 96.5d |  |
| 57 | Test Execution | 2007-03-14 A | 0% → 50% |  |  |
| 67 | **Iteration 2** | 2007-03-07 A | 0% → 1% | 5.25d → 58d |  |
| 68 | **SDK 4.0 Release** | 2007-03-07 A | 0% → 1% | 5.25d → 58d |  |
| 70 | **Open Source Modeling Tool XMI Processor** | 2007-03-07 A | 0% → 2% | 5.25d → 81.75d |  |
| 71 | Evaluation | 2007-03-07 A | 0% → 10% |  | 54, 62 → 54 |
| 75 | Design |  |  |  | 62, 74 → 62 |

## Version 5 (saved 2007-03-19)

Note of the change: *** empty log message ***

Last finish stays 2007-07-27.

Changed:

| ID | Task | Start | Finish | Duration | Complete | Total float |
| --- | --- | --- | --- | --- | --- | --- |
| 1 | **caCORE SDK v4.0** |  |  |  | 26% → 27% |  |
| 25 | **Construction** |  |  |  | 22% → 24% |  |
| 26 | **Iteration 1** |  |  |  | 66% → 72% |  |
| 31 | **caGrid Integration** |  |  |  | 58% → 65% |  |
| 39 | **Security** |  |  |  | 39% → 68% |  |
| 43 | **Upgrade to CSM to Support Grid ability to leverage new CSM installation steps** | 2007-03-07 A |  |  | 0% → 95% |  |
| 44 | Code | 2007-03-07 A |  |  | 0% → 95% |  |
| 45 | **Configurable Authentication and Authorization for SDK Generated System** |  |  |  | 50% → 95% |  |
| 46 | Code |  |  |  | 50% → 95% |  |
| 59 | **Documentation** | 2007-03-16 → 2007-03-20 (+4d) | 2007-03-20 → 2007-03-22 (+2d) |  |  | 5.25d → 3.25d |
| 60 | Update Programmers Guide, Release Notes | 2007-03-16 → 2007-03-20 (+4d) | 2007-03-19 → 2007-03-21 (+2d) |  |  | 5.25d → 3.25d |
| 61 | Review | 2007-03-19 → 2007-03-21 (+2d) | 2007-03-20 → 2007-03-22 (+2d) |  |  | 5.25d → 3.25d |
| 62 | Final | 2007-03-20 → 2007-03-22 (+2d) | 2007-03-20 → 2007-03-22 (+2d) |  |  | 5.25d → 3.25d |
| 70 | **Open Source Modeling Tool XMI Processor** |  | 2007-04-04 → 2007-04-06 (+2d) | 20d → 22d |  | 81.75d → 79.75d |
| 71 | Evaluation |  | 2007-03-13 → 2007-03-15 (+2d) | 4d → 6d | 10% → 7% | 5.25d → 3.25d |
| 72 | Present Evaluation for review | 2007-03-13 → 2007-03-15 (+2d) | 2007-03-13 → 2007-03-15 (+2d) |  |  | 5.25d → 3.25d |
| 73 | Revise Evaluation/Finalize On Tool | 2007-03-13 → 2007-03-15 (+2d) | 2007-03-14 → 2007-03-16 (+2d) |  |  | 5.25d → 3.25d |
| 74 | Build caCORE Test Model | 2007-03-14 → 2007-03-16 (+2d) | 2007-03-16 → 2007-03-20 (+4d) |  |  | 5.25d → 3.25d |
| 75 | Design | 2007-03-20 → 2007-03-22 (+2d) | 2007-03-27 → 2007-03-29 (+2d) |  |  | 5.25d → 3.25d |
| 76 | Design Review | 2007-03-27 → 2007-03-29 (+2d) | 2007-03-28 → 2007-03-30 (+2d) |  |  | 5.25d → 3.25d |
| 77 | Finalize Design | 2007-03-28 → 2007-03-30 (+2d) | 2007-03-29 → 2007-04-02 (+4d) |  |  | 5.25d → 3.25d |
| 78 | Evaluate LOE/Revise Task Plan for Development | 2007-03-29 → 2007-04-02 (+4d) | 2007-04-04 → 2007-04-06 (+2d) |  |  | 81.75d → 79.75d |
| 85 | Implement class cache for JDK 1.5 | 2007-03-29 → 2007-04-02 (+4d) | 2007-04-04 → 2007-04-06 (+2d) |  |  | 5.25d → 3.25d |
| 86 | Rewrite XML schema generaotor | 2007-04-04 → 2007-04-06 (+2d) | 2007-04-06 → 2007-04-10 (+4d) |  |  | 5.25d → 3.25d |
| 87 | Rewrite XML mapping file generator | 2007-04-06 → 2007-04-10 (+4d) | 2007-04-10 → 2007-04-12 (+2d) |  |  | 5.25d → 3.25d |
| 95 | **Iteration Plan** | 2007-04-10 → 2007-04-12 (+2d) | 2007-04-11 → 2007-04-13 (+2d) |  |  | 76.75d → 74.75d |
| 96 | Review Client Feature Request/Revise Task Plan | 2007-04-10 → 2007-04-12 (+2d) | 2007-04-11 → 2007-04-13 (+2d) |  |  | 76.75d → 74.75d |
| 97 | **Iteration 3** | 2007-04-10 → 2007-04-12 (+2d) |  | 24.75d → 22.75d |  | 5.25d → 3.25d |
| 98 | **Release 4.0 Beta 1** | 2007-04-10 → 2007-04-12 (+2d) |  | 24.75d → 22.75d |  | 5.25d → 3.25d |
| 99 | Update Requirements Document | 2007-04-10 → 2007-04-12 (+2d) | 2007-04-17 → 2007-04-19 (+2d) |  |  | 67.75d → 65.75d |
| 100 | **Support multiple ApplicationService in same JVM** | 2007-04-10 → 2007-04-12 (+2d) | 2007-04-24 → 2007-04-26 (+2d) |  |  | 5.25d → 3.25d |
| 101 | Design | 2007-04-10 → 2007-04-12 (+2d) | 2007-04-13 → 2007-04-17 (+4d) |  |  | 5.25d → 3.25d |
| 102 | Design Review | 2007-04-13 → 2007-04-17 (+4d) | 2007-04-13 → 2007-04-17 (+4d) |  |  | 5.25d → 3.25d |
| 103 | Design Update | 2007-04-13 → 2007-04-17 (+4d) | 2007-04-16 → 2007-04-18 (+2d) |  |  | 5.25d → 3.25d |
| 104 | Development/Unit Test | 2007-04-16 → 2007-04-18 (+2d) | 2007-04-24 → 2007-04-26 (+2d) |  |  | 5.25d → 3.25d |
| 105 | **Improved logging/trace messages** | 2007-04-24 → 2007-04-26 (+2d) | 2007-04-26 → 2007-04-30 (+4d) |  |  | 5.25d → 3.25d |
| 106 | Development | 2007-04-24 → 2007-04-26 (+2d) | 2007-04-26 → 2007-04-30 (+4d) |  |  | 5.25d → 3.25d |
| 107 | Unrecognized database format for EA (GF#3955) | 2007-04-26 → 2007-04-30 (+4d) | 2007-04-27 → 2007-05-01 (+4d) |  |  | 64.25d → 62.25d |
| 108 | Build script change for downloading MySQL (GF#2933) | 2007-04-27 → 2007-05-01 (+4d) | 2007-04-27 → 2007-05-01 (+4d) |  |  | 64.25d → 62.25d |
| 109 | **QA** | 2007-04-17 → 2007-04-19 (+2d) |  | 19.75d → 17.75d |  |  |
| 110 | Test Development | 2007-04-17 → 2007-04-19 (+2d) | 2007-04-24 → 2007-04-26 (+2d) |  |  | 67.75d → 65.75d |

## Version 6 (saved 2007-04-02)

Note of the change: updated per weekly status report

Last finish 2007-07-27 → 2007-09-06 (+41d). Complete tasks 24 → 38.

Added:

| ID | Task | Duration | Start | Finish | Predecessors | Constraint | Resources |
| --- | --- | --- | --- | --- | --- | --- | --- |
| 71 | Prototype of new Code Gen Framework | 10d | 2007-03-27 | 2007-04-09 | 58 |  | Satish [50%] |
| 72 | Prototype use of ACEGI/CSM for Security | 10d | 2007-03-27 | 2007-04-09 | 58 |  | Satish [50%] |
| 73 | **Design** | 6.4d? | 2007-04-10 | 2007-04-18 |  |  |  |
| 74 | Overview | 1d | 2007-04-10 | 2007-04-10 | 71, 72 |  | Satish |
| 75 | Review of Approach | 0.2d | 2007-04-11 | 2007-04-11 | 74 |  | Satish; Doug; Kunal; Vijay; Charles |
| 76 | Code Gen Detail Design | 2d | 2007-04-11 | 2007-04-13 | 75 |  | Satish |
| 77 | ACEGI/CSM Security Detail Design | 2d | 2007-04-13 | 2007-04-17 | 76 |  | Satish |
| 78 | Design/Prototype Review | 0.2d? | 2007-04-17 | 2007-04-17 | 77 |  | Satish; Doug; Kunal; Vijay; Charles |
| 79 | Design Update | 1d | 2007-04-17 | 2007-04-18 | 78 |  | Satish |
| 84 | Development | 4d | 2007-05-08 | 2007-05-14 |  |  | Dan |
| 85 | Integration of class cache in web tier | 1d | 2007-05-14 | 2007-05-15 | 84 |  | Dan |
| 86 | Change nestedCriteria to use class cache | 1d | 2007-05-15 | 2007-05-16 | 85 |  | Dan |
| 87 | Change CQL translator to use class cache | 1d | 2007-05-16 | 2007-05-17 | 86 |  | Dan |
| 90 | Build Script | 2d | 2007-05-23 | 2007-05-25 | 89 |  | Dan |
| 105 | Build SDK Test Model | 2d | 2007-04-02 | 2007-04-04 | 102 |  | Dan |
| 110 | Development | 10d | 2007-04-10 | 2007-04-24 | 108 |  | Dan |
| 111 | **QA** | 20d | 2007-04-10 | 2007-05-08 |  |  |  |
| 112 | Test Development | 5d | 2007-04-10 | 2007-04-17 | 108 |  | Steve |
| 113 | Test Execution | 10d | 2007-04-24 | 2007-05-08 | 110 |  | Steve |
| 114 | Test Support | 8d | 2007-04-24 | 2007-05-04 | 110 |  | Dan [50%] |
| 115 | Release Packaging | 8d | 2007-04-24 | 2007-05-04 | 110 |  | Dan [50%] |
| 116 | **Iteration Plan** | 3d | 2007-04-24 | 2007-04-27 |  |  |  |
| 117 | Review Client Feature Request/Revise Task Plan | 3d | 2007-04-24 | 2007-04-27 | 110 |  | Charles; Avinash; Satish |
| 118 | Iteration 3 Complete | 0d | 2007-05-08 | 2007-05-08 | 111, 116 |  |  |
| 119 | **Iteration 4** | 103.4d | 2007-01-23 | 2007-06-20 |  |  |  |
| 120 | **Release 4.0 Beta 1** | 24.5d | 2007-01-23 | 2007-03-01 |  |  |  |
| 121 | Update Requirements Document | 5d | 2007-01-23 | 2007-01-29 |  |  | Charles [15%] |
| 122 | **Support multiple ApplicationService in same JVM** | 10d | 2007-02-12 | 2007-02-23 |  |  |  |
| 123 | Design | 3d | 2007-02-12 | 2007-02-14 |  | start no earlier than 2007-02-12 | Dan |
| 124 | Design Review | 0.5d | 2007-02-15 | 2007-02-15 | 123 |  | Satish; Kunal; Doug; Avinash |
| 125 | Design Update | 0.5d | 2007-02-15 | 2007-02-15 | 124 |  | Dan |
| 126 | Development/Unit Test | 6d | 2007-02-16 | 2007-02-23 | 125 |  | Dan |
| 127 | **Improved logging/trace messages** | 2.5d | 2007-02-26 | 2007-02-28 | 122 |  |  |
| 128 | Development | 2.5d | 2007-02-26 | 2007-02-28 |  |  | Dan |
| 129 | Unrecognized database format for EA (GF#3955) | 0.5d | 2007-02-28 | 2007-02-28 | 127 |  | Dan |
| 130 | Build script change for downloading MySQL (GF#2933) | 0.5d | 2007-03-01 | 2007-03-01 | 129 |  | Dan |
| 131 | **QA** | 10d | 2007-01-23 | 2007-02-08 |  |  |  |
| 132 | Test Development | 5d | 2007-01-30 | 2007-02-08 | 121 |  | Steve |
| 133 | Test Execution | 5d | 2007-01-23 | 2007-01-29 |  |  | Steve |
| 134 | Test Support | 2.5d | 2007-01-23 | 2007-01-25 |  |  | Dan |
| 135 | Release 4.0 Beta 1 Complete | 0d | 2007-05-01 | 2007-05-01 | 127 | start no earlier than 2007-05-01 |  |
| 136 | Review Client Feature Request/Revise Task Plan | 1d | 2007-05-01 | 2007-05-01 | 135 |  | Charles; Avinash; Satish |

Removed: 74 Build caCORE Test Model; 80 Detailed design of new code generation framework; 81 Design Review/Update; 89 Change nestedCriteria to use JDK 1.5 beans; 90 Change CQL translator to use JDK 1.5 beans

Changed:

| ID | Task | Start | Finish | Duration | Complete | Total float | Predecessors | Other |
| --- | --- | --- | --- | --- | --- | --- | --- | --- |
| 1 | **caCORE SDK v4.0** |  | 2007-07-27 → 2007-09-06 (+41d) | 132d? → 160.4d? | 27% → 28% |  |  |  |
| 25 | **Construction** |  | 2007-07-20 → 2007-08-30 (+41d) | 125d? → 153.4d? | 24% → 26% |  |  |  |
| 26 | **Iteration 1** |  |  |  | 72% → 98% | 86d → 114.4d |  |  |
| 31 | **caGrid Integration** |  |  |  | 65% → 97% | 86d → 114.4d |  |  |
| 39 | **Security** |  | 2007-03-13 A |  | 68% → 100% | 0d → none |  |  |
| 40 | Implement Security in Thick Client |  | 2007-03-05 A |  | 98% → 100% | 6.5d → none |  |  |
| 41 | **Integration of new Installation Process into SDK** |  | 2007-03-06 A |  | 10% → 100% | 2.85d → none |  |  |
| 42 | Code |  | 2007-03-06 A |  | 10% → 100% | 2.85d → none |  |  |
| 43 | **Upgrade to CSM to Support Grid ability to leverage new CSM installation steps** |  | 2007-03-09 A |  | 95% → 100% | 0d → none |  |  |
| 44 | Code |  | 2007-03-09 A |  | 95% → 100% | 0d → none |  |  |
| 45 | **Configurable Authentication and Authorization for SDK Generated System** |  | 2007-03-13 A |  | 95% → 100% | 0d → none |  |  |
| 46 | Code |  | 2007-03-13 A |  | 95% → 100% | 0d → none |  |  |
| 47 | **Documentation** | 2007-03-12 A | 2007-03-13 A |  | 0% → 100% | 0d → none |  |  |
| 48 | SDK Programmer's/Technical Guide | 2007-03-12 A | 2007-03-13 A |  | 0% → 100% | 0d → none |  |  |
| 53 | Provide the ability to only generate an XSD and castor mapping based on xmi input |  | 2007-03-02 A |  | 95% → 100% | 5.25d → none |  |  |
| 54 | Ability to generate interfaces/POJO for domain classes in our UML model | 2007-03-02 A | 2007-03-07 A |  | 0% → 100% | 5.25d → none |  |  |
| 55 | **QA** |  | 2007-03-20 → 2007-03-26 A (+6d) | 21d → 25d | 40% → 100% | 85d → none |  |  |
| 56 | Test Development |  | 2007-02-28 A |  | 50% → 100% | 96.5d → none |  |  |
| 57 | Test Execution |  | 2007-03-20 → 2007-03-26 A (+6d) | 5d → 9d | 50% → 100% | 85d → none |  |  |
| 58 | Test Support | 2007-03-14 A | 2007-03-16 → 2007-03-26 A (+10d) | 3d → 9d | 0% → 100% | 0d → none |  |  |
| 59 | **Documentation** | 2007-03-20 A | 2007-03-22 → 2007-03-27 A (+5d) | 2d → 4.75d | 0% → 100% | 3.25d → none |  |  |
| 60 | Update Programmers Guide, Release Notes | 2007-03-20 A | 2007-03-21 → 2007-03-23 A (+2d) | 1d → 3d | 0% → 100% | 3.25d → none | Build caCORE Test Model → none |  |
| 61 | Review | 2007-03-21 → 2007-03-26 A (+5d) | 2007-03-22 → 2007-03-26 A (+4d) |  | 0% → 100% | 3.25d → none |  |  |
| 62 | Final | 2007-03-22 → 2007-03-27 A (+5d) | 2007-03-22 → 2007-03-27 A (+5d) |  | 0% → 100% | 3.25d → none |  |  |
| 63 | Release Packaging | 2007-03-21 A |  |  | 0% → 95% |  |  |  |
| 64 | **Iteration Plan** | 2007-03-21 → 2007-03-27 (+6d) | 2007-03-22 → 2007-03-28 (+6d) |  |  | 85d → 95d |  |  |
| 65 | Review Client Feature Request/Revise Task Plan | 2007-03-21 → 2007-03-27 (+6d) | 2007-03-22 → 2007-03-28 (+6d) |  |  | 85d → 78d |  |  |
| 66 | 3.2.1 Release Complete | 2007-03-22 → 2007-03-28 (+6d) | 2007-03-22 → 2007-03-28 (+6d) |  |  | 90d → 83d |  |  |
| 67 | **Iteration 2** | 2007-03-07 A → 2007-03-27 (+20d) | 2007-05-07 → 2007-06-13 (+37d) | 43.75d → 56.4d? | 1% → 0% | 58d → 0d |  |  |
| 68 | **SDK 4.0 Release** | 2007-03-07 A → 2007-03-27 (+20d) | 2007-05-07 → 2007-06-13 (+37d) | 43.75d → 56.4d? | 1% → 0% | 58d → 0d |  |  |
| 69 | Update Requirements Document | 2007-03-23 → 2007-03-29 (+6d) | 2007-03-29 → 2007-04-04 (+6d) |  |  | 85d → 78d |  |  |
| 70 | **Upgrade Code Generation Framework** | 2007-03-19 → 2007-03-27 (+8d) | 2007-04-30 → 2007-05-30 (+30d) | 31d → 46.4d? |  |  |  | was named NCICB XMI Processor changes |
| 80 | Implement new code generation framework | 2007-03-28 → 2007-04-18 (+21d) | 2007-03-30 → 2007-04-23 (+24d) |  |  |  | Design Review/Update → 73 |  |
| 81 | Rewrite bean generation for JDK 1.5 | 2007-04-02 → 2007-04-23 (+21d) | 2007-04-03 → 2007-04-25 (+22d) |  |  |  |  |  |
| 82 | Rewrite O/R mapping generation (.hbm.xml, .cfg.xml, ehcache.xml) | 2007-04-04 → 2007-04-25 (+21d) | 2007-04-17 → 2007-05-23 (+36d) |  |  |  |  |  |
| 83 | **Implement class cache for JDK 1.5** | 2007-04-02 → 2007-05-08 (+36d) | 2007-04-06 → 2007-05-17 (+41d) | 4d → 7d |  | 3.25d → 2.9d | 108 → 111, 115 | resources Dan → none |
| 88 | Rewrite XML schema generaotor | 2007-04-06 → 2007-05-17 (+41d) | 2007-04-10 → 2007-05-21 (+41d) |  |  | 3.25d → 2.9d |  |  |
| 89 | Rewrite XML mapping file generator | 2007-04-10 → 2007-05-21 (+41d) | 2007-04-12 → 2007-05-23 (+41d) |  |  | 3.25d → 2.9d |  |  |
| 91 | Supporting files generation (coreBeans.properties, DAOConfig.xml) | 2007-04-18 → 2007-05-23 (+35d) | 2007-04-24 → 2007-05-30 (+36d) |  |  |  |  |  |
| 92 | **QA** | 2007-03-27 → 2007-04-18 (+22d) | 2007-05-07 → 2007-06-13 (+37d) | 30d → 40d |  | 25d → 30d |  |  |
| 93 | Test Development | 2007-03-27 → 2007-04-18 (+22d) | 2007-04-02 → 2007-05-02 (+30d) | 5d → 10d |  | 78d → 85d | Detailed design of new code generation framework → 73 |  |
| 94 | Test Execution | 2007-05-01 → 2007-05-30 (+29d) | 2007-05-07 → 2007-06-13 (+37d) | 5d → 10d |  | 53d → 55d | Change CQL translator to use JDK 1.5 beans → 70 |  |
| 95 | Test Support | 2007-05-01 → 2007-05-30 (+29d) | 2007-05-03 → 2007-06-13 (+41d) | 3d → 10d |  |  | Change CQL translator to use JDK 1.5 beans → 70 |  |
| 96 | **Iteration Plan** | 2007-04-12 → 2007-05-17 (+35d) | 2007-04-13 → 2007-05-21 (+38d) | 1d → 2.5d |  | 74.75d → 76.4d |  |  |
| 97 | Review Client Feature Request/Revise Task Plan | 2007-04-12 → 2007-05-17 (+35d) | 2007-04-13 → 2007-05-21 (+38d) | 1d → 2d |  | 74.75d → 76.4d | 89 → 87 |  |
| 98 | **Iteration 3** | 2007-04-12 → 2007-03-07 A (-36d) | 2007-05-14 → 2007-05-08 (-6d) | 22.75d → 44.25d | 0% → 6% | 3.25d → 85.9d | 89 → none |  |
| 99 | **Release 4.0 Beta 1** | 2007-04-12 → 2007-03-07 A (-36d) | 2007-05-14 → 2007-05-08 (-6d) | 22.75d → 44.25d | 0% → 6% | 3.25d → 85.9d |  |  |
| 100 | Update Requirements Document | 2007-04-12 → 2007-04-05 (-7d) | 2007-04-19 → 2007-04-11 (-8d) |  |  | 65.75d → 99.4d | 89 → 69 |  |
| 101 | **Open Source Modeling Tool XMI Processor** |  | 2007-04-06 → 2007-04-24 (+18d) | 22d → 34.25d | 2% → 16% | 79.75d → 95.9d |  |  |
| 102 | Evaluation |  | 2007-03-15 → 2007-04-02 A (+18d) | 6d → 4d | 7% → 100% | 3.25d → none | 54 → 62 |  |
| 103 | Present Evaluation for review | 2007-03-15 → 2007-04-02 (+18d) | 2007-03-15 → 2007-04-02 (+18d) |  |  | 3.25d → 4.3d |  |  |
| 104 | Revise Evaluation/Finalize On Tool | 2007-03-15 → 2007-04-02 (+18d) | 2007-03-16 → 2007-04-03 (+18d) |  |  | 3.25d → 4.3d |  |  |
| 106 | Design | 2007-03-22 → 2007-04-04 (+13d) | 2007-03-29 → 2007-04-06 (+8d) | 5d → 2d |  | 3.25d → 3.8d | 62 → 104, 105 |  |
| 107 | Design Review | 2007-03-29 → 2007-04-09 (+11d) | 2007-03-30 → 2007-04-09 (+10d) | 0.5d → 1d |  | 3.25d → 2.9d |  | constraint none → start no earlier than 2007-04-09 |
| 108 | Finalize Design | 2007-03-30 → 2007-04-10 (+11d) | 2007-04-02 → 2007-04-10 (+8d) | 1d → 0.5d |  | 3.25d → 2.9d |  |  |
| 109 | Evaluate LOE/Revise Task Plan for Development | 2007-04-02 → 2007-04-10 (+8d) | 2007-04-06 → 2007-04-16 (+10d) |  |  | 79.75d → 101.9d |  |  |
| 137 | **Support multiple ApplicationService in same JVM** | 2007-04-12 → 2007-02-12 (-59d) | 2007-04-26 → 2007-02-23 (-62d) |  |  | 3.25d → 74.9d |  |  |
| 138 | Design | 2007-04-12 → 2007-02-12 (-59d) | 2007-04-17 → 2007-02-14 (-62d) |  |  | 3.25d → 74.9d | 89 → none |  |
| 139 | Design Review | 2007-04-17 → 2007-02-15 (-61d) | 2007-04-17 → 2007-02-15 (-61d) |  |  | 3.25d → 74.9d |  |  |
| 140 | Design Update | 2007-04-17 → 2007-02-15 (-61d) | 2007-04-18 → 2007-02-15 (-62d) |  |  | 3.25d → 74.9d |  |  |
| 141 | Development/Unit Test | 2007-04-18 → 2007-02-16 (-61d) | 2007-04-26 → 2007-02-23 (-62d) |  |  | 3.25d → 74.9d |  |  |
| 142 | **Improved logging/trace messages** | 2007-04-26 → 2007-02-26 (-59d) | 2007-04-30 → 2007-02-28 (-61d) |  |  | 3.25d → 74.9d |  |  |
| 143 | Development | 2007-04-26 → 2007-02-26 (-59d) | 2007-04-30 → 2007-02-28 (-61d) |  |  | 3.25d → 74.9d |  |  |
| 144 | Unrecognized database format for EA (GF#3955) | 2007-04-30 → 2007-02-28 (-61d) | 2007-05-01 → 2007-02-28 (-62d) |  |  | 62.25d → 133.9d |  |  |
| 145 | Build script change for downloading MySQL (GF#2933) | 2007-05-01 → 2007-03-01 (-61d) | 2007-05-01 → 2007-03-01 (-61d) |  |  | 62.25d → 133.9d |  |  |
| 146 | **QA** | 2007-04-19 → 2007-05-02 (+13d) | 2007-05-14 → 2007-06-20 (+37d) | 17.75d → 35d |  | 53d → 55d |  |  |
| 147 | Test Development | 2007-04-19 → 2007-05-02 (+13d) | 2007-04-26 → 2007-05-09 (+13d) |  |  | 65.75d → 85d |  |  |
| 148 | Test Execution | 2007-05-08 → 2007-06-13 (+36d) | 2007-05-14 → 2007-06-20 (+37d) |  |  | 53d → 55d |  |  |
| 149 | Test Support | 2007-05-08 → 2007-06-13 (+36d) | 2007-05-10 → 2007-06-15 (+36d) |  |  | 55.5d → 57.5d |  |  |
| 150 | Release 4.0 Beta 1 Complete | 2007-05-03 → 2007-06-13 (+41d) | 2007-05-03 → 2007-06-13 (+41d) |  |  |  |  |  |

| ID | Task | Start | Finish |
| --- | --- | --- | --- |
| 151 | Review Client Feature Request/Revise Task Plan | 2007-05-04 → 2007-06-13 (+40d) | 2007-05-04 → 2007-06-14 (+41d) |
| 152 | **Iteration 5** | 2007-05-04 → 2007-06-13 (+40d) | 2007-06-01 → 2007-07-13 (+42d) |
| 153 | Release 4.0 Beta 2 | 2007-05-04 → 2007-06-13 (+40d) | 2007-05-31 → 2007-07-12 (+42d) |
| 154 | Review Client Feature Request/Revise Task Plan | 2007-06-01 → 2007-07-12 (+41d) | 2007-06-01 → 2007-07-13 (+42d) |
| 155 | **Iteration 6** | 2007-06-01 → 2007-07-12 (+41d) | 2007-06-21 → 2007-08-02 (+42d) |
| 156 | Release 4.0 Final | 2007-06-01 → 2007-07-12 (+41d) | 2007-06-21 → 2007-08-02 (+42d) |
| 157 | Integration Test | 2007-06-22 → 2007-08-02 (+41d) | 2007-07-06 → 2007-08-16 (+41d) |
| 158 | UAT Test | 2007-07-09 → 2007-08-16 (+38d) | 2007-07-20 → 2007-08-30 (+41d) |
| 159 | **Transition** | 2007-06-22 → 2007-08-02 (+41d) | 2007-07-27 → 2007-09-06 (+41d) |
| 160 | **Documentation** | 2007-06-22 → 2007-08-02 (+41d) | 2007-07-27 → 2007-09-06 (+41d) |
| 161 | New users guide | 2007-06-22 → 2007-08-02 (+41d) | 2007-07-06 → 2007-08-16 (+41d) |
| 162 | New technical guide | 2007-07-09 → 2007-08-16 (+38d) | 2007-07-20 → 2007-08-30 (+41d) |
| 163 | How to example | 2007-07-23 → 2007-08-30 (+38d) | 2007-07-27 → 2007-09-06 (+41d) |
| 164 | 4.0 Release Complete | 2007-07-27 → 2007-09-06 (+41d) | 2007-07-27 → 2007-09-06 (+41d) |

## Version 7 (saved 2007-04-12)

Note of the change: *** empty log message ***

Last finish 2007-09-06 → 2007-09-13 (+7d). Complete tasks 38 → 48.

Added:

| ID | Task | Duration | Start | Finish | Constraint | Resources |
| --- | --- | --- | --- | --- | --- | --- |
| 70 | **Boot Camp Support** | 9d | 2007-04-09 | 2007-04-19 |  |  |
| 71 | Presentation | 3d | 2007-04-09 | 2007-04-11 | start no earlier than 2007-04-09 | Satish |
| 72 | Demo | 2d | 2007-04-18 | 2007-04-19 | start no earlier than 2007-04-18 | Satish |

Changed:

| ID | Task | Start | Finish | Duration | Complete | Total float | Predecessors | Other |
| --- | --- | --- | --- | --- | --- | --- | --- | --- |
| 1 | **caCORE SDK v4.0** |  | 2007-09-06 → 2007-09-13 (+7d) | 160.4d? → 165.2d? | 28% → 34% |  |  |  |
| 5 | **Eloboration** |  | 2007-02-13 A |  | 98% → 100% | 145.4d → none |  |  |
| 13 | **Scope Document** |  | 2007-02-13 A |  | 96% → 100% | 145.4d → none |  |  |
| 14 | Prepare list of scope items on gforge |  | 2007-01-26 A |  | 80% → 100% | 44.35d → none |  |  |
| 17 | Prepare risk list |  | 2007-02-02 A |  | 90% → 100% | 118d → none |  |  |
| 19 | Revise scope document |  | 2007-02-13 A |  | 90% → 100% | 114d → none |  |  |
| 20 | **QA Actvities** |  | 2007-01-31 A |  | 99% → 100% | 151.4d → none |  |  |
| 23 | Validate test case |  | 2007-01-31 A |  | 95% → 100% | 120d → none |  |  |
| 25 | **Construction** |  | 2007-08-30 → 2007-09-06 (+7d) | 153.4d? → 158.2d? | 26% → 33% |  |  |  |
| 29 | **QA** |  | 2007-02-19 A |  | 95% → 100% | 141.4d → none |  |  |
| 30 | Test new UI |  | 2007-02-19 A |  | 95% → 100% | 98d → none |  |  |
| 67 | **Iteration 2** | 2007-03-27 A | 2007-06-13 → 2007-06-20 (+7d) | 56.4d? → 61.2d? | 0% → 20% | 0d → 60d |  |  |
| 68 | **SDK 4.0 Release** | 2007-03-27 A | 2007-06-13 → 2007-06-20 (+7d) | 56.4d? → 61.2d? | 0% → 20% | 0d → 60d |  |  |
| 73 | **Upgrade Code Generation Framework** | 2007-03-27 A | 2007-05-30 → 2007-06-06 (+7d) | 46.4d? → 51.2d? | 0% → 34% |  |  |  |
| 74 | Prototype of new Code Gen Framework | 2007-03-27 A | 2007-04-09 A |  | 0% → 100% | 0d → none |  |  |
| 75 | Prototype use of ACEGI/CSM for Security | 2007-03-27 A | 2007-04-09 A |  | 0% → 100% | 0d → none |  |  |
| 76 | **Design** | 2007-04-10 → 2007-04-12 (+2d) | 2007-04-18 → 2007-04-25 (+7d) | 6.4d? → 9.2d? |  |  |  |  |
| 77 | Overview | 2007-04-10 → 2007-04-12 (+2d) | 2007-04-10 → 2007-04-12 (+2d) |  |  | 0d → 6d | 74, 75 → 74, 75, 71 |  |
| 78 | Review of Approach | 2007-04-11 → 2007-04-13 (+2d) | 2007-04-11 → 2007-04-13 (+2d) |  |  | 0d → 6d |  |  |
| 79 | Code Gen Detail Design | 2007-04-11 → 2007-04-13 (+2d) | 2007-04-13 → 2007-04-17 (+4d) |  |  | 0d → 6d |  |  |
| 80 | ACEGI/CSM Security Detail Design | 2007-04-13 → 2007-04-20 (+7d) | 2007-04-17 → 2007-04-23 (+6d) |  |  |  | 79 → 72 |  |
| 81 | Design/Prototype Review | 2007-04-17 → 2007-04-24 (+7d) | 2007-04-17 → 2007-04-24 (+7d) |  |  |  |  |  |
| 82 | Design Update | 2007-04-17 → 2007-04-24 (+7d) | 2007-04-18 → 2007-04-25 (+7d) |  |  |  |  |  |
| 83 | Implement new code generation framework | 2007-04-18 → 2007-04-25 (+7d) | 2007-04-23 → 2007-04-30 (+7d) |  |  |  |  |  |
| 84 | Rewrite bean generation for JDK 1.5 | 2007-04-23 → 2007-04-30 (+7d) | 2007-04-25 → 2007-05-02 (+7d) |  |  |  |  |  |
| 85 | Rewrite O/R mapping generation (.hbm.xml, .cfg.xml, ehcache.xml) | 2007-04-25 → 2007-05-02 (+7d) | 2007-05-23 → 2007-05-30 (+7d) |  |  |  |  |  |
| 86 | **Implement class cache for JDK 1.5** | 2007-05-08 → 2007-05-11 (+3d) | 2007-05-17 → 2007-05-22 (+5d) |  |  | 2.9d → 4.7d |  |  |
| 87 | Development | 2007-05-08 → 2007-05-11 (+3d) | 2007-05-14 → 2007-05-17 (+3d) |  |  | 2.9d → 4.7d |  |  |
| 88 | Integration of class cache in web tier | 2007-05-14 → 2007-05-17 (+3d) | 2007-05-15 → 2007-05-18 (+3d) |  |  | 2.9d → 4.7d |  |  |
| 89 | Change nestedCriteria to use class cache | 2007-05-15 → 2007-05-18 (+3d) | 2007-05-16 → 2007-05-21 (+5d) |  |  | 2.9d → 4.7d |  |  |
| 90 | Change CQL translator to use class cache | 2007-05-16 → 2007-05-21 (+5d) | 2007-05-17 → 2007-05-22 (+5d) |  |  | 2.9d → 4.7d |  |  |
| 91 | Rewrite XML schema generaotor | 2007-05-17 → 2007-05-22 (+5d) | 2007-05-21 → 2007-05-24 (+3d) |  |  | 2.9d → 4.7d |  |  |
| 92 | Rewrite XML mapping file generator | 2007-05-21 → 2007-05-24 (+3d) | 2007-05-23 → 2007-05-28 (+5d) |  |  | 2.9d → 4.7d |  |  |
| 93 | Build Script | 2007-05-23 → 2007-05-28 (+5d) | 2007-05-25 → 2007-05-30 (+5d) |  |  | 2.9d → 4.7d |  |  |
| 94 | Supporting files generation (coreBeans.properties, DAOConfig.xml) | 2007-05-23 → 2007-05-30 (+7d) | 2007-05-30 → 2007-06-06 (+7d) |  |  |  |  |  |
| 95 | **QA** | 2007-04-18 → 2007-04-25 (+7d) | 2007-06-13 → 2007-06-20 (+7d) |  |  |  |  |  |
| 96 | Test Development | 2007-04-18 → 2007-04-25 (+7d) | 2007-05-02 → 2007-05-09 (+7d) |  |  |  |  |  |
| 97 | Test Execution | 2007-05-30 → 2007-06-06 (+7d) | 2007-06-13 → 2007-06-20 (+7d) |  |  |  |  |  |
| 98 | Test Support | 2007-05-30 → 2007-06-06 (+7d) | 2007-06-13 → 2007-06-20 (+7d) |  |  |  |  |  |
| 99 | **Iteration Plan** | 2007-05-17 → 2007-05-22 (+5d) | 2007-05-21 → 2007-05-23 (+2d) | 2.5d → 1d |  | 76.4d → 79.7d |  |  |
| 100 | Review Client Feature Request/Revise Task Plan | 2007-05-17 → 2007-05-22 (+5d) | 2007-05-21 → 2007-05-23 (+2d) | 2d → 1d |  | 76.4d → 79.7d |  |  |
| 101 | **Iteration 3** |  | 2007-05-08 → 2007-05-11 (+3d) | 44.25d → 47.25d | 6% → 16% | 85.9d → 87.7d |  |  |
| 102 | **Release 4.0 Beta 1** |  | 2007-05-08 → 2007-05-11 (+3d) | 44.25d → 47.25d | 6% → 16% | 85.9d → 87.7d |  |  |
| 104 | **Open Source Modeling Tool XMI Processor** |  | 2007-04-24 → 2007-04-27 (+3d) | 34.25d → 37.25d | 16% → 38% | 95.9d → 97.7d |  |  |
| 106 | Present Evaluation for review | 2007-04-02 A | 2007-04-02 A |  | 0% → 100% | 4.3d → none |  |  |
| 107 | Build SDK Test Model | 2007-04-02 A | 2007-04-04 → 2007-04-05 A (+1d) | 2d → 3d | 0% → 100% | 3.8d → none | 105 → 106 | resources Dan → none |
| 108 | Revise Evaluation/Finalize On Tool | 2007-04-02 → 2007-04-05 A (+3d) | 2007-04-03 → 2007-04-09 A (+6d) | 1d → 3d | 0% → 100% | 4.3d → none | 106 → 107 |  |
| 109 | Design | 2007-04-04 → 2007-04-10 (+6d) | 2007-04-06 → 2007-04-11 (+5d) |  |  | 3.8d → 4.7d | 108, 107 → 108 |  |
| 110 | Design Review | 2007-04-09 → 2007-04-12 (+3d) | 2007-04-09 → 2007-04-12 (+3d) |  |  | 2.9d → 4.7d |  |  |
| 111 | Finalize Design | 2007-04-10 → 2007-04-13 (+3d) | 2007-04-10 → 2007-04-13 (+3d) |  |  | 2.9d → 4.7d |  |  |
| 112 | Evaluate LOE/Revise Task Plan for Development | 2007-04-10 → 2007-04-13 (+3d) | 2007-04-16 → 2007-04-19 (+3d) |  |  | 101.9d → 103.7d |  |  |
| 113 | Development | 2007-04-10 → 2007-04-13 (+3d) | 2007-04-24 → 2007-04-27 (+3d) |  |  | 2.9d → 4.7d |  |  |
| 114 | **QA** | 2007-04-10 → 2007-04-13 (+3d) | 2007-05-08 → 2007-05-11 (+3d) |  |  | 2.9d → 4.7d |  |  |
| 115 | Test Development | 2007-04-10 → 2007-04-13 (+3d) | 2007-04-17 → 2007-04-20 (+3d) |  |  | 17.9d → 19.7d |  |  |
| 116 | Test Execution | 2007-04-24 → 2007-04-27 (+3d) | 2007-05-08 → 2007-05-11 (+3d) |  |  | 2.9d → 4.7d |  |  |
| 117 | Test Support | 2007-04-24 → 2007-04-27 (+3d) | 2007-05-04 → 2007-05-09 (+5d) |  |  | 4.9d → 6.7d |  |  |
| 118 | Release Packaging | 2007-04-24 → 2007-04-27 (+3d) | 2007-05-04 → 2007-05-09 (+5d) |  |  | 4.9d → 6.7d |  |  |
| 119 | **Iteration Plan** | 2007-04-24 → 2007-04-27 (+3d) | 2007-04-27 → 2007-05-02 (+5d) |  |  | 92.9d → 94.7d |  |  |
| 120 | Review Client Feature Request/Revise Task Plan | 2007-04-24 → 2007-04-27 (+3d) | 2007-04-27 → 2007-05-02 (+5d) |  |  | 92.9d → 94.7d |  |  |
| 121 | Iteration 3 Complete | 2007-05-08 → 2007-05-11 (+3d) | 2007-05-08 → 2007-05-11 (+3d) |  |  | 85.9d → 87.7d |  |  |
| 122 | **Iteration 4** |  | 2007-06-20 → 2007-06-27 (+7d) | 103.4d → 108.2d |  |  |  |  |
| 149 | **QA** | 2007-05-02 → 2007-05-09 (+7d) | 2007-06-20 → 2007-06-27 (+7d) |  |  |  |  |  |
| 150 | Test Development | 2007-05-02 → 2007-05-09 (+7d) | 2007-05-09 → 2007-05-16 (+7d) |  |  |  |  |  |
| 151 | Test Execution | 2007-06-13 → 2007-06-20 (+7d) | 2007-06-20 → 2007-06-27 (+7d) |  |  |  |  |  |
| 152 | Test Support | 2007-06-13 → 2007-06-20 (+7d) | 2007-06-15 → 2007-06-22 (+7d) |  |  |  |  |  |
| 153 | Release 4.0 Beta 1 Complete | 2007-06-13 → 2007-06-20 (+7d) | 2007-06-13 → 2007-06-20 (+7d) |  |  |  |  |  |
| 154 | Review Client Feature Request/Revise Task Plan | 2007-06-13 → 2007-06-20 (+7d) | 2007-06-14 → 2007-06-21 (+7d) |  |  |  |  |  |
| 155 | **Iteration 5** | 2007-06-13 → 2007-06-20 (+7d) | 2007-07-13 → 2007-07-20 (+7d) |  |  |  |  |  |
| 156 | Release 4.0 Beta 2 | 2007-06-13 → 2007-06-20 (+7d) | 2007-07-12 → 2007-07-19 (+7d) |  |  |  |  |  |
| 157 | Review Client Feature Request/Revise Task Plan | 2007-07-12 → 2007-07-19 (+7d) | 2007-07-13 → 2007-07-20 (+7d) |  |  |  |  |  |

| ID | Task | Start | Finish |
| --- | --- | --- | --- |
| 158 | **Iteration 6** | 2007-07-12 → 2007-07-19 (+7d) | 2007-08-02 → 2007-08-09 (+7d) |
| 159 | Release 4.0 Final | 2007-07-12 → 2007-07-19 (+7d) | 2007-08-02 → 2007-08-09 (+7d) |
| 160 | Integration Test | 2007-08-02 → 2007-08-09 (+7d) | 2007-08-16 → 2007-08-23 (+7d) |
| 161 | UAT Test | 2007-08-16 → 2007-08-23 (+7d) | 2007-08-30 → 2007-09-06 (+7d) |
| 162 | **Transition** | 2007-08-02 → 2007-08-09 (+7d) | 2007-09-06 → 2007-09-13 (+7d) |
| 163 | **Documentation** | 2007-08-02 → 2007-08-09 (+7d) | 2007-09-06 → 2007-09-13 (+7d) |
| 164 | New users guide | 2007-08-02 → 2007-08-09 (+7d) | 2007-08-16 → 2007-08-23 (+7d) |
| 165 | New technical guide | 2007-08-16 → 2007-08-23 (+7d) | 2007-08-30 → 2007-09-06 (+7d) |
| 166 | How to example | 2007-08-30 → 2007-09-06 (+7d) | 2007-09-06 → 2007-09-13 (+7d) |
| 167 | 4.0 Release Complete | 2007-09-06 → 2007-09-13 (+7d) | 2007-09-06 → 2007-09-13 (+7d) |

## Version 8 (saved 2007-04-16)

Note of the change: updated for iteration 4, 5

Last finish 2007-09-13 → 2007-09-26 (+13d). Complete tasks 48 → 52.

Added:

| ID | Task | Duration | Start | Finish | Predecessors | Resources |
| --- | --- | --- | --- | --- | --- | --- |
| 99 | Documentation | 10d | 2007-06-06 | 2007-06-20 | 73 | Satish [50%] |
| 125 | **Change architecture of Application Service** | 7d | 2007-05-30 | 2007-06-08 |  |  |
| 130 | **Re-architect information in SpringConfig.xml and DAOConfig.xml** | 4.5d | 2007-06-08 | 2007-06-14 |  |  |
| 131 | Design | 1d | 2007-06-08 | 2007-06-11 | 125 | Dan |
| 132 | Design Review | 0.25d | 2007-06-11 | 2007-06-11 | 131 | Dan; Satish; Charles |
| 133 | Design Update | 0.25d | 2007-06-11 | 2007-06-11 | 132 | Dan |
| 134 | Development | 3d | 2007-06-12 | 2007-06-14 | 133 | Dan |
| 140 | **Support interfaces (including marker interfaces), abstract class, enumeration** | 14.5d | 2007-06-20 | 2007-07-11 |  |  |
| 141 | Design | 1.5d | 2007-06-20 | 2007-06-21 | 99 | Satish |
| 142 | Design Review | 0.5d | 2007-06-21 | 2007-06-22 | 141 | Satish |
| 143 | Design Update | 0.5d | 2007-06-22 | 2007-06-22 | 142 | Satish |
| 145 | **Remove duplication of code due to security injection - ACEGI Framework** | 8d | 2007-07-11 | 2007-07-23 |  |  |
| 146 | Development/Unit Test | 8d | 2007-07-11 | 2007-07-23 | 140 | Satish |
| 147 | **Allow user to Specify name of the remoteService.xml file externally** | 2d | 2007-07-23 | 2007-07-25 |  |  |
| 148 | Development/Unit Test | 2d | 2007-07-23 | 2007-07-25 | 145 | Satish |
| 149 | **Allow to use composition/class as attributes** | 6.5d | 2007-06-29 | 2007-07-10 |  |  |
| 150 | Design | 1d | 2007-06-29 | 2007-06-29 | 135 | Dan |
| 151 | Design Review | 0.25d | 2007-07-02 | 2007-07-02 | 150 | Dan; Satish; Charles |
| 152 | Design Update | 0.25d | 2007-07-02 | 2007-07-02 | 151 | Dan |
| 153 | Development/Unit Test | 5d | 2007-07-02 | 2007-07-10 | 152 | Dan |
| 154 | **Transient Variable Support** | 7.5d | 2007-07-10 | 2007-07-19 |  |  |
| 155 | Design | 1d | 2007-07-10 | 2007-07-11 | 149 | Dan |
| 156 | Design Review | 0.25d | 2007-07-11 | 2007-07-11 | 155 | Dan |
| 157 | Design Update | 0.25d | 2007-07-11 | 2007-07-11 | 156 | Dan |
| 158 | Development/Unit Test | 6d | 2007-07-12 | 2007-07-19 | 157 | Dan |
| 161 | Release to QA | 1d | 2007-07-25 | 2007-07-26 | 159, 147 | Dan |
| 166 | **Documentation** | 5d | 2007-07-26 | 2007-08-02 |  |  |
| 167 | Update Documentation | 5d | 2007-07-26 | 2007-08-02 | 161, 163 | Dan [50%]; Satish [50%] |
| 172 | **Annotation Based Web Services** | 12d | 2007-08-02 | 2007-08-20 |  |  |
| 173 | Design | 1.5d | 2007-08-02 | 2007-08-06 | 167 | Dan |
| 174 | Design Review | 0.25d | 2007-08-06 | 2007-08-06 | 173 | Dan |
| 175 | Design Update | 0.25d | 2007-08-06 | 2007-08-06 | 174 | Dan |
| 176 | Development/Unit Test | 10d | 2007-08-06 | 2007-08-20 | 175 | Dan |
| 181 | **Integration Testing** | 7d | 2007-08-27 | 2007-09-05 |  |  |
| 182 | Promote to Staging | 2d | 2007-08-27 | 2007-08-29 | 177 | Dan |
| 183 | Test | 5d | 2007-08-29 | 2007-09-05 | 182 | Steve; QA |
| 190 | **Production Packaging** | 15d | 2007-09-05 | 2007-09-26 |  |  |
| 191 | Update Download Site | 2d | 2007-09-05 | 2007-09-07 | 189 | Dan |
| 192 | Develop Production promotion Documentation | 2d | 2007-09-07 | 2007-09-11 | 191 | Dan |
| 193 | Push to Produciton | 5d | 2007-09-19 | 2007-09-26 | 184 | Terpsys |

Removed: 124 Update Requirements Document; 132 Unrecognized database format for EA (GF#3955); 133 Build script change for downloading MySQL (GF#2933); 140 Support multiple ApplicationService in same JVM; 145 Improved logging/trace messages; 147 Unrecognized database format for EA (GF#3955); 148 Build script change for downloading MySQL (GF#2933); 153 Release 4.0 Beta 1 Complete; 154 Review Client Feature Request/Revise Task Plan; 157 Review Client Feature Request/Revise Task Plan; 158 Iteration 6; 159 Release 4.0 Final; 160 Integration Test

Changed:

| ID | Task | Start | Finish | Duration | Complete | Total float | Predecessors | Other |
| --- | --- | --- | --- | --- | --- | --- | --- | --- |
| 1 | **caCORE SDK v4.0** |  | 2007-09-13 → 2007-09-26 (+13d) | 165.2d? → 174.7d? | 34% → 35% |  |  |  |
| 5 | **Elaboration** |  |  |  |  |  |  | was named Eloboration |
| 25 | **Construction** |  | 2007-09-06 → 2007-09-19 (+13d) | 158.2d? → 167.7d? | 33% → 34% |  |  |  |
| 33 | Design |  |  |  |  |  | 126 → none |  |
| 67 | **Iteration 2** |  |  |  | 20% → 24% | 60d → 69.5d |  |  |
| 68 | **SDK 4.0 Release (Beta 1)** |  |  |  | 20% → 24% | 60d → 69.5d |  | was named SDK 4.0 Release |
| 70 | **Boot Camp Support** | 2007-04-09 A | 2007-04-19 A |  | 0% → 100% | 0d → none |  |  |
| 71 | Presentation | 2007-04-09 A | 2007-04-11 → 2007-04-12 A (+1d) | 3d → 4d | 0% → 100% | 6d → none |  |  |
| 72 | Demo | 2007-04-18 A | 2007-04-19 A |  | 0% → 100% | 0d → none |  |  |
| 73 | **Upgrade Code Generation Framework** |  |  |  | 34% → 35% |  |  |  |
| 76 | **Design** | 2007-04-12 → 2007-04-13 A (+1d) |  | 9.2d? → 8.2d? | 0% → 16% |  |  |  |
| 77 | Overview | 2007-04-12 → 2007-04-13 A (+1d) | 2007-04-12 → 2007-04-13 A (+1d) |  | 0% → 100% | 6d → none | 74, 75, 71 → 71 |  |
| 78 | Review of Approach | 2007-04-13 → 2007-04-16 (+3d) | 2007-04-13 → 2007-04-16 (+3d) |  |  | 6d → 5d |  |  |
| 79 | Code Gen Detail Design | 2007-04-13 → 2007-04-16 (+3d) | 2007-04-17 → 2007-04-18 (+1d) |  |  | 6d → 5d |  |  |
| 95 | **QA** | 2007-04-25 → 2007-04-30 (+5d) |  | 40d → 37.2d |  | 30d → 27.2d |  |  |
| 96 | Test Development | 2007-04-25 → 2007-04-30 (+5d) | 2007-05-09 → 2007-05-11 (+2d) |  |  | 85d → 82.2d |  | constraint start no earlier than 2007-03-05 → start no earlier than 2007-04-30 |
| 98 | Test Support |  |  |  |  | 0d → 43.5d |  | resources Satish → Satish [50%] |
| 102 | **Iteration 3** |  |  |  | 16% → 29% | 87.7d → 97.2d |  |  |
| 103 | **Release 4.0 (Open Source UML Tool Support)** |  |  |  | 16% → 29% | 87.7d → 97.2d |  | was named Release 4.0 Beta 1 |
| 105 | **Open Source Modeling Tool XMI Processor** |  |  |  | 38% → 68% | 97.7d → 107.2d |  |  |
| 110 | Design | 2007-04-10 A | 2007-04-11 A |  | 0% → 100% | 4.7d → none |  |  |
| 111 | Design Review | 2007-04-12 A |  |  | 0% → 60% | 4.7d → 10.7d |  |  |
| 114 | Development | 2007-04-13 A |  |  | 0% → 60% |  |  |  |
| 123 | **Iteration 4** | 2007-01-23 → 2007-05-30 (+127d) | 2007-06-27 → 2007-08-09 (+43d) | 108.2d → 50.2d |  | 55d → 1.2d |  |  |
| 124 | **Release 4.0 (Beta 2)** | 2007-01-23 → 2007-05-30 (+127d) | 2007-03-01 → 2007-08-09 (+161d) | 24.5d → 50.2d |  | 138.7d → 1.2d |  | was named Release 4.0 Beta 1 |
| 126 | Design | 2007-02-12 → 2007-05-30 (+107d) | 2007-02-14 → 2007-05-31 (+106d) | 3d → 1.5d |  | 79.7d → 48.75d | none → 93 | constraint start no earlier than 2007-02-12 → none |
| 127 | Design Review | 2007-02-15 → 2007-06-01 (+106d) | 2007-02-15 → 2007-06-01 (+106d) | 0.5d → 0.25d |  | 79.7d → 48.75d |  | resources Satish; Kunal; Doug; Avinash → Dan; Doug M.; Satish |
| 128 | Design Update | 2007-02-15 → 2007-06-01 (+106d) | 2007-02-15 → 2007-06-01 (+106d) | 0.5d → 0.25d |  | 79.7d → 49.7d |  |  |
| 129 | Development | 2007-02-26 → 2007-06-01 (+95d) | 2007-02-28 → 2007-06-08 (+100d) | 2.5d → 5d |  | 79.7d → 49.7d | none → 128 |  |
| 135 | **Support multiple ApplicationService in same JVM** | 2007-02-12 → 2007-06-15 (+123d) | 2007-02-23 → 2007-06-28 (+125d) |  |  | 138.7d → 1.2d |  |  |
| 136 | Design | 2007-02-12 → 2007-06-15 (+123d) | 2007-02-14 → 2007-06-19 (+125d) |  |  | 138.7d → 49.7d | none → 130 |  |
| 137 | Design Review | 2007-02-15 → 2007-06-20 (+125d) | 2007-02-15 → 2007-06-20 (+125d) |  |  | 138.7d → 49.7d |  |  |
| 138 | Design Update | 2007-02-15 → 2007-06-20 (+125d) | 2007-02-15 → 2007-06-20 (+125d) |  |  | 138.7d → 49.7d |  |  |
| 139 | Development/Unit Test | 2007-02-16 → 2007-06-21 (+125d) | 2007-02-23 → 2007-06-28 (+125d) |  |  | 138.7d → 49.7d |  |  |
| 144 | Development/Unit Test | 2007-02-16 → 2007-06-22 (+126d) | 2007-02-23 → 2007-07-11 (+138d) | 6d → 12d |  | 79.7d → 0d | 128 → 143 | resources Dan → Satish |
| 159 | **Improved logging/trace messages** | 2007-02-26 → 2007-07-20 (+144d) | 2007-02-28 → 2007-07-24 (+146d) |  |  | 138.7d → 1.2d | 135 → none |  |
| 160 | Development | 2007-02-26 → 2007-07-20 (+144d) | 2007-02-28 → 2007-07-24 (+146d) |  |  | 138.7d → 1.2d | none → 154 |  |
| 162 | **QA** | 2007-01-23 → 2007-07-11 (+169d) | 2007-02-08 → 2007-08-09 (+182d) | 10d → 21d |  | 153.2d → 6d |  |  |
| 163 | Test Development | 2007-01-30 → 2007-07-11 (+162d) | 2007-02-08 → 2007-07-18 (+160d) |  |  | 153.2d → 6d | Update Requirements Document → 140 |  |
| 164 | Test Execution | 2007-01-23 → 2007-07-26 (+184d) | 2007-01-29 → 2007-08-09 (+192d) | 5d → 10d |  | 158.2d → 15d | none → 161, 163 |  |
| 165 | Test Support | 2007-01-23 → 2007-07-26 (+184d) | 2007-01-25 → 2007-08-02 (+189d) | 2.5d → 5d |  | 160.7d → 20d | none → 161, 163 | resources Dan → Dan [50%]; Satish [50%] |
| 168 | Review Client Feature Request/Revise Task Plan | 2007-05-01 → 2007-07-26 (+86d) | 2007-05-01 → 2007-07-27 (+87d) |  |  | 95.2d → 24d | 169 → 161 | constraint none → start no earlier than 2007-07-26 |
| 169 | Release 4.0 Beta 2 Complete | 2007-05-01 → 2007-08-09 (+100d) | 2007-05-01 → 2007-08-09 (+100d) |  |  | 95.2d → 15d | 159 → 162 | was named Release 4.0 Beta 1 Complete |
| 170 | **Iteration 5** | 2007-06-20 → 2007-08-02 (+43d) | 2007-07-20 → 2007-09-19 (+61d) | 21d? → 34d |  |  | Release 4.0 Beta 1 Complete → none |  |
| 171 | **Release 4.0 (Final Release)** | 2007-06-20 → 2007-08-02 (+43d) | 2007-07-19 → 2007-09-19 (+62d) | 20d → 34d |  |  |  | was named Release 4.0 Beta 2 |
| 177 | **QA** | 2007-05-09 → 2007-08-07 (+90d) | 2007-06-27 → 2007-08-27 (+61d) | 35d → 14.7d |  | 55d → 0d |  |  |
| 178 | Test Development | 2007-05-09 → 2007-08-07 (+90d) | 2007-05-16 → 2007-08-09 (+85d) | 5d → 3d |  | 85d → 11.7d | 104, 96 → 175 | constraint none → start no earlier than 2007-08-07 |
| 179 | Test Execution | 2007-06-20 → 2007-08-20 (+61d) | 2007-06-27 → 2007-08-27 (+61d) |  |  | 55d → 0d | 97 → 172 |  |
| 180 | Test Support | 2007-06-20 → 2007-08-20 (+61d) | 2007-06-22 → 2007-08-27 (+66d) | 2.5d → 5d |  | 57.5d → 0d | 97 → 172 | resources Dan → Dan [50%] |
| 184 | UAT Test | 2007-08-23 → 2007-09-05 (+13d) | 2007-09-06 → 2007-09-19 (+13d) |  |  | 5d → 0d | Integration Test → 181 | resources none → SDK Users |
| 185 | **Transition** | 2007-08-09 → 2007-08-02 (-7d) | 2007-09-13 → 2007-09-26 (+13d) | 25d → 39d |  |  |  |  |
| 186 | **Documentation** | 2007-08-09 → 2007-08-02 (-7d) | 2007-09-13 → 2007-09-10 (-3d) | 25d → 27d |  | 0d → 12d | Iteration 6 → 167 |  |
| 187 | New users guide | 2007-08-09 → 2007-08-02 (-7d) | 2007-08-23 → 2007-08-27 (+4d) |  |  | 0d → 12d |  | resources none → Satish |
| 188 | New technical guide | 2007-08-23 → 2007-08-27 (+4d) | 2007-09-06 → 2007-09-10 (+4d) |  |  | 0d → 12d |  | resources none → Satish |
| 189 | How to examples | 2007-09-06 → 2007-08-29 (-8d) | 2007-09-13 → 2007-09-05 (-8d) |  |  | 0d → 11d | 188 → 182 | was named How to example; resources none → Dan |
| 194 | 4.0 Release Complete | 2007-09-13 → 2007-09-26 (+13d) | 2007-09-13 → 2007-09-26 (+13d) |  |  |  | 186 → 193 |  |

## Version 9 (saved 2007-04-20)

Note of the change: updated per status meeting

Last finish 2007-09-26 → 2007-09-25 (-1d).

Added:

| ID | Task | Duration | Start | Finish | Predecessors | Constraint | Resources |
| --- | --- | --- | --- | --- | --- | --- | --- |
| 73 | Demo | 2d | 2007-04-25 | 2007-04-26 |  | start no earlier than 2007-04-25 | Satish |
| 181 | Test Support (Setup/Configuration) | 2d | 2007-08-08 | 2007-08-09 | 168 |  | Satish |
| 191 | technical guide help | 4d | 2007-09-04 | 2007-09-07 | 189 |  | Satish |

Changed:

| ID | Task | Start | Finish | Duration | Complete | Total float | Predecessors | Other |
| --- | --- | --- | --- | --- | --- | --- | --- | --- |
| 1 | **caCORE SDK v4.0** |  | 2007-09-26 → 2007-09-25 (-1d) | 174.7d? → 173.5d? | 35% → 34% |  |  |  |
| 25 | **Construction** |  | 2007-09-19 → 2007-09-18 (-1d) | 167.7d? → 166.5d? |  |  |  |  |
| 67 | **Iteration 2** |  | 2007-06-20 → 2007-06-21 (+1d) | 61.2d? → 63d? |  | 69.5d → 66.5d |  |  |
| 68 | **SDK 4.0 Release (Beta 1)** |  | 2007-06-20 → 2007-06-21 (+1d) | 61.2d? → 63d? |  | 69.5d → 66.5d |  |  |
| 70 | **Boot Camp Support** |  | 2007-04-19 A → 2007-04-26 (+7d) | 9d → 14d | 100% → 75% | none → 0.5d |  |  |
| 74 | **Upgrade Code Generation Framework** |  | 2007-06-06 → 2007-06-07 (+1d) | 51.2d? → 53d? |  | 0d → 0.5d |  |  |
| 84 | Implement new code generation framework | 2007-04-25 → 2007-04-27 (+2d) | 2007-04-30 → 2007-05-01 (+1d) |  |  | 0d → 0.5d | 77 → 77, 73 |  |
| 85 | Rewrite bean generation for JDK 1.5 | 2007-04-30 → 2007-05-02 (+2d) | 2007-05-02 → 2007-05-03 (+1d) |  |  | 0d → 0.5d |  |  |
| 86 | Rewrite O/R mapping generation (.hbm.xml, .cfg.xml, ehcache.xml) | 2007-05-02 → 2007-05-04 (+2d) | 2007-05-30 → 2007-05-31 (+1d) |  |  | 0d → 0.5d |  |  |
| 95 | Supporting files generation (coreBeans.properties, DAOConfig.xml) | 2007-05-30 → 2007-06-01 (+2d) | 2007-06-06 → 2007-06-07 (+1d) |  |  | 0d → 0.5d |  |  |
| 96 | **QA** |  | 2007-06-20 → 2007-06-21 (+1d) | 37.2d → 39d |  | 27.2d → 29.5d |  |  |
| 98 | Test Execution | 2007-06-06 → 2007-06-08 (+2d) | 2007-06-20 → 2007-06-21 (+1d) |  |  | 55d → 66.5d |  |  |
| 99 | Test Support | 2007-06-06 → 2007-06-08 (+2d) | 2007-06-20 → 2007-06-21 (+1d) |  |  | 43.5d → 0.5d |  |  |
| 100 | Documentation | 2007-06-06 → 2007-06-08 (+2d) | 2007-06-20 → 2007-06-21 (+1d) |  |  | 0d → 0.5d |  |  |
| 124 | **Iteration 4** |  | 2007-08-09 → 2007-07-19 (-21d) | 50.2d → 35d |  | 1.2d → 0d |  |  |
| 125 | **Release 4.0 (Beta 2)** |  | 2007-08-09 → 2007-07-19 (-21d) | 50.2d → 35d |  | 1.2d → 0d |  |  |
| 136 | **Remove duplication of code due to security injection - ACEGI Framework** | 2007-07-11 → 2007-06-22 (-19d) | 2007-07-23 → 2007-07-03 (-20d) |  |  | 0d → 0.5d |  |  |
| 137 | Development/Unit Test | 2007-06-21 → 2007-06-22 (+1d) | 2007-06-28 → 2007-07-03 (+5d) | 6d → 8d |  | 49.7d → 0.5d | 143 → 99, 100 | resources Dan → Satish |
| 138 | **Improved logging/trace messages** | 2007-07-20 → 2007-07-05 (-15d) | 2007-07-24 → 2007-07-09 (-15d) |  |  | 1.2d → 56d |  |  |
| 139 | Development | 2007-07-20 → 2007-07-05 (-15d) | 2007-07-24 → 2007-07-09 (-15d) |  |  | 1.2d → 56d | 173 → 136 |  |
| 140 | **Annotation Based Web Services** | 2007-08-02 → 2007-06-15 (-48d) | 2007-08-20 → 2007-07-05 (-46d) | 12d → 13.5d |  |  |  |  |
| 141 | Design |  |  |  |  | 49.7d → 0d |  | constraint start no earlier than 2007-02-12 → none |
| 142 | Design Review |  |  | 0.5d → 0.25d |  | 49.7d → 0d |  | resources Satish; Kunal; Doug; Avinash → Dan |
| 143 | Design Update |  |  | 0.5d → 0.25d |  | 49.7d → 0d |  |  |
| 144 | Development/Unit Test | 2007-06-22 → 2007-06-20 (-2d) | 2007-07-11 → 2007-07-05 (-6d) | 12d → 10d |  |  | 159 → 143 | resources Satish → Dan |
| 145 | Release to QA | 2007-07-25 → 2007-07-05 (-20d) | 2007-07-26 → 2007-07-06 (-20d) |  |  | 0d → 57d | 138, 166 → 136, 140 |  |
| 146 | **QA** | 2007-07-11 → 2007-06-20 (-21d) | 2007-08-09 → 2007-07-19 (-21d) | 21d → 20.5d |  | 6d → 10.5d |  |  |
| 147 | Test Development | 2007-07-11 → 2007-06-20 (-21d) | 2007-07-18 → 2007-06-26 (-22d) |  |  | 6d → 62.5d | 161 → 141 |  |
| 148 | Test Execution | 2007-07-26 → 2007-07-05 (-21d) | 2007-08-09 → 2007-07-19 (-21d) |  |  | 15d → 48d | 145, 147 → 136, 140 |  |
| 149 | Test Support | 2007-07-26 → 2007-07-05 (-21d) | 2007-08-02 → 2007-07-16 (-17d) | 5d → 7d |  | 20d → 0d | 145, 147 → 136, 140 |  |
| 150 | **Documentation** | 2007-07-26 → 2007-07-05 (-21d) | 2007-08-02 → 2007-07-16 (-17d) | 5d → 7d |  |  |  |  |
| 151 | Update Documentation | 2007-07-26 → 2007-07-05 (-21d) | 2007-08-02 → 2007-07-16 (-17d) | 5d → 7d |  |  | 145, 147 → 136, 140 |  |
| 152 | Review Client Feature Request/Revise Task Plan | 2007-07-26 → 2007-07-06 (-20d) | 2007-07-27 → 2007-07-06 (-21d) |  |  | 24d → 56.5d | 145 → 147 | constraint start no earlier than 2007-07-26 → start no earlier than 2007-07-06 |
| 153 | Release 4.0 Beta 2 Complete | 2007-08-09 → 2007-07-19 (-21d) | 2007-08-09 → 2007-07-19 (-21d) |  |  | 15d → 48d | 146 → 146, 150 |  |
| 154 | **Iteration 5** | 2007-08-02 → 2007-07-16 (-17d) | 2007-09-19 → 2007-09-18 (-1d) | 34d → 46d |  |  |  |  |
| 155 | **Release 4.0 (Final Release)** | 2007-08-02 → 2007-07-16 (-17d) | 2007-09-19 → 2007-09-18 (-1d) | 34d → 46d |  |  |  |  |
| 156 | **Support multiple ApplicationService in same JVM** | 2007-06-15 → 2007-07-16 (+31d) | 2007-06-28 → 2007-07-30 (+32d) |  |  | 1.2d → 3.5d |  |  |
| 157 | Design | 2007-06-20 → 2007-07-16 (+26d) | 2007-06-21 → 2007-07-19 (+28d) | 1.5d → 3d |  | 0d → 3.5d | 100 → 149, 151 | constraint none → start no earlier than 2007-02-12 |
| 158 | Design Review | 2007-06-21 → 2007-07-19 (+28d) | 2007-06-22 → 2007-07-19 (+27d) |  |  | 0d → 3.5d |  | resources Satish → Satish; Kunal; Doug; Avinash |
| 159 | Design Update | 2007-06-22 → 2007-07-20 (+28d) | 2007-06-22 → 2007-07-20 (+28d) |  |  | 0d → 3.5d |  |  |
| 160 | Development/Unit Test | 2007-07-11 → 2007-07-20 (+9d) | 2007-07-23 → 2007-07-30 (+7d) | 8d → 6d |  | 0d → 3.5d | 161 → 159 |  |
| 161 | **Support interfaces (including marker interfaces), abstract class, enumeration** | 2007-06-20 → 2007-07-16 (+26d) | 2007-07-11 → 2007-08-03 (+23d) |  |  |  |  |  |
| 162 | Design | 2007-06-29 → 2007-07-16 (+17d) | 2007-06-29 → 2007-07-17 (+18d) | 1d → 1.5d |  | 1.2d → 0d | 156 → 149, 151 |  |
| 163 | Design Review | 2007-07-02 → 2007-07-18 (+16d) | 2007-07-02 → 2007-07-18 (+16d) | 0.25d → 0.5d |  | 1.2d → 0d |  | resources Dan; Satish; Charles → Dan |
| 164 | Design Update | 2007-07-02 → 2007-07-18 (+16d) | 2007-07-02 → 2007-07-18 (+16d) | 0.25d → 0.5d |  | 1.2d → 0d |  |  |
| 165 | Development/Unit Test | 2007-07-23 → 2007-07-19 (-4d) | 2007-07-25 → 2007-08-03 (+9d) | 2d → 12d |  |  | 136 → 164 | resources Satish → Dan |
| 166 | **Allow user to Specify name of the remoteService.xml file externally** | 2007-07-23 → 2007-08-06 (+14d) | 2007-07-25 → 2007-08-07 (+13d) |  |  |  |  |  |
| 167 | Development/Unit Test | 2007-07-02 → 2007-08-06 (+35d) | 2007-07-10 → 2007-08-07 (+28d) | 5d → 2d |  | 1.2d → 0d | 164 → 161 |  |
| 168 | **Allow to use composition/class as attributes** | 2007-06-29 → 2007-07-30 (+31d) | 2007-07-10 → 2007-08-07 (+28d) |  |  | 1.2d → 3.5d |  |  |
| 169 | Design | 2007-07-10 → 2007-07-30 (+20d) | 2007-07-11 → 2007-07-31 (+20d) |  |  | 1.2d → 3.5d | 168 → 156 | resources Dan → Satish |
| 170 | Design Review | 2007-07-11 → 2007-07-31 (+20d) | 2007-07-11 → 2007-07-31 (+20d) |  |  | 1.2d → 3.5d |  | resources Dan → Dan; Satish; Charles |
| 171 | Design Update | 2007-07-11 → 2007-07-31 (+20d) | 2007-07-11 → 2007-07-31 (+20d) |  |  | 1.2d → 3.5d |  | resources Dan → Satish |
| 172 | Development/Unit Test | 2007-07-12 → 2007-08-01 (+20d) | 2007-07-19 → 2007-08-07 (+19d) | 6d → 5d |  | 1.2d → 3.5d |  | resources Dan → Satish |
| 173 | **Transient Variable Support** | 2007-07-10 → 2007-08-08 (+29d) | 2007-07-19 → 2007-08-17 (+29d) |  |  | 1.2d → 0d |  |  |
| 174 | Design | 2007-08-02 → 2007-08-08 (+6d) | 2007-08-06 → 2007-08-08 (+2d) | 1.5d → 1d |  |  | 151 → 166 |  |
| 175 | Design Review | 2007-08-06 → 2007-08-09 (+3d) | 2007-08-06 → 2007-08-09 (+3d) |  |  |  |  |  |
| 176 | Design Update | 2007-08-06 → 2007-08-09 (+3d) | 2007-08-06 → 2007-08-09 (+3d) |  |  |  |  |  |
| 177 | Development/Unit Test | 2007-08-06 → 2007-08-09 (+3d) | 2007-08-20 → 2007-08-17 (-3d) | 10d → 6d |  |  |  |  |
| 178 | **QA** | 2007-08-07 → 2007-08-06 (-1d) | 2007-08-27 → 2007-08-24 (-3d) | 14.7d → 14.5d |  |  |  |  |
| 179 | Test Development | 2007-08-07 → 2007-08-06 (-1d) | 2007-08-09 → 2007-08-08 (-1d) |  |  | 11.7d → 11.5d | 176 → 156, 161 | constraint start no earlier than 2007-08-07 → start no earlier than 2007-08-06 |
| 180 | Test Execution | 2007-08-20 → 2007-08-17 (-3d) | 2007-08-27 → 2007-08-24 (-3d) |  |  |  | 140 → 173 |  |
| 182 | Test Support | 2007-08-20 → 2007-08-17 (-3d) | 2007-08-27 → 2007-08-24 (-3d) |  |  |  | 140 → 173 | resources Dan [50%] → Dan [50%]; Satish [50%] |
| 183 | **Integration Testing** | 2007-08-27 → 2007-08-24 (-3d) | 2007-09-05 → 2007-09-04 (-1d) |  |  |  |  |  |
| 184 | Promote to Staging | 2007-08-27 → 2007-08-24 (-3d) | 2007-08-29 → 2007-08-28 (-1d) |  |  |  |  |  |
| 185 | Test | 2007-08-29 → 2007-08-28 (-1d) | 2007-09-05 → 2007-09-04 (-1d) |  |  |  |  |  |
| 186 | UAT Test | 2007-09-05 → 2007-09-04 (-1d) | 2007-09-19 → 2007-09-18 (-1d) |  |  |  |  |  |
| 187 | **Transition** | 2007-08-02 → 2007-08-17 (+15d) | 2007-09-26 → 2007-09-25 (-1d) | 39d → 27d |  |  |  |  |
| 188 | **Documentation** | 2007-08-02 → 2007-08-17 (+15d) | 2007-09-10 → 2007-09-07 (-3d) | 27d → 15.5d |  | 12d → 9.5d | 151 → none |  |
| 189 | New users guide | 2007-08-02 → 2007-08-21 (+19d) | 2007-08-27 → 2007-09-03 (+7d) |  |  | 12d → 9.5d | none → 173 | resources Satish → Satish [50%] |
| 190 | New technical guide | 2007-08-27 → 2007-08-24 (-3d) | 2007-09-10 → 2007-09-07 (-3d) |  |  | 12d → 10d | 189 → 192 | resources Satish → Dan |

| ID | Task | Start | Finish | Duration | Total float | Predecessors | Other |
| --- | --- | --- | --- | --- | --- | --- | --- |
| 192 | How to examples | 2007-08-29 → 2007-08-17 (-12d) | 2007-09-05 → 2007-08-24 (-12d) |  | 11d → 10d | 184 → 173 | resources Dan → Dan [50%] |
| 193 | **Production Packaging** | 2007-09-05 → 2007-09-07 (+2d) | 2007-09-26 → 2007-09-25 (-1d) | 15d → 12d |  |  |  |
| 194 | Update Download Site | 2007-09-05 → 2007-09-07 (+2d) | 2007-09-07 → 2007-09-11 (+4d) |  | 11d → 10d | 192 → 190 |  |
| 195 | Develop Production promotion Documentation | 2007-09-07 → 2007-09-10 (+3d) |  |  | 11d → 9.5d | 194 → 191 | resources Dan → Satish |
| 196 | Push to Produciton | 2007-09-19 → 2007-09-18 (-1d) | 2007-09-26 → 2007-09-25 (-1d) |  |  |  |  |
| 197 | 4.0 Release Complete | 2007-09-26 → 2007-09-25 (-1d) | 2007-09-26 → 2007-09-25 (-1d) |  |  |  |  |

## Version 10 (saved 2007-04-23)

Note of the change: updated per weekly status meeting

Last finish stays 2007-09-25. Complete tasks 52 → 55.

Changed:

| ID | Task | Start | Finish | Complete | Total float |
| --- | --- | --- | --- | --- | --- |
| 1 | **caCORE SDK v4.0** |  |  | 34% → 36% |  |
| 25 | **Construction** |  |  | 34% → 36% |  |
| 67 | **Iteration 2** |  |  | 24% → 28% |  |
| 68 | **SDK 4.0 Release (Beta 1)** |  |  | 24% → 28% |  |
| 74 | **Upgrade Code Generation Framework** |  |  | 35% → 42% |  |
| 77 | **Design** |  |  | 16% → 81% |  |
| 79 | Review of Approach | 2007-04-16 A | 2007-04-16 A | 0% → 100% | 7.3d → none |
| 80 | Code Gen Detail Design | 2007-04-16 A | 2007-04-18 A | 0% → 100% | 7.3d → none |
| 81 | ACEGI/CSM Security Detail Design | 2007-04-20 A | 2007-04-23 A | 0% → 100% | 2.3d → none |
| 103 | **Iteration 3** |  |  | 29% → 39% |  |
| 104 | **Release 4.0 (Open Source UML Tool Support)** |  |  | 29% → 39% |  |
| 106 | **Open Source Modeling Tool XMI Processor** |  |  | 68% → 76% |  |
| 112 | Design Review |  |  | 60% → 90% | 6d → 7.95d |
| 113 | Finalize Design | 2007-04-13 A |  | 0% → 90% | 6d → 7.5d |
| 115 | Development |  |  | 60% → 75% |  |
| 116 | **QA** | 2007-04-13 A |  | 0% → 21% |  |
| 117 | Test Development | 2007-04-13 A |  | 0% → 95% |  |

## Version 11 (saved 2007-04-24)

Note of the change: updated according to decision made with Avinash to end the 4.0 development at the end of Iteration 4

Last finish 2007-09-25 → 2007-10-16 (+21d).

Added:

| ID | Task | Duration | Start | Finish | Predecessors | Constraint | Resources |
| --- | --- | --- | --- | --- | --- | --- | --- |
| 154 | Integration Testing Support | 15d | 2007-07-30 | 2007-08-20 | 148 |  | Dan [50%]; Satish [50%] |
| 166 | **caCORE SDK v4.X** | 41.5d | 2007-08-20 | 2007-10-16 |  |  |  |
| 167 | **Iteration 1** | 41.5d | 2007-08-20 | 2007-10-16 |  |  |  |
| 168 | **Elaboration** | 3d | 2007-08-20 | 2007-08-23 |  |  |  |
| 170 | **Construction** | 30d | 2007-08-29 | 2007-10-10 |  |  |  |
| 195 | Test Support | 5d | 2007-10-03 | 2007-10-10 | 193 |  | Satish [50%]; Dan [50%] |
| 197 | **Documentation** | 10d | 2007-09-21 | 2007-10-04 |  |  |  |
| 198 | users guide | 5d | 2007-09-21 | 2007-09-27 | 183, 176 | start no earlier than 2007-06-15 | Satish [50%] |
| 199 | technical guide | 10d | 2007-09-21 | 2007-10-04 | 183, 176 | start no earlier than 2007-06-15 | Dan [50%] |
| 200 | How to examples | 5d | 2007-09-28 | 2007-10-04 | 198 | start no earlier than 2007-06-15 | Satish [50%] |
| 201 | **Production Packaging** | 8d | 2007-10-05 | 2007-10-16 |  |  |  |
| 202 | Update Download Site | 4d | 2007-10-05 | 2007-10-10 | 199 |  | Dan |
| 203 | Develop Production promotion Documentation | 4d | 2007-10-05 | 2007-10-10 | 200 |  | Satish |
| 204 | Push to Produciton | 4d | 2007-10-11 | 2007-10-16 | 202, 203 | start no earlier than 2007-08-30 | Terpsys |

Removed: 125 Release 4.0 (Beta 2); 153 Release 4.0 Beta 2 Complete; 154 Iteration 5; 157 Design; 158 Design Review; 159 Design Update; 181 Test Support (Setup/Configuration)

Changed:

| ID | Task | Start | Finish | Duration | Complete | Total float | Predecessors | Other |
| --- | --- | --- | --- | --- | --- | --- | --- | --- |
| 1 | **caCORE SDK v4.0** |  | 2007-09-25 → 2007-09-06 (-19d) | 173.5d? → 160.5d? | 36% → 39% | 0d → 28.5d |  |  |
| 25 | **Construction** |  | 2007-09-18 → 2007-08-20 (-29d) | 166.5d? → 145.5d? | 36% → 40% | 5d → 41.5d |  |  |
| 124 | **Iteration 4** |  | 2007-07-19 → 2007-08-20 (+32d) | 35d → 57d |  | 0d → 1.5d |  |  |
| 125 | **Release 4.0 (Final Release)** | 2007-07-16 → 2007-05-30 (-47d) | 2007-09-18 → 2007-08-20 (-29d) | 46d → 57d |  | 0d → 1.5d |  |  |
| 126 | **Change architecture of Application Service** | 2007-05-30 → 2007-06-22 (+23d) | 2007-06-08 → 2007-07-06 (+28d) | 7d → 9.5d |  |  |  |  |
| 127 | Design | 2007-05-30 → 2007-06-22 (+23d) | 2007-05-31 → 2007-06-27 (+27d) | 1.5d → 4d |  |  | 94 → 99, 100 | resources Dan → Satish |
| 128 | Design Review | 2007-06-01 → 2007-06-28 (+27d) | 2007-06-01 → 2007-06-28 (+27d) |  |  |  |  |  |
| 129 | Design Update | 2007-06-01 → 2007-06-28 (+27d) | 2007-06-01 → 2007-06-28 (+27d) |  |  |  |  | resources Dan → Satish |
| 130 | Development | 2007-06-01 → 2007-06-28 (+27d) | 2007-06-08 → 2007-07-06 (+28d) |  |  |  |  | resources Dan → Satish |
| 131 | **Support multiple ApplicationService in same JVM** | 2007-07-16 → 2007-07-06 (-10d) | 2007-07-30 → 2007-07-16 (-14d) | 10d → 6d |  | 3.5d → 0d |  |  |
| 132 | Development/Unit Test | 2007-06-20 → 2007-07-06 (+16d) | 2007-07-05 → 2007-07-16 (+11d) | 10d → 6d |  |  | 143 → 126 | resources Dan → Satish |
| 133 | **Annotation Based Web Services** | 2007-06-15 → 2007-05-30 (-16d) | 2007-07-05 → 2007-06-18 (-17d) |  |  | 0d → 1.5d |  |  |
| 134 | Design | 2007-06-08 → 2007-05-30 (-9d) | 2007-06-11 → 2007-06-04 (-7d) | 1d → 3d |  | 0d → 1.5d | 126 → 94 |  |
| 135 | Design Review | 2007-06-11 → 2007-06-04 (-7d) | 2007-06-11 → 2007-06-04 (-7d) |  |  | 0d → 1.5d |  | resources Dan; Satish; Charles → Dan |
| 136 | Design Update | 2007-06-11 → 2007-06-04 (-7d) | 2007-06-11 → 2007-06-04 (-7d) |  |  | 0d → 1.5d |  |  |
| 137 | Development/Unit Test | 2007-07-20 → 2007-06-05 (-45d) | 2007-07-30 → 2007-06-18 (-42d) | 6d → 10d |  | 3.5d → 1.5d | Design Update → 136 | resources Satish → Dan |
| 138 | **Remove duplication of code due to security injection - ACEGI Framework** | 2007-06-22 → 2007-06-19 (-3d) | 2007-07-03 → 2007-07-02 (-1d) | 8d → 10d |  | 0.5d → 1.5d |  |  |
| 139 | Development/Unit Test | 2007-06-22 → 2007-06-19 (-3d) | 2007-07-03 → 2007-07-02 (-1d) | 8d → 10d |  | 0.5d → 1.5d | 99, 100 → 133 | resources Satish → Dan |
| 140 | **Re-architect information in SpringConfig.xml and DAOConfig.xml** | 2007-06-08 → 2007-07-03 (+25d) | 2007-06-14 → 2007-07-10 (+26d) |  |  | 0d → 1.5d |  |  |
| 141 | Design | 2007-06-15 → 2007-07-03 (+18d) | 2007-06-19 → 2007-07-03 (+14d) | 3d → 1d |  | 0d → 1.5d | 140 → 138 |  |
| 142 | Design Review | 2007-06-20 → 2007-07-05 (+15d) | 2007-06-20 → 2007-07-05 (+15d) |  |  | 0d → 1.5d |  | resources Dan → Dan; Satish; Charles |
| 143 | Design Update | 2007-06-20 → 2007-07-05 (+15d) | 2007-06-20 → 2007-07-05 (+15d) |  |  | 0d → 1.5d |  |  |
| 144 | Development | 2007-06-12 → 2007-07-05 (+23d) | 2007-06-14 → 2007-07-10 (+26d) |  |  | 0d → 1.5d | 136 → 143 |  |
| 145 | **Improved logging/trace messages** | 2007-07-05 → 2007-07-10 (+5d) | 2007-07-09 → 2007-07-12 (+3d) |  |  | 56d → 1.5d |  |  |
| 146 | Development | 2007-07-05 → 2007-07-10 (+5d) | 2007-07-09 → 2007-07-12 (+3d) |  |  | 56d → 1.5d | 138 → 140 |  |
| 147 | Release to QA | 2007-07-05 → 2007-07-16 (+11d) | 2007-07-06 → 2007-07-17 (+11d) |  |  | 57d → 65.5d | 138, 133 → 131, 145 |  |
| 148 | **QA** | 2007-06-20 → 2007-06-04 (-16d) | 2007-07-19 → 2007-07-30 (+11d) | 20.5d → 39d |  | 10.5d → 0d |  |  |
| 149 | Test Development | 2007-06-20 → 2007-06-04 (-16d) | 2007-06-26 → 2007-06-11 (-15d) |  |  | 62.5d → 34d | 141 → 134 |  |
| 150 | Test Execution | 2007-07-05 → 2007-07-16 (+11d) | 2007-07-19 → 2007-07-30 (+11d) |  |  | 48d → 0d | 138, 133 → 131, 145 |  |
| 151 | Test Support | 2007-07-05 → 2007-07-03 (-2d) | 2007-07-16 → 2007-07-17 (+1d) | 7d → 10d |  | 0d → 8.5d |  |  |
| 152 | **Documentation** | 2007-07-05 → 2007-07-03 (-2d) | 2007-07-16 → 2007-07-17 (+1d) | 7d → 10d |  | 0d → 65d |  |  |
| 153 | Update Documentation | 2007-07-05 → 2007-07-03 (-2d) | 2007-07-16 → 2007-07-17 (+1d) | 7d → 10d |  | 0d → 65d |  |  |
| 155 | **Transition** | 2007-08-17 → 2007-07-30 (-18d) | 2007-09-25 → 2007-09-06 (-19d) | 27d → 28d |  |  |  |  |
| 156 | **Documentation** | 2007-08-17 → 2007-07-30 (-18d) | 2007-09-07 → 2007-08-28 (-10d) | 15.5d → 21d |  | 9.5d → 0d |  |  |
| 157 | New users guide | 2007-08-21 → 2007-07-30 (-22d) | 2007-09-03 → 2007-08-22 (-12d) |  |  | 9.5d → 1.5d | 183 → 148 |  |
| 158 | New technical guide | 2007-08-24 → 2007-07-30 (-25d) | 2007-09-07 → 2007-08-20 (-18d) | 10d → 15d |  | 10d → 0d | 160 → 148 | resources Dan → Dan [50%] |
| 159 | technical guide help | 2007-09-04 → 2007-08-22 (-13d) | 2007-09-07 → 2007-08-28 (-10d) |  |  | 9.5d → 1.5d |  |  |
| 160 | How to examples | 2007-08-17 → 2007-08-20 (+3d) | 2007-08-24 → 2007-08-27 (+3d) |  |  | 10d → 0d | 183 → 158 | resources Dan [50%] → Dan |
| 161 | **Production Packaging** | 2007-09-07 → 2007-08-27 (-11d) | 2007-09-25 → 2007-09-06 (-19d) | 12d → 8d |  |  |  |  |
| 162 | Update Download Site | 2007-09-07 → 2007-08-27 (-11d) | 2007-09-11 → 2007-08-29 (-13d) |  |  | 10d → 0d | 158 → 160 |  |
| 163 | Develop Production promotion Documentation | 2007-09-10 → 2007-08-28 (-13d) | 2007-09-11 → 2007-08-30 (-12d) |  |  | 9.5d → 1.5d |  |  |
| 164 | Push to Produciton | 2007-09-18 → 2007-08-30 (-19d) | 2007-09-25 → 2007-09-06 (-19d) |  |  | 0d → 28.5d | 196 → 162, 163 | constraint none → start no earlier than 2007-08-30 |
| 165 | 4.0 Release Complete | 2007-09-25 → 2007-09-06 (-19d) | 2007-09-25 → 2007-09-06 (-19d) |  |  | 0d → 28.5d |  |  |
| 169 | Review Client Feature Request/Revise Task Plan | 2007-07-06 → 2007-08-20 (+45d) | 2007-07-06 → 2007-08-23 (+48d) | 1d → 3d |  | 56.5d → 38.5d | 149 → 154 | resources Charles; Avinash; Satish → Charles; Avinash; Satish [15%] |
| 171 | **Support interfaces (including marker interfaces), abstract class, enumeration** | 2007-07-16 → 2007-08-29 (+44d) | 2007-08-03 → 2007-09-18 (+46d) |  |  |  |  |  |
| 172 | Design | 2007-07-16 → 2007-08-29 (+44d) | 2007-07-17 → 2007-08-30 (+44d) |  |  |  | 151, 153 → 162 |  |
| 173 | Design Review | 2007-07-18 → 2007-08-31 (+44d) | 2007-07-18 → 2007-08-31 (+44d) |  |  |  |  |  |
| 174 | Design Update | 2007-07-18 → 2007-08-31 (+44d) | 2007-07-18 → 2007-08-31 (+44d) |  |  |  |  |  |
| 175 | Development/Unit Test | 2007-07-19 → 2007-09-03 (+46d) | 2007-08-03 → 2007-09-18 (+46d) |  |  |  |  |  |
| 176 | **Allow user to Specify name of the remoteService.xml file externally** | 2007-08-06 → 2007-09-19 (+44d) | 2007-08-07 → 2007-09-20 (+44d) |  |  |  |  |  |
| 177 | Development/Unit Test | 2007-08-06 → 2007-09-19 (+44d) | 2007-08-07 → 2007-09-20 (+44d) |  |  |  |  |  |
| 178 | **Allow to use composition/class as attributes** | 2007-07-30 → 2007-08-30 (+31d) | 2007-08-07 → 2007-09-07 (+31d) |  |  | 3.5d → 1.5d |  |  |
| 179 | Design | 2007-07-30 → 2007-08-30 (+31d) | 2007-07-31 → 2007-08-31 (+31d) |  |  | 3.5d → 1.5d | 131 → 163 |  |
| 180 | Design Review | 2007-07-31 → 2007-08-31 (+31d) | 2007-07-31 → 2007-08-31 (+31d) |  |  | 3.5d → 1.5d |  |  |
| 181 | Design Update | 2007-07-31 → 2007-08-31 (+31d) | 2007-07-31 → 2007-08-31 (+31d) |  |  | 3.5d → 1.5d |  |  |
| 182 | Development/Unit Test | 2007-08-01 → 2007-09-03 (+33d) | 2007-08-07 → 2007-09-07 (+31d) |  |  | 3.5d → 1.5d |  |  |
| 183 | **Transient Variable Support** | 2007-08-08 → 2007-09-10 (+33d) | 2007-08-17 → 2007-09-19 (+33d) |  |  | 0d → 1.5d |  |  |
| 184 | Design | 2007-08-08 → 2007-09-10 (+33d) | 2007-08-08 → 2007-09-10 (+33d) |  |  | 0d → 1.5d | 176 → 178 | resources Dan → Satish |
| 185 | Design Review | 2007-08-09 → 2007-09-11 (+33d) | 2007-08-09 → 2007-09-11 (+33d) |  |  | 0d → 1.5d |  | resources Dan → Satish |
| 186 | Design Update | 2007-08-09 → 2007-09-11 (+33d) | 2007-08-09 → 2007-09-11 (+33d) |  |  | 0d → 1.5d |  | resources Dan → Satish |
| 187 | Development/Unit Test | 2007-08-09 → 2007-09-11 (+33d) | 2007-08-17 → 2007-09-19 (+33d) |  |  | 0d → 1.5d |  | resources Dan → Satish |
| 188 | **QA** | 2007-08-06 → 2007-09-03 (+28d) | 2007-08-24 → 2007-10-02 (+39d) | 14.5d → 22d |  | 0d → 4.5d |  |  |
| 189 | Test Development | 2007-08-06 → 2007-09-03 (+28d) | 2007-08-08 → 2007-09-07 (+30d) | 3d → 5d |  | 11.5d → 21.5d | 131, 171 → 174 |  |
| 190 | Test Execution | 2007-08-17 → 2007-09-21 (+35d) | 2007-08-24 → 2007-10-02 (+39d) | 5d → 8d |  | 0d → 4.5d | 183 → 183, 176 |  |
| 191 | Test Support | 2007-08-17 → 2007-09-21 (+35d) | 2007-08-24 → 2007-10-02 (+39d) | 5d → 8d |  | 0d → 4.5d | 183 → 183, 176 | resources Dan [50%]; Satish [50%] → Satish [50%]; Dan [50%] |
| 192 | **Integration Testing** | 2007-08-24 → 2007-10-03 (+40d) | 2007-09-04 → 2007-10-10 (+36d) | 7d → 5.5d |  | 0d → 4.5d |  |  |
| 193 | Promote to Staging | 2007-08-24 → 2007-10-03 (+40d) | 2007-08-28 → 2007-10-03 (+36d) | 2d → 0.5d |  | 0d → 4.5d |  |  |
| 194 | Test | 2007-08-28 → 2007-10-03 (+36d) | 2007-09-04 → 2007-10-10 (+36d) |  |  | 0d → 4.5d |  | resources Steve; QA → Steve |
| 196 | **Transition** | 2007-09-04 → 2007-09-21 (+17d) | 2007-09-18 → 2007-10-16 (+28d) | 10d → 18d |  |  | 192 → none | was named UAT Test |

## Version 12 (saved 2007-04-30)

Note of the change: Updated status of the tasks

Last finish stays 2007-10-16. Complete tasks 55 → 60.

Changed:

| ID | Task | Start | Finish | Complete | Total float |
| --- | --- | --- | --- | --- | --- |
| 1 | **caCORE SDK v4.0** |  |  | 39% → 41% |  |
| 25 | **Construction** |  |  | 40% → 42% |  |
| 67 | **Iteration 2** |  |  | 28% → 31% |  |
| 68 | **SDK 4.0 Release (Beta 1)** |  |  | 28% → 31% |  |
| 70 | **Boot Camp Support** |  | 2007-04-26 A | 75% → 100% | 0d → none |
| 73 | Demo | 2007-04-25 A | 2007-04-26 A | 0% → 100% | 0d → none |
| 74 | **Upgrade Code Generation Framework** |  |  | 42% → 46% |  |
| 77 | **Design** |  | 2007-04-25 A | 81% → 100% | 1.8d → none |
| 82 | Design/Prototype Review | 2007-04-24 A | 2007-04-24 A | 0% → 100% | 1.8d → none |
| 83 | Design Update | 2007-04-24 A | 2007-04-25 A | 0% → 100% | 1.8d → none |
| 84 | Implement new code generation framework | 2007-04-27 A |  | 0% → 30% |  |
| 103 | **Iteration 3** |  |  | 39% → 41% |  |
| 104 | **Release 4.0 (Open Source UML Tool Support)** |  |  | 39% → 41% |  |
| 106 | **Open Source Modeling Tool XMI Processor** |  |  | 76% → 82% |  |
| 112 | Design Review |  | 2007-04-12 A | 90% → 100% | 9.45d → none |
| 113 | Finalize Design |  | 2007-04-13 A | 90% → 100% | 9d → none |
| 115 | Development |  |  | 75% → 90% |  |

## Version 13 (saved 2007-05-07)

Note of the change: *** empty log message ***

Last finish stays 2007-10-16. Complete tasks 60 → 68.

Changed:

| ID | Task | Start | Finish | Complete | Total float |
| --- | --- | --- | --- | --- | --- |
| 1 | **caCORE SDK v4.0** |  |  | 41% → 48% |  |
| 25 | **Construction** |  |  | 42% → 51% |  |
| 67 | **Iteration 2** |  |  | 31% → 36% |  |
| 68 | **SDK 4.0 Release (Beta 1)** |  |  | 31% → 36% |  |
| 69 | Update Requirements Document | 2007-03-29 A | 2007-04-04 A | 0% → 100% | 133d → none |
| 103 | **Iteration 3** |  |  | 41% → 85% |  |
| 104 | **Release 4.0 (Open Source UML Tool Support)** |  |  | 41% → 85% |  |
| 105 | Update Requirements Document | 2007-04-05 A | 2007-04-11 A | 0% → 100% | 133d → none |
| 106 | **Open Source Modeling Tool XMI Processor** |  |  | 82% → 93% |  |
| 114 | Evaluate LOE/Revise Task Plan for Development | 2007-04-13 A |  | 0% → 50% |  |
| 115 | Development |  | 2007-04-27 A | 90% → 100% | 1.5d → none |
| 116 | **QA** |  | 2007-05-11 A | 21% → 100% | 1.5d → none |
| 117 | Test Development |  | 2007-04-20 A | 95% → 100% | 16.5d → none |
| 118 | Test Execution | 2007-04-27 A | 2007-05-11 A | 0% → 100% | 1.5d → none |
| 119 | Test Support | 2007-04-27 A | 2007-05-09 A | 0% → 100% | 3.5d → none |
| 121 | **Iteration Plan** | 2007-04-27 A | 2007-05-02 A | 0% → 100% | 118.5d → none |
| 122 | Review Client Feature Request/Revise Task Plan | 2007-04-27 A | 2007-05-02 A | 0% → 100% | 118.5d → none |
| 123 | Iteration 3 Complete | 2007-05-11 A | 2007-05-11 A | 0% → 100% | 111.5d → none |

## Version 14 (saved 2007-05-15)

Note of the change: *** empty log message ***

Last finish stays 2007-10-16. Complete tasks 68 → 70.

Changed:

| ID | Task | Complete | Other |
| --- | --- | --- | --- |
| 1 | **caCORE SDK v4.0** | 48% → 51% | baseline start none → 2007-01-19; baseline finish none → 2007-09-06 |
| 2 | **Inception** |  | baseline start none → 2007-01-19; baseline finish none → 2007-01-23 |
| 3 | 4.0 Kickoff meeting |  | baseline start none → 2007-01-19; baseline finish none → 2007-01-19 |
| 4 | Create initial task plan |  | baseline start none → 2007-01-23; baseline finish none → 2007-01-23 |
| 5 | **Elaboration** |  | baseline start none → 2007-01-23; baseline finish none → 2007-02-13 |
| 6 | **Requiements meetings** |  | baseline start none → 2007-01-23; baseline finish none → 2007-01-31 |
| 7 | Requirements meeting (CGEMS, Rambrandt) |  | baseline start none → 2007-01-29; baseline finish none → 2007-01-29 |
| 8 | Requirements Meeting (caCORE API) |  | baseline start none → 2007-01-23; baseline finish none → 2007-01-23 |
| 9 | Requirements meeting (caAdapter) |  | baseline start none → 2007-01-30; baseline finish none → 2007-01-30 |
| 10 | Requirements meeting (caDSR) |  | baseline start none → 2007-01-30; baseline finish none → 2007-01-30 |
| 11 | Requirements meeting (caGRID) |  | baseline start none → 2007-01-31; baseline finish none → 2007-01-31 |
| 12 | Requirements meeting (other teams) |  | baseline start none → 2007-01-29; baseline finish none → 2007-01-30 |
| 13 | **Scope Document** |  | baseline start none → 2007-01-26; baseline finish none → 2007-02-13 |
| 14 | Prepare list of scope items on gforge |  | baseline start none → 2007-01-26; baseline finish none → 2007-01-26 |
| 15 | Draft scope document |  | baseline start none → 2007-01-29; baseline finish none → 2007-01-31 |
| 16 | Estimate LOE for Iteration 1 - 3 scope items |  | baseline start none → 2007-02-01; baseline finish none → 2007-02-01 |
| 17 | Prepare risk list |  | baseline start none → 2007-02-02; baseline finish none → 2007-02-02 |
| 18 | NCICB Review of scope document |  | baseline start none → 2007-02-08; baseline finish none → 2007-02-12 |
| 19 | Revise scope document |  | baseline start none → 2007-02-13; baseline finish none → 2007-02-13 |
| 20 | **QA Actvities** |  | baseline start none → 2007-01-23; baseline finish none → 2007-01-31 |
| 21 | Setup QA repository |  | baseline start none → 2007-01-23; baseline finish none → 2007-01-23 |
| 22 | Modify Unit test cases and data |  | baseline start none → 2007-01-23; baseline finish none → 2007-01-29 |
| 23 | Validate test case |  | baseline start none → 2007-01-30; baseline finish none → 2007-01-31 |
| 24 | Revise task plan |  | baseline start none → 2007-01-23; baseline finish none → 2007-01-23 |
| 25 | **Construction** | 51% → 54% | baseline start none → 2007-01-23; baseline finish none → 2007-08-20 |
| 26 | **Iteration 1** |  | baseline start none → 2007-01-23; baseline finish none → 2007-03-28 |
| 27 | **SDK 3.2.1 Release** |  | baseline start none → 2007-01-23; baseline finish none → 2007-02-14 |
| 28 | Integrate new UI |  | baseline start none → 2007-01-23; baseline finish none → 2007-02-14 |
| 29 | **QA** |  | baseline start none → 2007-02-15; baseline finish none → 2007-02-19 |
| 30 | Test new UI |  | baseline start none → 2007-02-15; baseline finish none → 2007-02-19 |
| 31 | **caGrid Integration** |  | baseline start none → 2007-02-12; baseline finish none → 2007-03-28 |
| 32 | **Support multiple concurrent users on the same ApplicationService** |  | baseline start none → 2007-02-12; baseline finish none → 2007-03-01 |
| 33 | Design |  | baseline start none → 2007-02-12; baseline finish none → 2007-02-14 |
| 34 | Prototype |  | baseline start none → 2007-02-15; baseline finish none → 2007-02-19 |
| 35 | Design Review |  | baseline start none → 2007-02-20; baseline finish none → 2007-02-20 |
| 36 | Design Update/Prototype |  | baseline start none → 2007-02-20; baseline finish none → 2007-02-23 |
| 37 | Development |  | baseline start none → 2007-02-26; baseline finish none → 2007-03-01 |
| 38 | Use documentation in the Java docs (GF#1243) & Integrate JavaDocs in the web system |  | baseline start none → 2007-02-23; baseline finish none → 2007-02-27 |
| 39 | **Security** |  | baseline start none → 2007-02-27; baseline finish none → 2007-03-13 |
| 40 | Implement Security in Thick Client |  | baseline start none → 2007-02-27; baseline finish none → 2007-03-05 |
| 41 | **Integration of new Installation Process into SDK** |  | baseline start none → 2007-03-02; baseline finish none → 2007-03-06 |
| 42 | Code |  | baseline start none → 2007-03-02; baseline finish none → 2007-03-06 |
| 43 | **Upgrade to CSM to Support Grid ability to leverage new CSM installation steps** |  | baseline start none → 2007-03-07; baseline finish none → 2007-03-09 |
| 44 | Code |  | baseline start none → 2007-03-07; baseline finish none → 2007-03-09 |
| 45 | **Configurable Authentication and Authorization for SDK Generated System** |  | baseline start none → 2007-03-08; baseline finish none → 2007-03-13 |
| 46 | Code |  | baseline start none → 2007-03-08; baseline finish none → 2007-03-13 |
| 47 | **Documentation** |  | baseline start none → 2007-03-12; baseline finish none → 2007-03-13 |
| 48 | SDK Programmer's/Technical Guide |  | baseline start none → 2007-03-12; baseline finish none → 2007-03-13 |
| 49 | Castor related work was performed on SDK 3.1 branch move to SDK 3.2 |  | baseline start none → 2007-02-15; baseline finish none → 2007-02-19 |
| 50 | Castor mapping for inheritance defect (GF#4031) |  | baseline start none → 2007-02-20; baseline finish none → 2007-02-20 |
| 51 | **Performance due to unnecessary nested sub-selects** |  | baseline start none → 2007-02-20; baseline finish none → 2007-02-28 |
| 52 | Analysis/Development |  | baseline start none → 2007-02-20; baseline finish none → 2007-02-28 |
| 53 | Provide the ability to only generate an XSD and castor mapping based on xmi input |  | baseline start none → 2007-02-28; baseline finish none → 2007-03-02 |
| 54 | Ability to generate interfaces/POJO for domain classes in our UML model |  | baseline start none → 2007-03-02; baseline finish none → 2007-03-07 |
| 55 | **QA** |  | baseline start none → 2007-02-20; baseline finish none → 2007-03-26 |
| 56 | Test Development |  | baseline start none → 2007-02-20; baseline finish none → 2007-02-28 |
| 57 | Test Execution |  | baseline start none → 2007-03-14; baseline finish none → 2007-03-26 |
| 58 | Test Support |  | baseline start none → 2007-03-14; baseline finish none → 2007-03-26 |
| 59 | **Documentation** |  | baseline start none → 2007-03-20; baseline finish none → 2007-03-27 |
| 60 | Update Programmers Guide, Release Notes |  | baseline start none → 2007-03-20; baseline finish none → 2007-03-23 |
| 61 | Review |  | baseline start none → 2007-03-26; baseline finish none → 2007-03-26 |
| 62 | Final |  | baseline start none → 2007-03-27; baseline finish none → 2007-03-27 |
| 63 | Release Packaging |  | baseline start none → 2007-03-21; baseline finish none → 2007-03-28 |
| 64 | **Iteration Plan** |  | baseline start none → 2007-03-27; baseline finish none → 2007-03-28 |
| 65 | Review Client Feature Request/Revise Task Plan |  | baseline start none → 2007-03-27; baseline finish none → 2007-03-28 |
| 66 | 3.2.1 Release Complete |  | baseline start none → 2007-03-28; baseline finish none → 2007-03-28 |
| 67 | **Iteration 2** | 36% → 39% | baseline start none → 2007-03-27; baseline finish none → 2007-06-21 |
| 68 | **SDK 4.0 Release (Beta 1)** | 36% → 39% | baseline start none → 2007-03-27; baseline finish none → 2007-06-21 |
| 69 | Update Requirements Document |  | baseline start none → 2007-03-29; baseline finish none → 2007-04-04 |
| 70 | **Boot Camp Support** |  | baseline start none → 2007-04-09; baseline finish none → 2007-04-26 |

| ID | Task | Start | Finish | Complete | Total float | Predecessors | Other |
| --- | --- | --- | --- | --- | --- | --- | --- |
| 71 | Presentation |  |  |  |  |  | baseline start none → 2007-04-09; baseline finish none → 2007-04-12 |
| 72 | Demo |  |  |  |  |  | baseline start none → 2007-04-18; baseline finish none → 2007-04-19 |
| 73 | Demo |  |  |  |  |  | baseline start none → 2007-04-25; baseline finish none → 2007-04-26 |
| 74 | **Upgrade Code Generation Framework** |  |  | 46% → 52% |  |  | baseline start none → 2007-03-27; baseline finish none → 2007-06-07 |
| 75 | Prototype of new Code Gen Framework |  |  |  |  |  | baseline start none → 2007-03-27; baseline finish none → 2007-04-09 |
| 76 | Prototype use of ACEGI/CSM for Security |  |  |  |  |  | baseline start none → 2007-03-27; baseline finish none → 2007-04-09 |
| 77 | **Design** |  |  |  |  |  | baseline start none → 2007-04-13; baseline finish none → 2007-04-25 |
| 78 | Overview |  |  |  |  |  | baseline start none → 2007-04-13; baseline finish none → 2007-04-13 |
| 79 | Review of Approach |  |  |  |  |  | baseline start none → 2007-04-16; baseline finish none → 2007-04-16 |
| 80 | Code Gen Detail Design |  |  |  |  |  | baseline start none → 2007-04-16; baseline finish none → 2007-04-18 |
| 81 | ACEGI/CSM Security Detail Design |  |  |  |  |  | baseline start none → 2007-04-20; baseline finish none → 2007-04-23 |
| 82 | Design/Prototype Review |  |  |  |  |  | baseline start none → 2007-04-24; baseline finish none → 2007-04-24 |
| 83 | Design Update |  |  |  |  |  | baseline start none → 2007-04-24; baseline finish none → 2007-04-25 |
| 84 | Implement new code generation framework |  |  | 30% → 70% |  |  | baseline start none → 2007-04-27; baseline finish none → 2007-05-01 |
| 85 | Rewrite bean generation for JDK 1.5 |  |  |  |  |  | baseline start none → 2007-05-02; baseline finish none → 2007-05-03 |
| 86 | Rewrite O/R mapping generation (.hbm.xml, .cfg.xml, ehcache.xml) |  |  |  |  |  | baseline start none → 2007-05-04; baseline finish none → 2007-05-31 |
| 87 | **Implement class cache for JDK 1.5** | 2007-05-11 → 2007-05-17 (+6d) | 2007-05-22 → 2007-05-28 (+6d) |  |  | 116, 120 → 93 | baseline start none → 2007-05-11; baseline finish none → 2007-05-22 |
| 88 | Development | 2007-05-11 → 2007-05-17 (+6d) | 2007-05-17 → 2007-05-23 (+6d) |  |  |  | baseline start none → 2007-05-11; baseline finish none → 2007-05-17 |
| 89 | Integration of class cache in web tier | 2007-05-17 → 2007-05-23 (+6d) | 2007-05-18 → 2007-05-24 (+6d) |  |  |  | baseline start none → 2007-05-17; baseline finish none → 2007-05-18 |
| 90 | Change nestedCriteria to use class cache | 2007-05-18 → 2007-05-24 (+6d) | 2007-05-21 → 2007-05-25 (+4d) |  |  |  | baseline start none → 2007-05-18; baseline finish none → 2007-05-21 |
| 91 | Change CQL translator to use class cache | 2007-05-21 → 2007-05-25 (+4d) | 2007-05-22 → 2007-05-28 (+6d) |  |  |  | baseline start none → 2007-05-21; baseline finish none → 2007-05-22 |
| 92 | Rewrite XML schema generaotor | 2007-05-22 → 2007-05-11 A (-11d) | 2007-05-24 → 2007-05-15 A (-9d) | 0% → 100% | 1.5d → none | 87 → 116, 120 | baseline start none → 2007-05-22; baseline finish none → 2007-05-24 |
| 93 | Rewrite XML mapping file generator | 2007-05-24 → 2007-05-15 A (-9d) | 2007-05-28 → 2007-05-17 (-11d) | 0% → 20% |  |  | baseline start none → 2007-05-24; baseline finish none → 2007-05-28 |
| 94 | Build Script |  |  |  |  | 93 → 87 | baseline start none → 2007-05-28; baseline finish none → 2007-05-30 |
| 95 | Supporting files generation (coreBeans.properties, DAOConfig.xml) |  |  |  |  |  | baseline start none → 2007-06-01; baseline finish none → 2007-06-07 |
| 96 | **QA** |  |  |  |  |  | baseline start none → 2007-04-30; baseline finish none → 2007-06-21 |
| 97 | Test Development |  |  |  |  |  | baseline start none → 2007-04-30; baseline finish none → 2007-05-11 |
| 98 | Test Execution |  |  |  |  |  | baseline start none → 2007-06-08; baseline finish none → 2007-06-21 |
| 99 | Test Support |  |  |  |  |  | baseline start none → 2007-06-08; baseline finish none → 2007-06-21 |
| 100 | Documentation |  |  |  |  |  | baseline start none → 2007-06-08; baseline finish none → 2007-06-21 |
| 101 | **Iteration Plan** | 2007-05-22 → 2007-05-28 (+6d) | 2007-05-23 → 2007-05-29 (+6d) |  | 103.5d → 99.5d |  | baseline start none → 2007-05-22; baseline finish none → 2007-05-23 |
| 102 | Review Client Feature Request/Revise Task Plan | 2007-05-22 → 2007-05-28 (+6d) | 2007-05-23 → 2007-05-29 (+6d) |  | 103.5d → 99.5d |  | baseline start none → 2007-05-22; baseline finish none → 2007-05-23 |
| 103 | **Iteration 3** |  |  | 85% → 97% |  |  | baseline start none → 2007-03-07; baseline finish none → 2007-05-11 |
| 104 | **Release 4.0 (Open Source UML Tool Support)** |  |  | 85% → 97% |  |  | baseline start none → 2007-03-07; baseline finish none → 2007-05-11 |
| 105 | Update Requirements Document |  |  |  |  |  | baseline start none → 2007-04-05; baseline finish none → 2007-04-11 |
| 106 | **Open Source Modeling Tool XMI Processor** |  |  |  |  |  | baseline start none → 2007-03-07; baseline finish none → 2007-04-27 |
| 107 | Evaluation |  |  |  |  |  | baseline start none → 2007-03-07; baseline finish none → 2007-04-02 |
| 108 | Present Evaluation for review |  |  |  |  |  | baseline start none → 2007-04-02; baseline finish none → 2007-04-02 |
| 109 | Build SDK Test Model |  |  |  |  |  | baseline start none → 2007-04-02; baseline finish none → 2007-04-05 |
| 110 | Revise Evaluation/Finalize On Tool |  |  |  |  |  | baseline start none → 2007-04-05; baseline finish none → 2007-04-09 |
| 111 | Design |  |  |  |  |  | baseline start none → 2007-04-10; baseline finish none → 2007-04-11 |
| 112 | Design Review |  |  |  |  |  | baseline start none → 2007-04-12; baseline finish none → 2007-04-12 |
| 113 | Finalize Design |  |  |  |  |  | baseline start none → 2007-04-13; baseline finish none → 2007-04-13 |
| 114 | Evaluate LOE/Revise Task Plan for Development |  |  |  |  |  | baseline start none → 2007-04-13; baseline finish none → 2007-04-19 |
| 115 | Development |  |  |  |  |  | baseline start none → 2007-04-13; baseline finish none → 2007-04-27 |
| 116 | **QA** |  |  |  |  |  | baseline start none → 2007-04-13; baseline finish none → 2007-05-11 |
| 117 | Test Development |  |  |  |  |  | baseline start none → 2007-04-13; baseline finish none → 2007-04-20 |
| 118 | Test Execution |  |  |  |  |  | baseline start none → 2007-04-27; baseline finish none → 2007-05-11 |
| 119 | Test Support |  |  |  |  |  | baseline start none → 2007-04-27; baseline finish none → 2007-05-09 |
| 120 | Release Packaging | 2007-04-27 A | 2007-05-09 A | 0% → 100% | 3.5d → none |  | baseline start none → 2007-04-27; baseline finish none → 2007-05-09 |
| 121 | **Iteration Plan** |  |  |  |  |  | baseline start none → 2007-04-27; baseline finish none → 2007-05-02 |
| 122 | Review Client Feature Request/Revise Task Plan |  |  |  |  |  | baseline start none → 2007-04-27; baseline finish none → 2007-05-02 |
| 123 | Iteration 3 Complete |  |  |  |  |  | baseline start none → 2007-05-11; baseline finish none → 2007-05-11 |
| 124 | **Iteration 4** |  |  |  |  |  | baseline start none → 2007-05-30; baseline finish none → 2007-08-20 |
| 125 | **Release 4.0 (Final Release)** |  |  |  |  |  | baseline start none → 2007-05-30; baseline finish none → 2007-08-20 |
| 126 | **Change architecture of Application Service** |  |  |  |  |  | baseline start none → 2007-06-22; baseline finish none → 2007-07-06 |
| 127 | Design |  |  |  |  |  | baseline start none → 2007-06-22; baseline finish none → 2007-06-27 |
| 128 | Design Review |  |  |  |  |  | baseline start none → 2007-06-28; baseline finish none → 2007-06-28 |
| 129 | Design Update |  |  |  |  |  | baseline start none → 2007-06-28; baseline finish none → 2007-06-28 |
| 130 | Development |  |  |  |  |  | baseline start none → 2007-06-28; baseline finish none → 2007-07-06 |
| 131 | **Support multiple ApplicationService in same JVM** |  |  |  |  |  | baseline start none → 2007-07-06; baseline finish none → 2007-07-16 |
| 132 | Development/Unit Test |  |  |  |  |  | baseline start none → 2007-07-06; baseline finish none → 2007-07-16 |
| 133 | **Annotation Based Web Services** |  |  |  |  |  | baseline start none → 2007-05-30; baseline finish none → 2007-06-18 |
| 134 | Design |  |  |  |  |  | baseline start none → 2007-05-30; baseline finish none → 2007-06-04 |
| 135 | Design Review |  |  |  |  |  | baseline start none → 2007-06-04; baseline finish none → 2007-06-04 |
| 136 | Design Update |  |  |  |  |  | baseline start none → 2007-06-04; baseline finish none → 2007-06-04 |
| 137 | Development/Unit Test |  |  |  |  |  | baseline start none → 2007-06-05; baseline finish none → 2007-06-18 |
| 138 | **Remove duplication of code due to security injection - ACEGI Framework** |  |  |  |  |  | baseline start none → 2007-06-19; baseline finish none → 2007-07-02 |
| 139 | Development/Unit Test |  |  |  |  |  | baseline start none → 2007-06-19; baseline finish none → 2007-07-02 |
| 140 | **Re-architect information in SpringConfig.xml and DAOConfig.xml** |  |  |  |  |  | baseline start none → 2007-07-03; baseline finish none → 2007-07-10 |

| ID | Task | Other |
| --- | --- | --- |
| 141 | Design | baseline start none → 2007-07-03; baseline finish none → 2007-07-03 |
| 142 | Design Review | baseline start none → 2007-07-05; baseline finish none → 2007-07-05 |
| 143 | Design Update | baseline start none → 2007-07-05; baseline finish none → 2007-07-05 |
| 144 | Development | baseline start none → 2007-07-05; baseline finish none → 2007-07-10 |
| 145 | **Improved logging/trace messages** | baseline start none → 2007-07-10; baseline finish none → 2007-07-12 |
| 146 | Development | baseline start none → 2007-07-10; baseline finish none → 2007-07-12 |
| 147 | Release to QA | baseline start none → 2007-07-16; baseline finish none → 2007-07-17 |
| 148 | **QA** | baseline start none → 2007-06-04; baseline finish none → 2007-07-30 |
| 149 | Test Development | baseline start none → 2007-06-04; baseline finish none → 2007-06-11 |
| 150 | Test Execution | baseline start none → 2007-07-16; baseline finish none → 2007-07-30 |
| 151 | Test Support | baseline start none → 2007-07-03; baseline finish none → 2007-07-17 |
| 152 | **Documentation** | baseline start none → 2007-07-03; baseline finish none → 2007-07-17 |
| 153 | Update Documentation | baseline start none → 2007-07-03; baseline finish none → 2007-07-17 |
| 154 | Integration Testing Support | baseline start none → 2007-07-30; baseline finish none → 2007-08-20 |
| 155 | **Transition** | baseline start none → 2007-07-30; baseline finish none → 2007-09-06 |
| 156 | **Documentation** | baseline start none → 2007-07-30; baseline finish none → 2007-08-28 |
| 157 | New users guide | baseline start none → 2007-07-30; baseline finish none → 2007-08-22 |
| 158 | New technical guide | baseline start none → 2007-07-30; baseline finish none → 2007-08-20 |
| 159 | technical guide help | baseline start none → 2007-08-22; baseline finish none → 2007-08-28 |
| 160 | How to examples | baseline start none → 2007-08-20; baseline finish none → 2007-08-27 |
| 161 | **Production Packaging** | baseline start none → 2007-08-27; baseline finish none → 2007-09-06 |
| 162 | Update Download Site | baseline start none → 2007-08-27; baseline finish none → 2007-08-29 |
| 163 | Develop Production promotion Documentation | baseline start none → 2007-08-28; baseline finish none → 2007-08-30 |
| 164 | Push to Produciton | baseline start none → 2007-08-30; baseline finish none → 2007-09-06 |
| 165 | 4.0 Release Complete | baseline start none → 2007-09-06; baseline finish none → 2007-09-06 |
| 166 | **caCORE SDK v4.X** | baseline start none → 2007-08-20; baseline finish none → 2007-10-16 |
| 167 | **Iteration 1** | baseline start none → 2007-08-20; baseline finish none → 2007-10-16 |
| 168 | **Elaboration** | baseline start none → 2007-08-20; baseline finish none → 2007-08-23 |
| 169 | Review Client Feature Request/Revise Task Plan | baseline start none → 2007-08-20; baseline finish none → 2007-08-23 |
| 170 | **Construction** | baseline start none → 2007-08-29; baseline finish none → 2007-10-10 |
| 171 | **Support interfaces (including marker interfaces), abstract class, enumeration** | baseline start none → 2007-08-29; baseline finish none → 2007-09-18 |
| 172 | Design | baseline start none → 2007-08-29; baseline finish none → 2007-08-30 |
| 173 | Design Review | baseline start none → 2007-08-31; baseline finish none → 2007-08-31 |
| 174 | Design Update | baseline start none → 2007-08-31; baseline finish none → 2007-08-31 |
| 175 | Development/Unit Test | baseline start none → 2007-09-03; baseline finish none → 2007-09-18 |
| 176 | **Allow user to Specify name of the remoteService.xml file externally** | baseline start none → 2007-09-19; baseline finish none → 2007-09-20 |
| 177 | Development/Unit Test | baseline start none → 2007-09-19; baseline finish none → 2007-09-20 |
| 178 | **Allow to use composition/class as attributes** | baseline start none → 2007-08-30; baseline finish none → 2007-09-07 |
| 179 | Design | baseline start none → 2007-08-30; baseline finish none → 2007-08-31 |
| 180 | Design Review | baseline start none → 2007-08-31; baseline finish none → 2007-08-31 |
| 181 | Design Update | baseline start none → 2007-08-31; baseline finish none → 2007-08-31 |
| 182 | Development/Unit Test | baseline start none → 2007-09-03; baseline finish none → 2007-09-07 |
| 183 | **Transient Variable Support** | baseline start none → 2007-09-10; baseline finish none → 2007-09-19 |
| 184 | Design | baseline start none → 2007-09-10; baseline finish none → 2007-09-10 |
| 185 | Design Review | baseline start none → 2007-09-11; baseline finish none → 2007-09-11 |
| 186 | Design Update | baseline start none → 2007-09-11; baseline finish none → 2007-09-11 |
| 187 | Development/Unit Test | baseline start none → 2007-09-11; baseline finish none → 2007-09-19 |
| 188 | **QA** | baseline start none → 2007-09-03; baseline finish none → 2007-10-02 |
| 189 | Test Development | baseline start none → 2007-09-03; baseline finish none → 2007-09-07 |
| 190 | Test Execution | baseline start none → 2007-09-21; baseline finish none → 2007-10-02 |
| 191 | Test Support | baseline start none → 2007-09-21; baseline finish none → 2007-10-02 |
| 192 | **Integration Testing** | baseline start none → 2007-10-03; baseline finish none → 2007-10-10 |
| 193 | Promote to Staging | baseline start none → 2007-10-03; baseline finish none → 2007-10-03 |
| 194 | Test | baseline start none → 2007-10-03; baseline finish none → 2007-10-10 |
| 195 | Test Support | baseline start none → 2007-10-03; baseline finish none → 2007-10-10 |
| 196 | **Transition** | baseline start none → 2007-09-21; baseline finish none → 2007-10-16 |
| 197 | **Documentation** | baseline start none → 2007-09-21; baseline finish none → 2007-10-04 |
| 198 | users guide | baseline start none → 2007-09-21; baseline finish none → 2007-09-27 |
| 199 | technical guide | baseline start none → 2007-09-21; baseline finish none → 2007-10-04 |
| 200 | How to examples | baseline start none → 2007-09-28; baseline finish none → 2007-10-04 |
| 201 | **Production Packaging** | baseline start none → 2007-10-05; baseline finish none → 2007-10-16 |
| 202 | Update Download Site | baseline start none → 2007-10-05; baseline finish none → 2007-10-10 |
| 203 | Develop Production promotion Documentation | baseline start none → 2007-10-05; baseline finish none → 2007-10-10 |
| 204 | Push to Produciton | baseline start none → 2007-10-11; baseline finish none → 2007-10-16 |

## Version 15 (saved 2007-06-11)

Note of the change: Updated after meeting with entire team for status

Last finish 2007-10-16 → 2007-10-26 (+10d). Complete tasks 70 → 78.

Added:

| ID | Task | Duration | Start | Finish | Predecessors | Constraint | Resources |
| --- | --- | --- | --- | --- | --- | --- | --- |
| 92 | XMI Processor Refactoring | 1d | 2007-06-08 A | 2007-06-11 A | 91 |  | Dan |
| 97 | Presentation for caCORE Users | 1d | 2007-06-01 A | 2007-06-01 A | 86 |  | Satish |
| 142 | XMI Parser - Stereotype Writing | 1d | 2007-07-25 | 2007-07-25 | 140 |  | Dan |
| 152 | CSM Testing of Iteration 3,4 Complete | 0d | 2007-07-17 | 2007-07-17 |  | start no earlier than 2007-07-17 |  |

Changed:

| ID | Task | Start | Finish | Duration | Complete | Total float | Predecessors | Other |
| --- | --- | --- | --- | --- | --- | --- | --- | --- |
| 1 | **caCORE SDK v4.0** |  | 2007-09-06 → 2007-09-17 (+11d) | 160.5d? → 168d? | 51% → 58% |  |  |  |
| 25 | **Construction** |  | 2007-08-20 → 2007-08-30 (+10d) | 145.5d? → 153.5d? | 54% → 62% | 41.5d → 41d |  |  |
| 67 | **Iteration 2** |  | 2007-06-21 → 2007-06-25 (+4d) | 63d? → 65d? | 39% → 66% | 82d → 87.5d |  |  |
| 68 | **SDK 4.0 Release (Beta 1)** |  | 2007-06-21 → 2007-06-25 (+4d) | 63d? → 65d? | 39% → 66% | 82d → 87.5d |  |  |
| 74 | **Upgrade Code Generation Framework** |  | 2007-06-07 → 2007-06-11 (+4d) | 53d? → 55d? | 52% → 98% | 0d → 4.5d |  |  |
| 84 | Implement new code generation framework |  | 2007-05-01 A |  | 70% → 100% | 0d → none |  |  |
| 85 | Rewrite bean generation for JDK 1.5 | 2007-05-02 A |  |  | 0% → 98% | 0d → 29.5d |  |  |
| 86 | Rewrite O/R mapping generation (.hbm.xml, .cfg.xml, ehcache.xml) | 2007-05-04 A |  |  | 0% → 90% | 0d → 10.5d |  |  |
| 87 | **Implement class cache for JDK 1.5** | 2007-05-17 A | 2007-05-28 → 2007-06-08 (+11d) | 7d → 16d | 0% → 99% | 1.5d → 6d |  |  |
| 88 | Development | 2007-05-17 A | 2007-05-23 A |  | 0% → 100% | 1.5d → none |  |  |
| 89 | Integration of class cache in web tier | 2007-05-23 A | 2007-05-24 A |  | 0% → 100% | 1.5d → none |  |  |
| 90 | Change nestedCriteria to use class cache | 2007-05-24 A |  |  | 0% → 90% | 1.5d → 16d |  |  |
| 91 | Change CQL translator to use class cache | 2007-05-25 A | 2007-05-28 → 2007-06-08 A (+11d) |  | 0% → 100% | 1.5d → none |  |  |
| 93 | Rewrite XML schema generaotor |  | 2007-05-15 A → 2007-05-15 |  | 100% → 95% | none → 24d |  |  |
| 94 | Rewrite XML mapping file generator |  | 2007-05-17 A |  | 20% → 100% | 1.5d → none |  |  |
| 95 | Build Script | 2007-05-28 → 2007-06-08 A (+11d) | 2007-05-30 → 2007-06-11 A (+12d) |  | 0% → 100% | 1.5d → none | 87 → 96 | resources Dan → Satish |
| 96 | Provide Generic Test Program for Testing O/R Mapping Files for DAO | 2007-06-01 → 2007-06-04 A (+3d) | 2007-06-07 A | 5d → 4d | 0% → 100% | 0d → none | 86 → 97 | was named Supporting files generation (coreBeans.properties, DAOConfig.xml) |
| 98 | **QA** | 2007-04-30 → 2007-06-08 (+39d) | 2007-06-21 → 2007-06-25 (+4d) | 39d → 12d |  | 29d → 6.5d |  |  |
| 99 | Test Development | 2007-04-30 → 2007-06-08 (+39d) | 2007-05-11 → 2007-06-14 (+34d) | 10d → 5d |  | 111d → 94.5d |  | constraint start no earlier than 2007-04-30 → start no earlier than 2007-06-08; resources Steve → QA |
| 100 | Test Execution | 2007-06-08 → 2007-06-12 (+4d) | 2007-06-21 → 2007-06-25 (+4d) |  |  | 82d → 87.5d |  | resources Steve → QA |
| 101 | Test Support | 2007-06-08 → 2007-06-12 (+4d) | 2007-06-21 → 2007-06-25 (+4d) |  |  | 0d → 4.5d |  |  |
| 102 | Documentation | 2007-06-08 → 2007-06-12 (+4d) | 2007-06-21 → 2007-06-25 (+4d) |  |  | 0d → 4.5d |  |  |
| 103 | **Iteration Plan** | 2007-05-28 → 2007-06-08 (+11d) | 2007-05-29 → 2007-06-11 (+13d) |  |  | 99.5d → 98d |  |  |
| 104 | Review Client Feature Request/Revise Task Plan | 2007-05-28 → 2007-06-08 (+11d) | 2007-05-29 → 2007-06-11 (+13d) |  |  | 99.5d → 98d |  |  |
| 105 | **Iteration 3** |  |  |  | 97% → 99% | 111.5d → 119d |  |  |
| 106 | **Release 4.0 (Open Source UML Tool Support)** |  |  |  | 97% → 99% | 111.5d → 119d |  |  |
| 108 | **Open Source Modeling Tool XMI Processor** |  |  |  | 93% → 96% | 121.5d → 129d |  |  |
| 116 | Evaluate LOE/Revise Task Plan for Development |  |  |  | 50% → 75% | 127.5d → 135d |  |  |
| 119 | Test Development |  |  |  |  |  |  | resources Steve → QA |
| 120 | Test Execution |  |  |  |  |  |  | resources Steve → QA |
| 126 | **Iteration 4** | 2007-05-30 → 2007-06-11 (+12d) | 2007-08-20 → 2007-08-30 (+10d) |  |  | 1.5d → 0d |  |  |
| 127 | **Release 4.0 (Final Release)** | 2007-05-30 → 2007-06-11 (+12d) | 2007-08-20 → 2007-08-30 (+10d) |  |  | 1.5d → 0d |  |  |
| 128 | **Change architecture of Application Service** | 2007-06-22 → 2007-06-26 (+4d) | 2007-07-06 → 2007-07-10 (+4d) |  |  | 0d → 4.5d |  |  |
| 129 | Design | 2007-06-22 → 2007-06-26 (+4d) | 2007-06-27 → 2007-06-29 (+2d) |  |  | 0d → 4.5d |  |  |
| 130 | Design Review | 2007-06-28 → 2007-07-02 (+4d) | 2007-06-28 → 2007-07-02 (+4d) |  |  | 0d → 4.5d |  |  |
| 131 | Design Update | 2007-06-28 → 2007-07-02 (+4d) | 2007-06-28 → 2007-07-02 (+4d) |  |  | 0d → 4.5d |  |  |
| 132 | Development | 2007-06-28 → 2007-07-02 (+4d) | 2007-07-06 → 2007-07-10 (+4d) |  |  | 0d → 4.5d |  |  |
| 133 | **Support multiple ApplicationService in same JVM** | 2007-07-06 → 2007-07-10 (+4d) | 2007-07-16 → 2007-07-18 (+2d) |  |  | 0d → 4.5d |  |  |
| 134 | Development/Unit Test | 2007-07-06 → 2007-07-10 (+4d) | 2007-07-16 → 2007-07-18 (+2d) |  |  | 0d → 4.5d |  |  |
| 135 | **Annotation Based Web Services** | 2007-05-30 → 2007-06-11 (+12d) | 2007-06-18 → 2007-06-28 (+10d) |  |  | 1.5d → 0d |  |  |
| 136 | Design/Prototype | 2007-05-30 → 2007-06-11 (+12d) | 2007-06-04 → 2007-06-14 (+10d) |  |  | 1.5d → 0d | 95 → 92 | was named Design |
| 137 | Design Review | 2007-06-04 → 2007-06-14 (+10d) | 2007-06-04 → 2007-06-14 (+10d) |  |  | 1.5d → 0d |  |  |
| 138 | Design Update | 2007-06-04 → 2007-06-14 (+10d) | 2007-06-04 → 2007-06-14 (+10d) |  |  | 1.5d → 0d |  |  |
| 139 | Development/Unit Test | 2007-06-05 → 2007-06-15 (+10d) | 2007-06-18 → 2007-06-28 (+10d) |  |  | 1.5d → 0d |  |  |
| 140 | **Remove duplication of code due to security injection - ACEGI Framework** | 2007-06-19 → 2007-07-11 (+22d) | 2007-07-02 → 2007-07-24 (+22d) |  |  | 1.5d → 0d |  |  |
| 141 | Development/Unit Test | 2007-06-19 → 2007-07-11 (+22d) | 2007-07-02 → 2007-07-24 (+22d) |  |  | 1.5d → 0d | 135 → 148 |  |
| 143 | **Re-architect information in SpringConfig.xml and DAOConfig.xml** | 2007-07-03 → 2007-06-29 (-4d) | 2007-07-10 → 2007-07-06 (-4d) |  |  | 1.5d → 0d |  |  |
| 144 | Design | 2007-07-03 → 2007-06-29 (-4d) | 2007-07-03 → 2007-06-29 (-4d) |  |  | 1.5d → 0d | 140 → 135 |  |
| 145 | Design Review | 2007-07-05 → 2007-07-02 (-3d) | 2007-07-05 → 2007-07-02 (-3d) |  |  | 1.5d → 0d |  |  |
| 146 | Design Update | 2007-07-05 → 2007-07-02 (-3d) | 2007-07-05 → 2007-07-02 (-3d) |  |  | 1.5d → 0d |  |  |
| 147 | Development | 2007-07-05 → 2007-07-02 (-3d) | 2007-07-10 → 2007-07-06 (-4d) |  |  | 1.5d → 0d |  |  |
| 148 | **Improved logging/trace messages** | 2007-07-10 → 2007-07-06 (-4d) | 2007-07-12 → 2007-07-10 (-2d) |  |  | 1.5d → 0d |  |  |
| 149 | Development | 2007-07-10 → 2007-07-06 (-4d) | 2007-07-12 → 2007-07-10 (-2d) |  |  | 1.5d → 0d |  |  |
| 150 | Release to QA | 2007-07-16 → 2007-07-25 (+9d) | 2007-07-17 → 2007-07-25 (+8d) |  |  | 65.5d → 0d | 133, 148 → 133, 148, 140 |  |
| 151 | **QA** | 2007-06-04 → 2007-07-17 (+43d) | 2007-07-30 → 2007-08-08 (+9d) | 39d → 17d |  |  |  |  |
| 153 | Test Development | 2007-06-04 → 2007-07-17 (+43d) | 2007-06-11 → 2007-07-25 (+44d) | 5d → 7d |  | 34d → 0d | 136 → 152 | resources Steve → QA |
| 154 | Test Execution | 2007-07-16 → 2007-07-26 (+10d) | 2007-07-30 → 2007-08-08 (+9d) |  |  |  | 133, 148 → 150, 153 | resources Steve → QA |
| 155 | Test Support | 2007-07-03 → 2007-07-26 (+23d) | 2007-07-17 → 2007-08-08 (+22d) |  |  | 8.5d → 0d | 140, 135 → 150, 153 |  |
| 156 | **Documentation** | 2007-07-03 → 2007-07-25 (+22d) | 2007-07-17 → 2007-08-07 (+21d) |  |  | 65d → 57.5d |  |  |
| 157 | Update Documentation | 2007-07-03 → 2007-07-25 (+22d) | 2007-07-17 → 2007-08-07 (+21d) |  |  | 65d → 57.5d |  |  |
| 158 | Integration Testing Support | 2007-07-30 → 2007-08-09 (+10d) | 2007-08-20 → 2007-08-30 (+10d) | 15d → 15.5d |  | 38.5d → 38d |  |  |
| 159 | **Transition** | 2007-07-30 → 2007-08-09 (+10d) | 2007-09-06 → 2007-09-17 (+11d) |  |  |  |  |  |
| 160 | **Documentation** | 2007-07-30 → 2007-08-09 (+10d) | 2007-08-28 → 2007-09-06 (+9d) |  |  |  |  |  |
| 161 | New users guide | 2007-07-30 → 2007-08-09 (+10d) | 2007-08-22 → 2007-08-31 (+9d) |  |  |  |  |  |
| 162 | New technical guide | 2007-07-30 → 2007-08-09 (+10d) | 2007-08-20 → 2007-08-29 (+9d) |  |  |  |  |  |
| 163 | technical guide help | 2007-08-22 → 2007-09-03 (+12d) | 2007-08-28 → 2007-09-06 (+9d) |  |  |  |  |  |
| 164 | How to examples | 2007-08-20 → 2007-08-30 (+10d) | 2007-08-27 → 2007-09-05 (+9d) |  |  |  |  |  |
| 165 | **Production Packaging** | 2007-08-27 → 2007-09-06 (+10d) | 2007-09-06 → 2007-09-17 (+11d) |  |  |  |  |  |
| 166 | Update Download Site | 2007-08-27 → 2007-09-06 (+10d) | 2007-08-29 → 2007-09-07 (+9d) |  |  |  |  |  |
| 167 | Develop Production promotion Documentation | 2007-08-28 → 2007-09-07 (+10d) | 2007-08-30 → 2007-09-10 (+11d) |  |  |  |  |  |

| ID | Task | Start | Finish | Duration | Total float | Other |
| --- | --- | --- | --- | --- | --- | --- |
| 168 | Push to Produciton | 2007-08-30 → 2007-09-11 (+12d) | 2007-09-06 → 2007-09-17 (+11d) |  |  |  |
| 169 | 4.0 Release Complete | 2007-09-06 → 2007-09-17 (+11d) | 2007-09-06 → 2007-09-17 (+11d) |  |  |  |
| 170 | **caCORE SDK v4.X** | 2007-08-20 → 2007-08-30 (+10d) | 2007-10-16 → 2007-10-26 (+10d) | 41.5d → 41d |  |  |
| 171 | **Iteration 1** | 2007-08-20 → 2007-08-30 (+10d) | 2007-10-16 → 2007-10-26 (+10d) | 41.5d → 41d |  |  |
| 172 | **Elaboration** | 2007-08-20 → 2007-08-30 (+10d) | 2007-08-23 → 2007-09-04 (+12d) |  | 38.5d → 38d |  |
| 173 | Review Client Feature Request/Revise Task Plan | 2007-08-20 → 2007-08-30 (+10d) | 2007-08-23 → 2007-09-04 (+12d) |  | 38.5d → 38d |  |
| 174 | **Construction** | 2007-08-29 → 2007-09-10 (+12d) | 2007-10-10 → 2007-10-19 (+9d) |  |  |  |
| 175 | **Support interfaces (including marker interfaces), abstract class, enumeration** | 2007-08-29 → 2007-09-10 (+12d) | 2007-09-18 → 2007-09-28 (+10d) |  |  |  |
| 176 | Design | 2007-08-29 → 2007-09-10 (+12d) | 2007-08-30 → 2007-09-11 (+12d) |  |  |  |
| 177 | Design Review | 2007-08-31 → 2007-09-11 (+11d) | 2007-08-31 → 2007-09-11 (+11d) |  |  |  |
| 178 | Design Update | 2007-08-31 → 2007-09-12 (+12d) | 2007-08-31 → 2007-09-12 (+12d) |  |  |  |
| 179 | Development/Unit Test | 2007-09-03 → 2007-09-12 (+9d) | 2007-09-18 → 2007-09-28 (+10d) |  |  |  |
| 180 | **Allow user to Specify name of the remoteService.xml file externally** | 2007-09-19 → 2007-09-28 (+9d) | 2007-09-20 → 2007-10-02 (+12d) |  |  |  |
| 181 | Development/Unit Test | 2007-09-19 → 2007-09-28 (+9d) | 2007-09-20 → 2007-10-02 (+12d) |  |  |  |
| 182 | **Allow to use composition/class as attributes** | 2007-08-30 → 2007-09-11 (+12d) | 2007-09-07 → 2007-09-19 (+12d) |  |  |  |
| 183 | Design | 2007-08-30 → 2007-09-11 (+12d) | 2007-08-31 → 2007-09-11 (+11d) |  |  |  |
| 184 | Design Review | 2007-08-31 → 2007-09-12 (+12d) | 2007-08-31 → 2007-09-12 (+12d) |  |  |  |
| 185 | Design Update | 2007-08-31 → 2007-09-12 (+12d) | 2007-08-31 → 2007-09-12 (+12d) |  |  |  |
| 186 | Development/Unit Test | 2007-09-03 → 2007-09-12 (+9d) | 2007-09-07 → 2007-09-19 (+12d) |  |  |  |
| 187 | **Transient Variable Support** | 2007-09-10 → 2007-09-19 (+9d) | 2007-09-19 → 2007-09-28 (+9d) |  |  |  |
| 188 | Design | 2007-09-10 → 2007-09-19 (+9d) | 2007-09-10 → 2007-09-20 (+10d) |  |  |  |
| 189 | Design Review | 2007-09-11 → 2007-09-20 (+9d) | 2007-09-11 → 2007-09-20 (+9d) |  |  |  |
| 190 | Design Update | 2007-09-11 → 2007-09-20 (+9d) | 2007-09-11 → 2007-09-20 (+9d) |  |  |  |
| 191 | Development/Unit Test | 2007-09-11 → 2007-09-21 (+10d) | 2007-09-19 → 2007-09-28 (+9d) |  |  |  |
| 192 | **QA** | 2007-09-03 → 2007-09-12 (+9d) | 2007-10-02 → 2007-10-12 (+10d) |  |  |  |
| 193 | Test Development | 2007-09-03 → 2007-09-12 (+9d) | 2007-09-07 → 2007-09-19 (+12d) |  |  | resources Steve → QA |
| 194 | Test Execution | 2007-09-21 → 2007-10-02 (+11d) | 2007-10-02 → 2007-10-12 (+10d) |  |  | resources Steve → QA |
| 195 | Test Support | 2007-09-21 → 2007-10-02 (+11d) | 2007-10-02 → 2007-10-12 (+10d) |  |  |  |
| 196 | **Integration Testing** | 2007-10-03 → 2007-10-12 (+9d) | 2007-10-10 → 2007-10-19 (+9d) |  |  |  |
| 197 | Promote to Staging | 2007-10-03 → 2007-10-12 (+9d) | 2007-10-03 → 2007-10-12 (+9d) |  |  |  |
| 198 | Test | 2007-10-03 → 2007-10-15 (+12d) | 2007-10-10 → 2007-10-19 (+9d) |  |  | resources Steve → QA |
| 199 | Test Support | 2007-10-03 → 2007-10-15 (+12d) | 2007-10-10 → 2007-10-19 (+9d) |  |  |  |
| 200 | **Transition** | 2007-09-21 → 2007-10-02 (+11d) | 2007-10-16 → 2007-10-26 (+10d) |  |  |  |
| 201 | **Documentation** | 2007-09-21 → 2007-10-02 (+11d) | 2007-10-04 → 2007-10-16 (+12d) |  |  |  |
| 202 | users guide | 2007-09-21 → 2007-10-02 (+11d) | 2007-09-27 → 2007-10-09 (+12d) |  |  |  |
| 203 | technical guide | 2007-09-21 → 2007-10-02 (+11d) | 2007-10-04 → 2007-10-16 (+12d) |  |  |  |
| 204 | How to examples | 2007-09-28 → 2007-10-09 (+11d) | 2007-10-04 → 2007-10-16 (+12d) |  |  |  |
| 205 | **Production Packaging** | 2007-10-05 → 2007-10-16 (+11d) | 2007-10-16 → 2007-10-26 (+10d) |  |  |  |
| 206 | Update Download Site | 2007-10-05 → 2007-10-16 (+11d) | 2007-10-10 → 2007-10-22 (+12d) |  |  |  |
| 207 | Develop Production promotion Documentation | 2007-10-05 → 2007-10-16 (+11d) | 2007-10-10 → 2007-10-22 (+12d) |  |  |  |
| 208 | Push to Produciton | 2007-10-11 → 2007-10-22 (+11d) | 2007-10-16 → 2007-10-26 (+10d) |  |  |  |

## Version 16 (saved 2007-06-18)

Note of the change: updated per weekly status meeting

Last finish 2007-10-26 → 2007-10-24 (-2d). Complete tasks 78 → 81.

Removed: 142 XMI Parser - Stereotype Writing

Changed:

| ID | Task | Start | Finish | Duration | Complete | Total float | Predecessors | Other |
| --- | --- | --- | --- | --- | --- | --- | --- | --- |
| 1 | **caCORE SDK v4.0** |  | 2007-09-17 → 2007-09-13 (-4d) | 168d? → 166d? | 58% → 59% | 28.5d → 30.5d |  |  |
| 25 | **Construction** |  | 2007-08-30 → 2007-08-28 (-2d) | 153.5d? → 151.5d? | 62% → 63% | 41d → 43d |  |  |
| 67 | **Iteration 2** |  |  |  | 66% → 67% | 87.5d → 85.5d |  |  |
| 68 | **SDK 4.0 Release (Beta 1)** |  |  |  | 66% → 67% | 87.5d → 85.5d |  |  |
| 74 | **Upgrade Code Generation Framework** |  |  |  | 98% → 99% |  |  |  |
| 85 | Rewrite bean generation for JDK 1.5 |  | 2007-05-03 A |  | 98% → 100% | 29.5d → none |  |  |
| 86 | Rewrite O/R mapping generation (.hbm.xml, .cfg.xml, ehcache.xml) |  |  |  | 90% → 98% | 10.5d → 11.5d |  |  |
| 87 | **Implement class cache for JDK 1.5** |  | 2007-06-08 A |  | 99% → 100% | 6d → none |  |  |
| 90 | Change nestedCriteria to use class cache |  | 2007-05-25 A |  | 90% → 100% | 16d → none |  |  |
| 93 | Rewrite XML schema generaotor |  | 2007-05-15 A |  | 95% → 100% | 24d → none |  |  |
| 126 | **Iteration 4** |  | 2007-08-30 → 2007-08-28 (-2d) | 57d → 55d |  | 0d → 2d |  |  |
| 127 | **Release 4.0 (Final Release)** |  | 2007-08-30 → 2007-08-28 (-2d) | 57d → 55d |  | 0d → 2d |  |  |
| 149 | Final Release to QA | 2007-07-25 → 2007-07-24 (-1d) | 2007-07-25 → 2007-07-24 (-1d) | 1d → 0d |  | 0d → 2d |  | was named Release to QA; constraint none → start no earlier than 2007-07-24 |
| 150 | **QA** |  | 2007-08-08 → 2007-08-06 (-2d) | 17d → 15d |  |  |  |  |
| 152 | Test Development |  | 2007-07-25 → 2007-07-23 (-2d) | 7d → 5d |  |  |  |  |
| 153 | Test Execution | 2007-07-26 → 2007-07-24 (-2d) | 2007-08-08 → 2007-08-06 (-2d) |  |  |  | 149, 152 → 149FS-3d, 149, 152 | constraint none → start no earlier than 2007-07-24 |
| 154 | Test Support | 2007-07-26 → 2007-07-24 (-2d) | 2007-08-08 → 2007-08-06 (-2d) |  |  |  | 149, 152 → 149FS-3d, 152 | constraint none → start no earlier than 2007-07-23 |
| 157 | Integration Testing Support | 2007-08-09 → 2007-08-07 (-2d) | 2007-08-30 → 2007-08-28 (-2d) |  |  |  |  |  |
| 158 | **Transition** | 2007-08-09 → 2007-08-07 (-2d) | 2007-09-17 → 2007-09-13 (-4d) |  |  |  |  |  |
| 159 | **Documentation** | 2007-08-09 → 2007-08-07 (-2d) | 2007-09-06 → 2007-09-04 (-2d) |  |  |  |  |  |
| 160 | New users guide | 2007-08-09 → 2007-08-07 (-2d) | 2007-08-31 → 2007-08-29 (-2d) |  |  |  |  |  |
| 161 | New technical guide | 2007-08-09 → 2007-08-07 (-2d) | 2007-08-29 → 2007-08-27 (-2d) |  |  |  |  |  |
| 162 | technical guide help | 2007-09-03 → 2007-08-30 (-4d) | 2007-09-06 → 2007-09-04 (-2d) |  |  |  |  |  |
| 163 | How to examples | 2007-08-30 → 2007-08-28 (-2d) | 2007-09-05 → 2007-09-03 (-2d) |  |  |  |  |  |
| 164 | **Production Packaging** | 2007-09-06 → 2007-09-04 (-2d) | 2007-09-17 → 2007-09-13 (-4d) |  |  |  |  |  |
| 165 | Update Download Site | 2007-09-06 → 2007-09-04 (-2d) | 2007-09-07 → 2007-09-05 (-2d) |  |  |  |  |  |
| 166 | Develop Production promotion Documentation | 2007-09-07 → 2007-09-05 (-2d) | 2007-09-10 → 2007-09-06 (-4d) |  |  |  |  |  |
| 167 | Push to Produciton | 2007-09-11 → 2007-09-07 (-4d) | 2007-09-17 → 2007-09-13 (-4d) |  |  |  |  |  |
| 168 | 4.0 Release Complete | 2007-09-17 → 2007-09-13 (-4d) | 2007-09-17 → 2007-09-13 (-4d) |  |  |  |  |  |
| 169 | **caCORE SDK v4.X** | 2007-08-30 → 2007-08-28 (-2d) | 2007-10-26 → 2007-10-24 (-2d) |  |  |  |  |  |
| 170 | **Iteration 1** | 2007-08-30 → 2007-08-28 (-2d) | 2007-10-26 → 2007-10-24 (-2d) |  |  |  |  |  |
| 171 | **Elaboration** | 2007-08-30 → 2007-08-28 (-2d) | 2007-09-04 → 2007-08-31 (-4d) |  |  |  |  |  |
| 172 | Review Client Feature Request/Revise Task Plan | 2007-08-30 → 2007-08-28 (-2d) | 2007-09-04 → 2007-08-31 (-4d) |  |  |  |  |  |
| 173 | **Construction** | 2007-09-10 → 2007-09-06 (-4d) | 2007-10-19 → 2007-10-17 (-2d) |  |  |  |  |  |
| 174 | **Support interfaces (including marker interfaces), abstract class, enumeration** | 2007-09-10 → 2007-09-06 (-4d) | 2007-09-28 → 2007-09-26 (-2d) |  |  |  |  |  |
| 175 | Design | 2007-09-10 → 2007-09-06 (-4d) | 2007-09-11 → 2007-09-07 (-4d) |  |  |  |  |  |
| 176 | Design Review | 2007-09-11 → 2007-09-07 (-4d) | 2007-09-11 → 2007-09-07 (-4d) |  |  |  |  |  |
| 177 | Design Update | 2007-09-12 → 2007-09-10 (-2d) | 2007-09-12 → 2007-09-10 (-2d) |  |  |  |  |  |
| 178 | Development/Unit Test | 2007-09-12 → 2007-09-10 (-2d) | 2007-09-28 → 2007-09-26 (-2d) |  |  |  |  |  |
| 179 | **Allow user to Specify name of the remoteService.xml file externally** | 2007-09-28 → 2007-09-26 (-2d) | 2007-10-02 → 2007-09-28 (-4d) |  |  |  |  |  |
| 180 | Development/Unit Test | 2007-09-28 → 2007-09-26 (-2d) | 2007-10-02 → 2007-09-28 (-4d) |  |  |  |  |  |
| 181 | **Allow to use composition/class as attributes** | 2007-09-11 → 2007-09-07 (-4d) | 2007-09-19 → 2007-09-17 (-2d) |  |  |  |  |  |
| 182 | Design | 2007-09-11 → 2007-09-07 (-4d) | 2007-09-11 → 2007-09-07 (-4d) |  |  |  |  |  |
| 183 | Design Review | 2007-09-12 → 2007-09-10 (-2d) | 2007-09-12 → 2007-09-10 (-2d) |  |  |  |  |  |
| 184 | Design Update | 2007-09-12 → 2007-09-10 (-2d) | 2007-09-12 → 2007-09-10 (-2d) |  |  |  |  |  |
| 185 | Development/Unit Test | 2007-09-12 → 2007-09-10 (-2d) | 2007-09-19 → 2007-09-17 (-2d) |  |  |  |  |  |
| 186 | **Transient Variable Support** | 2007-09-19 → 2007-09-17 (-2d) | 2007-09-28 → 2007-09-26 (-2d) |  |  |  |  |  |
| 187 | Design | 2007-09-19 → 2007-09-17 (-2d) | 2007-09-20 → 2007-09-18 (-2d) |  |  |  |  |  |
| 188 | Design Review | 2007-09-20 → 2007-09-18 (-2d) | 2007-09-20 → 2007-09-18 (-2d) |  |  |  |  |  |
| 189 | Design Update | 2007-09-20 → 2007-09-18 (-2d) | 2007-09-20 → 2007-09-18 (-2d) |  |  |  |  |  |
| 190 | Development/Unit Test | 2007-09-21 → 2007-09-19 (-2d) | 2007-09-28 → 2007-09-26 (-2d) |  |  |  |  |  |
| 191 | **QA** | 2007-09-12 → 2007-09-10 (-2d) | 2007-10-12 → 2007-10-10 (-2d) |  |  |  |  |  |
| 192 | Test Development | 2007-09-12 → 2007-09-10 (-2d) | 2007-09-19 → 2007-09-17 (-2d) |  |  |  |  |  |
| 193 | Test Execution | 2007-10-02 → 2007-09-28 (-4d) | 2007-10-12 → 2007-10-10 (-2d) |  |  |  |  |  |
| 194 | Test Support | 2007-10-02 → 2007-09-28 (-4d) | 2007-10-12 → 2007-10-10 (-2d) |  |  |  |  |  |
| 195 | **Integration Testing** | 2007-10-12 → 2007-10-10 (-2d) | 2007-10-19 → 2007-10-17 (-2d) |  |  |  |  |  |
| 196 | Promote to Staging | 2007-10-12 → 2007-10-10 (-2d) | 2007-10-12 → 2007-10-10 (-2d) |  |  |  |  |  |
| 197 | Test | 2007-10-15 → 2007-10-11 (-4d) | 2007-10-19 → 2007-10-17 (-2d) |  |  |  |  |  |
| 198 | Test Support | 2007-10-15 → 2007-10-11 (-4d) | 2007-10-19 → 2007-10-17 (-2d) |  |  |  |  |  |
| 199 | **Transition** | 2007-10-02 → 2007-09-28 (-4d) | 2007-10-26 → 2007-10-24 (-2d) |  |  |  |  |  |
| 200 | **Documentation** | 2007-10-02 → 2007-09-28 (-4d) | 2007-10-16 → 2007-10-12 (-4d) |  |  |  |  |  |
| 201 | users guide | 2007-10-02 → 2007-09-28 (-4d) | 2007-10-09 → 2007-10-05 (-4d) |  |  |  |  |  |
| 202 | technical guide | 2007-10-02 → 2007-09-28 (-4d) | 2007-10-16 → 2007-10-12 (-4d) |  |  |  |  |  |
| 203 | How to examples | 2007-10-09 → 2007-10-05 (-4d) | 2007-10-16 → 2007-10-12 (-4d) |  |  |  |  |  |
| 204 | **Production Packaging** | 2007-10-16 → 2007-10-12 (-4d) | 2007-10-26 → 2007-10-24 (-2d) |  |  |  |  |  |
| 205 | Update Download Site | 2007-10-16 → 2007-10-12 (-4d) | 2007-10-22 → 2007-10-18 (-4d) |  |  |  |  |  |
| 206 | Develop Production promotion Documentation | 2007-10-16 → 2007-10-12 (-4d) | 2007-10-22 → 2007-10-18 (-4d) |  |  |  |  |  |
| 207 | Push to Produciton | 2007-10-22 → 2007-10-18 (-4d) | 2007-10-26 → 2007-10-24 (-2d) |  |  |  |  |  |

## Version 17 (saved 2007-06-27)

Note of the change: updated per status meeting

Last finish stays 2007-10-24. Complete tasks 81 → 82.

Changed:

| ID | Task | Start | Finish | Complete | Total float |
| --- | --- | --- | --- | --- | --- |
| 1 | **caCORE SDK v4.0** |  |  | 59% → 63% | 30.5d → 28.5d |
| 25 | **Construction** |  |  | 63% → 68% | 43d → 41d |
| 67 | **Iteration 2** |  |  | 67% → 82% |  |
| 68 | **SDK 4.0 Release (Beta 1)** |  |  | 67% → 82% |  |
| 86 | Rewrite O/R mapping generation (.hbm.xml, .cfg.xml, ehcache.xml) |  | 2007-05-31 A | 98% → 100% | 11.5d → none |
| 93 | Rewrite XML schema generaotor |  | 2007-05-15 A → 2007-05-15 | 100% → 90% | none → 115d |
| 98 | **QA** | 2007-06-08 A |  | 0% → 48% | 8.5d → 85.5d |
| 99 | Test Development | 2007-06-08 A |  | 0% → 85% | 94.5d → 92.5d |
| 100 | Test Execution | 2007-06-12 A |  | 0% → 25% | 87.5d → 85.5d |
| 101 | Test Support | 2007-06-12 A | 2007-06-25 A | 0% → 100% | 4.5d → none |

## Version 18 (saved 2007-07-06)

Note of the change: updated per weekly status meeting

Last finish stays 2007-10-24. Complete tasks 82 → 88.

Changed:

| ID | Task | Start | Finish | Complete | Total float | Other |
| --- | --- | --- | --- | --- | --- | --- |
| 1 | **caCORE SDK v4.0** |  |  | 63% → 70% |  |  |
| 25 | **Construction** |  |  | 68% → 77% |  |  |
| 67 | **Iteration 2** |  |  | 82% → 94% |  |  |
| 68 | **SDK 4.0 Release (Beta 1)** |  |  | 82% → 94% |  |  |
| 98 | **QA** |  |  | 48% → 83% |  |  |
| 99 | Test Development |  | 2007-06-14 A | 85% → 100% | 92.5d → none |  |
| 100 | Test Execution |  |  | 25% → 40% |  |  |
| 102 | Documentation | 2007-06-12 A | 2007-06-25 A | 0% → 100% | 4.5d → none |  |
| 103 | **Iteration Plan** | 2007-06-08 A | 2007-06-11 A | 0% → 100% | 96d → none |  |
| 104 | Review Client Feature Request/Revise Task Plan | 2007-06-08 A | 2007-06-11 A | 0% → 100% | 98d → none |  |
| 126 | **Iteration 4** | 2007-06-11 A |  | 0% → 21% | 2d → 41d |  |
| 127 | **Release 4.0 (Final Release)** | 2007-06-11 A |  | 0% → 21% | 2d → 41d |  |
| 128 | **Change architecture of Application Service** | 2007-06-26 A |  | 0% → 15% | 6.5d → 8.3d |  |
| 129 | Design | 2007-06-26 A |  | 0% → 10% | 4.5d → 9.3d |  |
| 132 | Development | 2007-07-02 A |  | 0% → 20% | 4.5d → 8.3d |  |
| 133 | **Support multiple ApplicationService in same JVM** | 2007-07-10 A |  | 0% → 30% |  |  |
| 134 | Development/Unit Test | 2007-07-10 A |  | 0% → 30% | 4.5d → 6.5d |  |
| 135 | **Annotation Based Web Services -> Eliminate .ws and .impl classes** | 2007-06-11 A |  | 0% → 96% | 2d → 5.6d | was named Annotation Based Web Services |
| 136 | Design/Prototype | 2007-06-11 A | 2007-06-14 A | 0% → 100% | 1d → none |  |
| 137 | Design Review | 2007-06-14 A | 2007-06-14 A | 0% → 100% | 1d → none |  |
| 138 | Design Update | 2007-06-14 A | 2007-06-14 A | 0% → 100% | 1d → none |  |
| 139 | Development/Unit Test | 2007-06-15 A |  | 0% → 95% | 1d → 5.6d |  |
| 142 | **Re-architect information in SpringConfig.xml and DAOConfig.xml** | 2007-06-29 A |  | 0% → 80% |  |  |
| 143 | Design | 2007-06-29 A |  | 0% → 50% | 2d → 5.1d |  |
| 144 | Design Review | 2007-07-02 A |  | 0% → 50% | 2d → 4.97d |  |
| 145 | Design Update | 2007-07-02 A |  | 0% → 50% | 2d → 4.85d |  |
| 146 | Development | 2007-07-02 A |  | 0% → 95% |  |  |

## Version 19 (saved 2007-07-09)

Note of the change: updated per status meeting

Last finish stays 2007-10-24. Complete tasks 88 → 95.

Changed:

| ID | Task | Start | Finish | Complete | Total float |
| --- | --- | --- | --- | --- | --- |
| 1 | **caCORE SDK v4.0** |  |  | 70% → 73% | 28.5d → 30.5d |
| 25 | **Construction** |  |  | 77% → 80% | 41d → 43d |
| 67 | **Iteration 2** |  |  | 94% → 99% |  |
| 68 | **SDK 4.0 Release (Beta 1)** |  |  | 94% → 99% |  |
| 98 | **QA** |  | 2007-06-25 A | 83% → 100% | 85.5d → none |
| 100 | Test Execution |  | 2007-06-25 A | 40% → 100% | 85.5d → none |
| 126 | **Iteration 4** |  |  | 21% → 26% |  |
| 127 | **Release 4.0 (Final Release)** |  |  | 21% → 26% |  |
| 128 | **Change architecture of Application Service** |  |  | 15% → 58% |  |
| 129 | Design |  | 2007-06-29 A | 10% → 100% | 9.3d → none |
| 130 | Design Review | 2007-07-02 A | 2007-07-02 A | 0% → 100% | 4.5d → none |
| 131 | Design Update | 2007-07-02 A | 2007-07-02 A | 0% → 100% | 4.5d → none |
| 142 | **Re-architect information in SpringConfig.xml and DAOConfig.xml** |  |  | 80% → 97% |  |
| 143 | Design |  | 2007-06-29 A | 50% → 100% | 5.1d → none |
| 144 | Design Review |  | 2007-07-02 A | 50% → 100% | 4.97d → none |
| 145 | Design Update |  | 2007-07-02 A | 50% → 100% | 4.85d → none |

## Version 20 (saved 2007-07-16)

Note of the change: Updated per weekly status report

Last finish stays 2007-10-24.

Changed:

| ID | Task | Start | Finish | Complete | Total float | Predecessors |
| --- | --- | --- | --- | --- | --- | --- |
| 1 | **caCORE SDK v4.0** |  |  | 73% → 75% |  |  |
| 25 | **Construction** |  |  | 80% → 83% |  |  |
| 126 | **Iteration 4** |  |  | 26% → 37% |  |  |
| 127 | **Release 4.0 (Final Release)** |  |  | 26% → 37% |  |  |
| 128 | **Change architecture of Application Service** |  |  | 58% → 95% | 8.3d → 11.9d |  |
| 132 | Development |  |  | 20% → 90% | 8.3d → 11.9d |  |
| 133 | **Support multiple ApplicationService in same JVM** |  |  | 30% → 90% |  |  |
| 134 | Development/Unit Test |  |  | 30% → 90% |  |  |
| 140 | **Remove duplication of code due to security injection - ACEGI Framework** | 2007-07-11 → 2007-07-06 A (-5d) | 2007-07-24 → 2007-07-20 (-4d) | 0% → 40% |  |  |
| 141 | Development/Unit Test | 2007-07-11 → 2007-07-06 A (-5d) | 2007-07-24 → 2007-07-20 (-4d) | 0% → 40% | 1d → 2d | 147 → 142, 147 |
| 147 | **Improved logging/trace messages** | 2007-07-06 → 2007-07-20 (+14d) | 2007-07-10 → 2007-07-24 (+14d) |  |  |  |
| 148 | Development | 2007-07-06 → 2007-07-20 (+14d) | 2007-07-10 → 2007-07-24 (+14d) |  |  | 142 → 140 |
| 155 | **Documentation** | 2007-07-25 → 2007-07-20 (-5d) | 2007-08-07 → 2007-08-03 (-4d) |  | 55.5d → 58d |  |
| 156 | Update Documentation | 2007-07-25 → 2007-07-20 (-5d) | 2007-08-07 → 2007-08-03 (-4d) |  | 55.5d → 58d |  |

## Version 21 (saved 2007-07-26)

Note of the change: updated based on changes in priority

Last finish 2007-10-24 → 2007-11-01 (+8d). Complete tasks 95 → 103.

Added:

| ID | Task | Duration | Start | Finish | Predecessors | Constraint | Resources |
| --- | --- | --- | --- | --- | --- | --- | --- |
| 147 | **Remaining Tasks** | 0.75d? | 2007-07-23 A | 2007-07-23 A |  |  |  |
| 148 | XSD/XML Mapping should not be generated for excluded classes | 0.25d? | 2007-07-23 A | 2007-07-23 A |  | start no earlier than 2007-07-23 | Dan |
| 149 | ID attribute not mandatory in XSM Mapping files | 0.5d? | 2007-07-23 A | 2007-07-23 A | 148 |  | Dan |
| 150 | Code freeze | 0d | 2007-07-24 A | 2007-07-24 A | 133, 140 | start no earlier than 2007-07-24 |  |
| 157 | **Known Bug Fixes** | 14d? | 2007-07-24 | 2007-08-10 |  |  |  |
| 158 | Insert Rolename in the web tier (getMother(), getFather()) | 1d? | 2007-07-24 | 2007-07-24 | 147 |  | Dan |
| 159 | Fix UI width problem (width, scrollbars) | 1d? | 2007-07-25 | 2007-07-25 | 158 |  | Dan |
| 160 | Error handling in classcache for duplicate classes | 0.25d? | 2007-07-26 | 2007-07-26 | 159 |  | Dan |
| 161 | Improved logging/trace messages | 2d | 2007-07-26 | 2007-07-30 | 160 |  | Dan |
| 162 | **Query Translator Fix for Nested Criteria** | 6d | 2007-07-26 | 2007-08-02 |  |  |  |
| 164 | Unit Test | 1d | 2007-08-02 | 2007-08-02 | 163 |  |  |
| 165 | **Security implementation** | 6d | 2007-08-03 | 2007-08-10 |  |  |  |
| 166 | Authentication (Web, Client, WS) | 1d | 2007-08-03 | 2007-08-03 | 162, 151 |  | Satish |
| 167 | Authorization | 1d | 2007-08-06 | 2007-08-06 | 166 |  | Satish |
| 168 | CSM Integration | 1d | 2007-08-07 | 2007-08-07 | 167 |  | Satish |
| 169 | Build scripts | 1d | 2007-08-08 | 2007-08-08 | 168 |  | Satish |
| 170 | Integration Tests | 2d | 2007-08-09 | 2007-08-10 | 169 |  |  |
| 171 | Bug Fixes | 9d | 2007-07-30 | 2007-08-10 | 161 |  | Dan |

Removed: 147 Improved logging/trace messages; 155 Documentation; 156 Update Documentation; 157 Integration Testing Support

Changed:

| ID | Task | Start | Finish | Duration | Complete | Total float | Predecessors | Other |
| --- | --- | --- | --- | --- | --- | --- | --- | --- |
| 1 | **caCORE SDK v4.0** |  | 2007-09-13 → 2007-09-20 (+7d) | 166d? → 171d? | 75% → 79% | 30.5d → 29.5d |  |  |
| 25 | **Construction** |  | 2007-08-28 → 2007-08-14 (-14d) | 151.5d? → 142d? | 83% → 86% | 43d → 56.5d |  |  |
| 126 | **Iteration 4** |  | 2007-08-28 → 2007-08-14 (-14d) | 55d → 45.5d? | 37% → 46% | 41d → 56.5d |  |  |
| 127 | **Release 4.0 (Final Release)** |  | 2007-08-28 → 2007-08-14 (-14d) | 55d → 45.5d? | 37% → 46% | 41d → 56.5d |  |  |
| 128 | **Change architecture of Application Service** |  | 2007-07-10 A |  | 95% → 100% | 11.9d → none |  |  |
| 132 | Development |  | 2007-07-10 A |  | 90% → 100% | 11.9d → none |  |  |
| 133 | **Support multiple ApplicationService in same JVM** |  | 2007-07-18 A |  | 90% → 100% | 6.5d → none |  |  |
| 134 | Development/Unit Test |  | 2007-07-18 A |  | 90% → 100% | 6.5d → none |  |  |
| 135 | **Annotation Based Web Services -> Eliminate .ws and .impl classes** |  | 2007-06-28 → 2007-07-13 A (+15d) | 13.5d → 23d | 96% → 100% | 5.6d → none |  |  |
| 139 | Development/Unit Test |  | 2007-06-28 → 2007-07-13 A (+15d) |  | 95% → 100% | 5.6d → none |  | resources Dan → Satish |
| 140 | **Remove duplication of code due to security injection - ACEGI Framework** |  |  |  | 40% → 75% | 2d → 74d |  |  |
| 141 | Development/Unit Test |  |  |  | 40% → 75% | 2d → 4.5d | 142, Improved logging/trace messages → 142 |  |
| 142 | **Re-architect information in SpringConfig.xml and DAOConfig.xml** |  | 2007-07-06 A |  | 97% → 100% | 6d → none |  |  |
| 146 | Development |  | 2007-07-06 A |  | 95% → 100% | 2d → none |  |  |
| 151 | Final Release to QA | 2007-07-24 A | 2007-07-24 A |  | 0% → 100% | 2d → none | 133, Improved logging/trace messages, 140 → 150 |  |
| 152 | **QA** |  | 2007-08-06 → 2007-08-14 (+8d) | 15d → 21d? |  |  |  |  |
| 155 | Test Execution |  | 2007-08-06 → 2007-08-14 (+8d) | 10d → 16d |  |  | 151FS-3d, 151, 154 → 151FS-3d |  |
| 156 | **Test Support** |  | 2007-08-06 → 2007-08-10 (+4d) | 10d → 14d? |  | 0d → 2d |  | constraint start no earlier than 2007-07-23 → none; resources Dan [50%]; Satish [50%] → none |
| 163 | Development | 2007-07-20 → 2007-07-26 (+6d) | 2007-07-24 → 2007-08-01 (+8d) | 2.5d → 5d |  | 2d → 1d | 140 → 151FS+2d | resources Dan → none; baseline start 2007-07-10 → none; baseline finish 2007-07-12 → none |
| 172 | **Transition** | 2007-08-07 → 2007-08-15 (+8d) | 2007-09-13 → 2007-09-20 (+7d) | 28d → 27d |  |  |  |  |
| 173 | **Documentation** | 2007-08-07 → 2007-08-15 (+8d) | 2007-09-04 → 2007-09-11 (+7d) | 21d → 20d |  |  |  |  |
| 174 | New users guide | 2007-08-07 → 2007-08-21 (+14d) | 2007-08-29 → 2007-08-27 (-2d) | 10d → 5d |  | 1.5d → 9.5d | 152 → 165 | resources Satish [50%] → Satish |
| 175 | New technical guide | 2007-08-07 → 2007-08-15 (+8d) | 2007-08-27 → 2007-09-04 (+8d) |  |  |  |  |  |
| 176 | technical guide help | 2007-08-30 → 2007-08-28 (-2d) | 2007-09-04 → 2007-08-31 (-4d) |  |  | 1.5d → 9.5d |  |  |
| 177 | How to examples | 2007-08-28 → 2007-09-05 (+8d) | 2007-09-03 → 2007-09-11 (+8d) |  |  |  |  |  |
| 178 | **Production Packaging** | 2007-09-04 → 2007-09-03 (-1d) | 2007-09-13 → 2007-09-20 (+7d) | 8d → 14d |  | 0d → 7d |  |  |
| 179 | Update Download Site | 2007-09-04 → 2007-09-12 (+8d) | 2007-09-05 → 2007-09-13 (+8d) |  |  |  |  |  |
| 180 | Develop Production promotion Documentation | 2007-09-05 → 2007-09-03 (-2d) | 2007-09-06 → 2007-09-04 (-2d) |  |  | 1.5d → 9.5d |  |  |
| 181 | Push to Produciton | 2007-09-07 → 2007-09-14 (+7d) | 2007-09-13 → 2007-09-20 (+7d) |  |  | 28.5d → 29.5d |  |  |
| 182 | 4.0 Release Complete | 2007-09-13 → 2007-09-20 (+7d) | 2007-09-13 → 2007-09-20 (+7d) |  |  | 28.5d → 29.5d |  |  |
| 183 | **caCORE SDK v4.X** | 2007-08-28 → 2007-01-23 (-217d) | 2007-10-24 → 2007-11-01 (+8d) | 41d → 198.5d? |  |  |  |  |
| 184 | **Iteration 1** | 2007-08-28 → 2007-01-23 (-217d) | 2007-10-24 → 2007-11-01 (+8d) | 41d → 198.5d? |  |  |  |  |
| 185 | **Elaboration** | 2007-08-28 → 2007-07-06 (-53d) | 2007-08-31 → 2007-07-10 (-52d) |  |  | 38d → 81.5d |  |  |
| 186 | Review Client Feature Request/Revise Task Plan | 2007-08-28 → 2007-07-06 (-53d) | 2007-08-31 → 2007-07-10 (-52d) |  |  | 38d → 81.5d | Integration Testing Support → none |  |
| 187 | **Construction** | 2007-09-06 → 2007-09-05 (-1d) | 2007-10-17 → 2007-10-25 (+8d) | 30d → 37d |  | 0d → 4.5d |  |  |
| 188 | **Support interfaces (including marker interfaces), abstract class, enumeration** | 2007-09-06 → 2007-09-14 (+8d) | 2007-09-26 → 2007-10-04 (+8d) |  |  |  |  |  |
| 189 | Design | 2007-09-06 → 2007-09-14 (+8d) | 2007-09-07 → 2007-09-17 (+10d) |  |  |  |  |  |
| 190 | Design Review | 2007-09-07 → 2007-09-17 (+10d) | 2007-09-07 → 2007-09-17 (+10d) |  |  |  |  |  |
| 191 | Design Update | 2007-09-10 → 2007-09-18 (+8d) | 2007-09-10 → 2007-09-18 (+8d) |  |  |  |  |  |
| 192 | Development/Unit Test | 2007-09-10 → 2007-09-18 (+8d) | 2007-09-26 → 2007-10-04 (+8d) |  |  |  |  |  |
| 193 | **Allow user to Specify name of the remoteService.xml file externally** | 2007-09-26 → 2007-10-04 (+8d) | 2007-09-28 → 2007-10-08 (+10d) |  |  |  |  |  |
| 194 | Development/Unit Test | 2007-09-26 → 2007-10-04 (+8d) | 2007-09-28 → 2007-10-08 (+10d) |  |  |  |  |  |
| 195 | **Allow to use composition/class as attributes** | 2007-09-07 → 2007-09-05 (-2d) | 2007-09-17 → 2007-09-13 (-4d) |  |  | 1.5d → 9.5d |  |  |
| 196 | Design | 2007-09-07 → 2007-09-05 (-2d) | 2007-09-07 → 2007-09-05 (-2d) |  |  | 1.5d → 9.5d |  |  |
| 197 | Design Review | 2007-09-10 → 2007-09-06 (-4d) | 2007-09-10 → 2007-09-06 (-4d) |  |  | 1.5d → 9.5d |  |  |
| 198 | Design Update | 2007-09-10 → 2007-09-06 (-4d) | 2007-09-10 → 2007-09-06 (-4d) |  |  | 1.5d → 9.5d |  |  |
| 199 | Development/Unit Test | 2007-09-10 → 2007-09-06 (-4d) | 2007-09-17 → 2007-09-13 (-4d) |  |  | 1.5d → 9.5d |  |  |
| 200 | **Transient Variable Support** | 2007-09-17 → 2007-09-13 (-4d) | 2007-09-26 → 2007-09-24 (-2d) |  |  | 1.5d → 9.5d |  |  |
| 201 | Design | 2007-09-17 → 2007-09-13 (-4d) | 2007-09-18 → 2007-09-14 (-4d) |  |  | 1.5d → 9.5d |  |  |
| 202 | Design Review | 2007-09-18 → 2007-09-14 (-4d) | 2007-09-18 → 2007-09-14 (-4d) |  |  | 1.5d → 9.5d |  |  |
| 203 | Design Update | 2007-09-18 → 2007-09-14 (-4d) | 2007-09-18 → 2007-09-14 (-4d) |  |  | 1.5d → 9.5d |  |  |
| 204 | Development/Unit Test | 2007-09-19 → 2007-09-17 (-2d) | 2007-09-26 → 2007-09-24 (-2d) |  |  | 1.5d → 9.5d |  |  |
| 205 | **QA** | 2007-09-10 → 2007-09-18 (+8d) | 2007-10-10 → 2007-10-18 (+8d) |  |  |  |  |  |
| 206 | Test Development | 2007-09-10 → 2007-09-18 (+8d) | 2007-09-17 → 2007-09-25 (+8d) |  |  |  |  |  |
| 207 | Test Execution | 2007-09-28 → 2007-10-08 (+10d) | 2007-10-10 → 2007-10-18 (+8d) |  |  |  |  |  |
| 208 | Test Support | 2007-09-28 → 2007-10-08 (+10d) | 2007-10-10 → 2007-10-18 (+8d) |  |  |  |  |  |
| 209 | **Integration Testing** | 2007-10-10 → 2007-10-18 (+8d) | 2007-10-17 → 2007-10-25 (+8d) |  |  |  |  |  |
| 210 | Promote to Staging | 2007-10-10 → 2007-10-18 (+8d) | 2007-10-10 → 2007-10-18 (+8d) |  |  |  |  |  |
| 211 | Test | 2007-10-11 → 2007-10-19 (+8d) | 2007-10-17 → 2007-10-25 (+8d) |  |  |  |  |  |
| 212 | Test Support | 2007-10-11 → 2007-10-19 (+8d) | 2007-10-17 → 2007-10-25 (+8d) |  |  |  |  |  |
| 213 | **Transition** | 2007-09-28 → 2007-01-23 (-248d) | 2007-10-24 → 2007-11-01 (+8d) | 18d → 198.5d? |  |  |  |  |
| 214 | **Documentation** | 2007-09-28 → 2007-10-08 (+10d) | 2007-10-12 → 2007-10-22 (+10d) |  |  |  |  |  |
| 215 | users guide | 2007-09-28 → 2007-10-08 (+10d) | 2007-10-05 → 2007-10-15 (+10d) |  |  |  |  |  |
| 216 | technical guide | 2007-09-28 → 2007-10-08 (+10d) | 2007-10-12 → 2007-10-22 (+10d) |  |  |  |  |  |
| 217 | How to examples | 2007-10-05 → 2007-10-15 (+10d) | 2007-10-12 → 2007-10-22 (+10d) |  |  |  |  |  |
| 218 | **Production Packaging** | 2007-10-12 → 2007-01-23 (-262d) | 2007-10-24 → 2007-11-01 (+8d) | 8d → 198.5d? |  |  |  |  |
| 219 | Update Download Site | 2007-10-12 → 2007-10-22 (+10d) | 2007-10-18 → 2007-10-26 (+8d) |  |  |  |  |  |
| 220 | Develop Production promotion Documentation | 2007-10-12 → 2007-10-22 (+10d) | 2007-10-18 → 2007-10-26 (+8d) |  |  |  |  |  |
| 221 | Push to Produciton | 2007-10-18 → 2007-10-26 (+8d) | 2007-10-24 → 2007-11-01 (+8d) |  |  |  |  |  |

## Version 22 (saved 2007-08-27)

Note of the change: updated per weekly status meeting

Last finish 2007-11-01 → 2007-11-13 (+12d). Complete tasks 103 → 116.

Changed:

| ID | Task | Start | Finish | Duration | Complete | Total float | Other |
| --- | --- | --- | --- | --- | --- | --- | --- |
| 1 | **caCORE SDK v4.0** |  | 2007-09-20 → 2007-10-02 (+12d) | 171d? → 179d? | 79% → 88% |  |  |
| 25 | **Construction** |  | 2007-08-14 → 2007-08-24 (+10d) | 142d? → 150d? | 86% → 97% |  |  |
| 126 | **Iteration 4** |  | 2007-08-14 → 2007-08-24 (+10d) | 45.5d? → 53.5d? | 46% → 91% |  |  |
| 127 | **Release 4.0 (Final Release)** |  | 2007-08-14 → 2007-08-24 (+10d) | 45.5d? → 53.5d? | 46% → 91% |  |  |
| 152 | **QA** | 2007-07-17 A | 2007-08-14 → 2007-08-24 (+10d) | 21d? → 29d? | 0% → 89% |  |  |
| 153 | CSM Testing of Iteration 3,4 Complete | 2007-07-17 A | 2007-07-17 A |  | 0% → 100% | 0.75d → none |  |
| 154 | Test Development | 2007-07-17 A | 2007-07-23 A |  | 0% → 100% | 0.75d → none |  |
| 155 | Test Execution | 2007-07-24 A | 2007-08-14 → 2007-08-24 (+10d) | 16d → 24d | 0% → 80% |  |  |
| 156 | **Test Support** | 2007-07-24 A | 2007-08-10 → 2007-08-24 (+14d) | 14d? → 24d? | 0% → 94% | 2d → 0d |  |
| 157 | **Known Bug Fixes** | 2007-07-24 A | 2007-08-10 → 2007-08-09 A (-1d) | 14d? → 13d? | 0% → 100% | 2d → none |  |
| 158 | Insert Rolename in the web tier (getMother(), getFather()) | 2007-07-24 A | 2007-07-24 A | 1d? → 1d | 0% → 100% | 0.75d → none |  |
| 159 | Fix UI width problem (width, scrollbars) | 2007-07-25 A | 2007-07-25 A |  | 0% → 100% | 0.75d → none |  |
| 160 | Error handling in classcache for duplicate classes | 2007-07-26 A | 2007-07-26 A |  | 0% → 100% | 0.75d → none |  |
| 161 | Improved logging/trace messages | 2007-07-26 A | 2007-07-30 A |  | 0% → 100% | 0.75d → none |  |
| 162 | **Query Translator Fix for Nested Criteria** | 2007-07-26 A | 2007-08-02 A |  | 0% → 100% | 1d → none |  |
| 163 | Development | 2007-07-26 A | 2007-08-01 A |  | 0% → 100% | 1d → none | resources none → Satish |
| 164 | Unit Test | 2007-08-02 A | 2007-08-02 A |  | 0% → 100% | 1d → none | resources none → Satish |
| 165 | **Security implementation** | 2007-08-03 A | 2007-08-10 → 2007-08-09 A (-1d) | 6d → 5d | 0% → 100% | 1d → none |  |
| 166 | Authentication (Web, Client, WS) | 2007-08-03 A | 2007-08-03 A |  | 0% → 100% | 1d → none |  |
| 167 | Authorization | 2007-08-06 A | 2007-08-06 A |  | 0% → 100% | 1d → none |  |
| 168 | CSM Integration | 2007-08-07 A | 2007-08-07 A |  | 0% → 100% | 1d → none |  |
| 169 | Build scripts | 2007-08-08 A | 2007-08-08 A |  | 0% → 100% | 1d → none |  |
| 170 | Integration Tests | 2007-08-09 A | 2007-08-10 → 2007-08-09 A (-1d) | 2d → 1d | 0% → 100% | 2d → none | resources none → Satish |
| 171 | Bug Fixes | 2007-07-30 A | 2007-08-10 → 2007-08-24 (+14d) | 9d → 19.75d | 0% → 90% | 2.75d → 0d | constraint none → finish no earlier than 2007-08-24 |
| 172 | **Transition** | 2007-08-15 → 2007-08-27 (+12d) | 2007-09-20 → 2007-10-02 (+12d) |  |  |  |  |
| 173 | **Documentation** | 2007-08-15 → 2007-08-27 (+12d) | 2007-09-11 → 2007-09-21 (+10d) |  |  |  |  |
| 174 | New users guide | 2007-08-21 → 2007-08-27 (+6d) | 2007-08-27 → 2007-08-31 (+4d) |  |  | 9.5d → 13.5d |  |
| 175 | New technical guide | 2007-08-15 → 2007-08-27 (+12d) | 2007-09-04 → 2007-09-14 (+10d) |  |  |  |  |
| 176 | technical guide help | 2007-08-28 → 2007-09-03 (+6d) | 2007-08-31 → 2007-09-06 (+6d) |  |  | 9.5d → 13.5d |  |
| 177 | How to examples | 2007-09-05 → 2007-09-17 (+12d) | 2007-09-11 → 2007-09-21 (+10d) |  |  |  |  |
| 178 | **Production Packaging** | 2007-09-03 → 2007-09-07 (+4d) | 2007-09-20 → 2007-10-02 (+12d) | 14d → 18d |  | 7d → 11d |  |
| 179 | Update Download Site | 2007-09-12 → 2007-09-24 (+12d) | 2007-09-13 → 2007-09-25 (+12d) |  |  |  |  |
| 180 | Develop Production promotion Documentation | 2007-09-03 → 2007-09-07 (+4d) | 2007-09-04 → 2007-09-10 (+6d) |  |  | 9.5d → 13.5d |  |
| 181 | Push to Produciton | 2007-09-14 → 2007-09-26 (+12d) | 2007-09-20 → 2007-10-02 (+12d) |  |  |  |  |
| 182 | 4.0 Release Complete | 2007-09-20 → 2007-10-02 (+12d) | 2007-09-20 → 2007-10-02 (+12d) |  |  |  |  |
| 183 | **caCORE SDK v4.X** | 2007-01-23 → 2007-07-06 (+164d) | 2007-11-01 → 2007-11-13 (+12d) | 198.5d? → 92.5d |  |  |  |
| 184 | **Iteration 1** | 2007-01-23 → 2007-07-06 (+164d) | 2007-11-01 → 2007-11-13 (+12d) | 198.5d? → 92.5d |  |  |  |
| 187 | **Construction** | 2007-09-05 → 2007-09-11 (+6d) | 2007-10-25 → 2007-11-06 (+12d) | 37d → 41d |  |  |  |
| 188 | **Support interfaces (including marker interfaces), abstract class, enumeration** | 2007-09-14 → 2007-09-26 (+12d) | 2007-10-04 → 2007-10-16 (+12d) |  |  |  |  |
| 189 | Design | 2007-09-14 → 2007-09-26 (+12d) | 2007-09-17 → 2007-09-27 (+10d) |  |  |  |  |
| 190 | Design Review | 2007-09-17 → 2007-09-27 (+10d) | 2007-09-17 → 2007-09-27 (+10d) |  |  |  |  |
| 191 | Design Update | 2007-09-18 → 2007-09-28 (+10d) | 2007-09-18 → 2007-09-28 (+10d) |  |  |  |  |
| 192 | Development/Unit Test | 2007-09-18 → 2007-09-28 (+10d) | 2007-10-04 → 2007-10-16 (+12d) |  |  |  |  |
| 193 | **Allow user to Specify name of the remoteService.xml file externally** | 2007-10-04 → 2007-10-16 (+12d) | 2007-10-08 → 2007-10-18 (+10d) |  |  |  |  |
| 194 | Development/Unit Test | 2007-10-04 → 2007-10-16 (+12d) | 2007-10-08 → 2007-10-18 (+10d) |  |  |  |  |
| 195 | **Allow to use composition/class as attributes** | 2007-09-05 → 2007-09-11 (+6d) | 2007-09-13 → 2007-09-19 (+6d) |  |  | 9.5d → 13.5d |  |
| 196 | Design | 2007-09-05 → 2007-09-11 (+6d) | 2007-09-05 → 2007-09-11 (+6d) |  |  | 9.5d → 13.5d |  |
| 197 | Design Review | 2007-09-06 → 2007-09-12 (+6d) | 2007-09-06 → 2007-09-12 (+6d) |  |  | 9.5d → 13.5d |  |
| 198 | Design Update | 2007-09-06 → 2007-09-12 (+6d) | 2007-09-06 → 2007-09-12 (+6d) |  |  | 9.5d → 13.5d |  |
| 199 | Development/Unit Test | 2007-09-06 → 2007-09-12 (+6d) | 2007-09-13 → 2007-09-19 (+6d) |  |  | 9.5d → 13.5d |  |
| 200 | **Transient Variable Support** | 2007-09-13 → 2007-09-19 (+6d) | 2007-09-24 → 2007-09-28 (+4d) |  |  | 9.5d → 13.5d |  |
| 201 | Design | 2007-09-13 → 2007-09-19 (+6d) | 2007-09-14 → 2007-09-20 (+6d) |  |  | 9.5d → 13.5d |  |
| 202 | Design Review | 2007-09-14 → 2007-09-20 (+6d) | 2007-09-14 → 2007-09-20 (+6d) |  |  | 9.5d → 13.5d |  |
| 203 | Design Update | 2007-09-14 → 2007-09-20 (+6d) | 2007-09-14 → 2007-09-20 (+6d) |  |  | 9.5d → 13.5d |  |
| 204 | Development/Unit Test | 2007-09-17 → 2007-09-21 (+4d) | 2007-09-24 → 2007-09-28 (+4d) |  |  | 9.5d → 13.5d |  |
| 205 | **QA** | 2007-09-18 → 2007-09-28 (+10d) | 2007-10-18 → 2007-10-30 (+12d) |  |  |  |  |
| 206 | Test Development | 2007-09-18 → 2007-09-28 (+10d) | 2007-09-25 → 2007-10-05 (+10d) |  |  |  |  |
| 207 | Test Execution | 2007-10-08 → 2007-10-18 (+10d) | 2007-10-18 → 2007-10-30 (+12d) |  |  |  |  |
| 208 | Test Support | 2007-10-08 → 2007-10-18 (+10d) | 2007-10-18 → 2007-10-30 (+12d) |  |  |  |  |
| 209 | **Integration Testing** | 2007-10-18 → 2007-10-30 (+12d) | 2007-10-25 → 2007-11-06 (+12d) |  |  |  |  |
| 210 | Promote to Staging | 2007-10-18 → 2007-10-30 (+12d) | 2007-10-18 → 2007-10-30 (+12d) |  |  |  |  |
| 211 | Test | 2007-10-19 → 2007-10-31 (+12d) | 2007-10-25 → 2007-11-06 (+12d) |  |  |  |  |
| 212 | Test Support | 2007-10-19 → 2007-10-31 (+12d) | 2007-10-25 → 2007-11-06 (+12d) |  |  |  |  |
| 213 | **Transition** | 2007-01-23 → 2007-10-18 (+268d) | 2007-11-01 → 2007-11-13 (+12d) | 198.5d? → 18d |  |  |  |
| 214 | **Documentation** | 2007-10-08 → 2007-10-18 (+10d) | 2007-10-22 → 2007-11-01 (+10d) |  |  |  |  |
| 215 | users guide | 2007-10-08 → 2007-10-18 (+10d) | 2007-10-15 → 2007-10-25 (+10d) |  |  |  |  |
| 216 | technical guide | 2007-10-08 → 2007-10-18 (+10d) | 2007-10-22 → 2007-11-01 (+10d) |  |  |  |  |
| 217 | How to examples | 2007-10-15 → 2007-10-25 (+10d) | 2007-10-22 → 2007-11-01 (+10d) |  |  |  |  |
| 218 | **Production Packaging** | 2007-01-23 → 2007-11-01 (+282d) | 2007-11-01 → 2007-11-13 (+12d) | 198.5d? → 8d |  |  |  |
| 219 | Update Download Site | 2007-10-22 → 2007-11-01 (+10d) | 2007-10-26 → 2007-11-07 (+12d) |  |  |  |  |

| ID | Task | Start | Finish |
| --- | --- | --- | --- |
| 220 | Develop Production promotion Documentation | 2007-10-22 → 2007-11-01 (+10d) | 2007-10-26 → 2007-11-07 (+12d) |
| 221 | Push to Produciton | 2007-10-26 → 2007-11-07 (+12d) | 2007-11-01 → 2007-11-13 (+12d) |

## Version 23 (saved 2007-09-06)

Note of the change: updated per task plan

Last finish 2007-11-13 → 2007-11-05 (-8d). Complete tasks 116 → 117.

Added:

| ID | Task | Duration | Start | Finish | Predecessors | Resources |
| --- | --- | --- | --- | --- | --- | --- |
| 175 | Write Guide | 12d | 2007-08-27 A | 2007-09-11 | 171 | Satish; Dan |
| 176 | Internal Review | 0.25d | 2007-09-12 | 2007-09-12 | 175 | Ekagra |
| 177 | Update Per Review | 2d | 2007-09-12 | 2007-09-14 | 176 | Satish; Dan |
| 178 | Draft for Review By Tech Writing | 0d | 2007-09-14 | 2007-09-14 | 177 |  |
| 179 | Tech Writing Review | 6d | 2007-09-14 | 2007-09-24 | 177 | Wendy |
| 181 | Write Guide | 3d | 2007-09-14 | 2007-09-19 | 178 | Dan; Satish |
| 182 | Internal Review | 0.25d | 2007-09-19 | 2007-09-19 | 181 | Ekagra |
| 183 | Update Per Review | 2d | 2007-09-19 | 2007-09-21 | 182 | Dan; Satish |
| 184 | Draft for Review By Tech Writing | 0d | 2007-09-21 | 2007-09-21 | 183 |  |
| 185 | Tech Writing Review | 6d | 2007-09-21 | 2007-10-01 | 184 | Wendy |

Removed: 176 technical guide help; 177 How to examples

Changed:

| ID | Task | Start | Finish | Duration | Complete | Total float | Predecessors | Other |
| --- | --- | --- | --- | --- | --- | --- | --- | --- |
| 1 | **caCORE SDK v4.0** |  | 2007-10-02 → 2007-10-01 (-1d) | 179d? → 177.5d? | 88% → 89% | 29.5d → 25.25d |  |  |
| 126 | **Iteration 4** |  |  |  | 91% → 93% | 56.5d → 50.75d |  |  |
| 127 | **Release 4.0 (Final Release)** |  |  |  | 91% → 93% | 56.5d → 50.75d |  |  |
| 152 | **QA** |  |  |  | 89% → 93% | 0d → 39.5d |  |  |
| 156 | **Test Support** |  | 2007-08-24 A |  | 94% → 100% | 0d → none |  |  |
| 166 | Authentication (Web, Client, WS) |  |  |  |  |  | 162, 151 → 162 |  |
| 171 | Bug Fixes |  | 2007-08-24 A |  | 90% → 100% | 0d → none |  |  |
| 172 | **Transition** | 2007-08-27 A | 2007-10-02 → 2007-10-01 (-1d) | 27d → 25.5d | 0% → 4% | 0d → 25.25d |  |  |
| 173 | **Documentation** | 2007-08-27 A | 2007-09-21 → 2007-10-01 (+10d) | 20d → 25.5d | 0% → 6% | 0d → 25.25d |  |  |
| 174 | **SDK 4.0 Guide** | 2007-08-27 A | 2007-08-31 → 2007-09-24 (+24d) | 5d → 20.25d | 0% → 9% | 13.5d → 30.5d |  | was named New users guide; constraint start no earlier than 2007-06-15 → none; resources Satish → none |
| 180 | **SDK 4.0 Migration Guide** | 2007-08-27 → 2007-09-14 (+18d) | 2007-09-14 → 2007-10-01 (+17d) | 15d → 11.25d |  | 0d → 25.25d |  | was named New technical guide; constraint start no earlier than 2007-06-15 → none; resources Dan [50%] → none |
| 186 | **Production Packaging** | 2007-09-07 → 2007-09-14 (+7d) | 2007-10-02 → 2007-09-27 (-5d) | 18d → 9d |  | 11d → 0d |  |  |
| 187 | Update Download Site | 2007-09-24 → 2007-09-14 (-10d) | 2007-09-25 → 2007-09-18 (-7d) |  |  |  | How to examples → 178 |  |
| 188 | Develop Production promotion Documentation | 2007-09-07 → 2007-09-18 (+11d) | 2007-09-10 → 2007-09-20 (+10d) |  |  | 13.5d → 0.5d | technical guide help → 187 |  |
| 189 | Push to Produciton | 2007-09-26 → 2007-09-20 (-6d) | 2007-10-02 → 2007-09-27 (-5d) |  |  | 29.5d → 27.5d |  |  |
| 190 | 4.0 Release Complete | 2007-10-02 → 2007-09-27 (-5d) | 2007-10-02 → 2007-09-27 (-5d) |  |  | 29.5d → 27.5d |  |  |
| 191 | **caCORE SDK v4.X** |  | 2007-11-13 → 2007-11-05 (-8d) | 92.5d → 86.75d |  |  |  |  |
| 192 | **Iteration 1** |  | 2007-11-13 → 2007-11-05 (-8d) | 92.5d → 86.75d |  |  |  |  |
| 195 | **Construction** | 2007-09-11 → 2007-09-18 (+7d) | 2007-11-06 → 2007-10-30 (-7d) | 41d → 30d |  | 4.5d → 0d |  |  |
| 196 | **Support interfaces (including marker interfaces), abstract class, enumeration** | 2007-09-26 → 2007-09-18 (-8d) | 2007-10-16 → 2007-10-08 (-8d) |  |  |  |  |  |
| 197 | Design | 2007-09-26 → 2007-09-18 (-8d) | 2007-09-27 → 2007-09-19 (-8d) |  |  |  |  |  |
| 198 | Design Review | 2007-09-27 → 2007-09-19 (-8d) | 2007-09-27 → 2007-09-20 (-7d) |  |  |  |  |  |
| 199 | Design Update | 2007-09-28 → 2007-09-20 (-8d) | 2007-09-28 → 2007-09-20 (-8d) |  |  |  |  |  |
| 200 | Development/Unit Test | 2007-09-28 → 2007-09-20 (-8d) | 2007-10-16 → 2007-10-08 (-8d) |  |  |  |  |  |
| 201 | **Allow user to Specify name of the remoteService.xml file externally** | 2007-10-16 → 2007-10-08 (-8d) | 2007-10-18 → 2007-10-10 (-8d) |  |  |  |  |  |
| 202 | Development/Unit Test | 2007-10-16 → 2007-10-08 (-8d) | 2007-10-18 → 2007-10-10 (-8d) |  |  |  |  |  |
| 203 | **Allow to use composition/class as attributes** | 2007-09-11 → 2007-09-20 (+9d) | 2007-09-19 → 2007-09-28 (+9d) |  |  | 13.5d → 0.5d |  |  |
| 204 | Design | 2007-09-11 → 2007-09-20 (+9d) | 2007-09-11 → 2007-09-21 (+10d) |  |  | 13.5d → 0.5d |  |  |
| 205 | Design Review | 2007-09-12 → 2007-09-21 (+9d) | 2007-09-12 → 2007-09-21 (+9d) |  |  | 13.5d → 0.5d |  |  |
| 206 | Design Update | 2007-09-12 → 2007-09-21 (+9d) | 2007-09-12 → 2007-09-21 (+9d) |  |  | 13.5d → 0.5d |  |  |
| 207 | Development/Unit Test | 2007-09-12 → 2007-09-21 (+9d) | 2007-09-19 → 2007-09-28 (+9d) |  |  | 13.5d → 0.5d |  |  |
| 208 | **Transient Variable Support** | 2007-09-19 → 2007-09-28 (+9d) | 2007-09-28 → 2007-10-10 (+12d) |  |  | 13.5d → 0.5d |  |  |
| 209 | Design | 2007-09-19 → 2007-09-28 (+9d) | 2007-09-20 → 2007-10-01 (+11d) |  |  | 13.5d → 0.5d |  |  |
| 210 | Design Review | 2007-09-20 → 2007-10-01 (+11d) | 2007-09-20 → 2007-10-01 (+11d) |  |  | 13.5d → 0.5d |  |  |
| 211 | Design Update | 2007-09-20 → 2007-10-02 (+12d) | 2007-09-20 → 2007-10-02 (+12d) |  |  | 13.5d → 0.5d |  |  |
| 212 | Development/Unit Test | 2007-09-21 → 2007-10-02 (+11d) | 2007-09-28 → 2007-10-10 (+12d) |  |  | 13.5d → 0.5d |  |  |
| 213 | **QA** | 2007-09-28 → 2007-09-20 (-8d) | 2007-10-30 → 2007-10-22 (-8d) |  |  |  |  |  |
| 214 | Test Development | 2007-09-28 → 2007-09-20 (-8d) | 2007-10-05 → 2007-09-27 (-8d) |  |  |  |  |  |
| 215 | Test Execution | 2007-10-18 → 2007-10-10 (-8d) | 2007-10-30 → 2007-10-22 (-8d) |  |  |  |  |  |
| 216 | Test Support | 2007-10-18 → 2007-10-10 (-8d) | 2007-10-30 → 2007-10-22 (-8d) |  |  |  |  |  |
| 217 | **Integration Testing** | 2007-10-30 → 2007-10-22 (-8d) | 2007-11-06 → 2007-10-30 (-7d) |  |  |  |  |  |
| 218 | Promote to Staging | 2007-10-30 → 2007-10-22 (-8d) | 2007-10-30 → 2007-10-23 (-7d) |  |  |  |  |  |
| 219 | Test | 2007-10-31 → 2007-10-23 (-8d) | 2007-11-06 → 2007-10-30 (-7d) |  |  |  |  |  |
| 220 | Test Support | 2007-10-31 → 2007-10-23 (-8d) | 2007-11-06 → 2007-10-30 (-7d) |  |  |  |  |  |
| 221 | **Transition** | 2007-10-18 → 2007-10-10 (-8d) | 2007-11-13 → 2007-11-05 (-8d) |  |  |  |  |  |
| 222 | **Documentation** | 2007-10-18 → 2007-10-10 (-8d) | 2007-11-01 → 2007-10-24 (-8d) |  |  |  |  |  |
| 223 | users guide | 2007-10-18 → 2007-10-10 (-8d) | 2007-10-25 → 2007-10-17 (-8d) |  |  |  |  |  |
| 224 | technical guide | 2007-10-18 → 2007-10-10 (-8d) | 2007-11-01 → 2007-10-24 (-8d) |  |  |  |  |  |
| 225 | How to examples | 2007-10-25 → 2007-10-17 (-8d) | 2007-11-01 → 2007-10-24 (-8d) |  |  |  |  |  |
| 226 | **Production Packaging** | 2007-11-01 → 2007-10-24 (-8d) | 2007-11-13 → 2007-11-05 (-8d) |  |  |  |  |  |
| 227 | Update Download Site | 2007-11-01 → 2007-10-24 (-8d) | 2007-11-07 → 2007-10-30 (-8d) |  |  |  |  |  |
| 228 | Develop Production promotion Documentation | 2007-11-01 → 2007-10-24 (-8d) | 2007-11-07 → 2007-10-30 (-8d) |  |  |  |  |  |
| 229 | Push to Produciton | 2007-11-07 → 2007-10-30 (-8d) | 2007-11-13 → 2007-11-05 (-8d) |  |  |  |  |  |

## Version 24 (saved 2007-09-18)

Note of the change: *** empty log message ***

Last finish 2007-11-05 → 2007-11-15 (+10d). Complete tasks 117 → 125.

Changed:

| ID | Task | Start | Finish | Duration | Complete | Total float | Predecessors |
| --- | --- | --- | --- | --- | --- | --- | --- |
| 1 | **caCORE SDK v4.0** |  | 2007-10-01 → 2007-10-09 (+8d) | 177.5d? → 183.5d? | 89% → 93% | 25.25d → 27.5d |  |
| 25 | **Construction** |  | 2007-08-24 A |  | 97% → 100% | 50.75d → none |  |
| 26 | **Iteration 1** |  | 2007-03-28 A |  | 98% → 100% | 156.75d → none |  |
| 31 | **caGrid Integration** |  | 2007-03-28 A |  | 97% → 100% | 156.75d → none |  |
| 63 | Release Packaging |  | 2007-03-28 A |  | 95% → 100% | 162.5d → none |  |
| 64 | **Iteration Plan** | 2007-03-27 A | 2007-03-28 A |  | 0% → 100% | 156.75d → none |  |
| 65 | Review Client Feature Request/Revise Task Plan | 2007-03-27 A | 2007-03-28 A |  | 0% → 100% | 162.5d → none |  |
| 66 | 3.2.1 Release Complete | 2007-03-28 A | 2007-03-28 A |  | 0% → 100% | 143d → none |  |
| 67 | **Iteration 2** |  | 2007-06-25 A |  | 99% → 100% | 93.75d → none |  |
| 68 | **SDK 4.0 Release (Beta 1)** |  | 2007-06-25 A |  | 99% → 100% | 93.75d → none |  |
| 74 | **Upgrade Code Generation Framework** |  | 2007-06-11 A |  | 99% → 100% | 103.75d → none |  |
| 93 | Rewrite XML schema generaotor |  | 2007-05-15 A |  | 90% → 100% | 129d → none |  |
| 105 | **Iteration 3** |  | 2007-05-11 A |  | 99% → 100% | 125.25d → none |  |
| 106 | **Release 4.0 (Open Source UML Tool Support)** |  | 2007-05-11 A |  | 99% → 100% | 125.25d → none |  |
| 108 | **Open Source Modeling Tool XMI Processor** |  | 2007-04-27 A |  | 96% → 100% | 135.25d → none |  |
| 116 | Evaluate LOE/Revise Task Plan for Development |  | 2007-04-19 A |  | 75% → 100% | 147d → none |  |
| 126 | **Iteration 4** |  | 2007-08-24 A |  | 93% → 100% | 50.75d → none |  |
| 127 | **Release 4.0 (Final Release)** |  | 2007-08-24 A |  | 93% → 100% | 50.75d → none |  |
| 140 | **Remove duplication of code due to security injection - ACEGI Framework** |  | 2007-07-20 A |  | 75% → 100% | 76.25d → none |  |
| 141 | Development/Unit Test |  | 2007-07-20 A |  | 75% → 100% | 82d → none |  |
| 152 | **QA** |  | 2007-08-24 A |  | 93% → 100% | 39.5d → none |  |
| 155 | Test Execution |  | 2007-08-24 A |  | 80% → 100% | 14.25d → none |  |
| 172 | **Transition** |  | 2007-10-01 → 2007-10-09 (+8d) | 25.5d → 31.5d | 4% → 28% | 25.25d → 27.5d |  |
| 173 | **Documentation** |  | 2007-10-01 → 2007-10-04 (+3d) | 25.5d → 28.5d | 6% → 35% | 25.25d → 30.5d |  |
| 174 | **SDK 4.0 Guide** |  | 2007-09-24 → 2007-09-27 (+3d) | 20.25d → 23.25d | 9% → 52% | 30.5d → 35.75d |  |
| 175 | Write Guide |  | 2007-09-11 A |  | 15% → 100% | 0d → none |  |
| 176 | Internal Review | 2007-09-12 A |  |  | 0% → 50% |  |  |
| 177 | Update Per Review |  | 2007-09-14 → 2007-09-19 (+5d) | 2d → 5d |  |  |  |
| 178 | Draft for Review By Tech Writing | 2007-09-14 → 2007-09-19 (+5d) | 2007-09-14 → 2007-09-19 (+5d) |  |  |  |  |
| 179 | Tech Writing Review | 2007-09-14 → 2007-09-19 (+5d) | 2007-09-24 → 2007-09-27 (+3d) |  |  | 5.25d → 35.75d |  |
| 180 | **SDK 4.0 Migration Guide** | 2007-09-14 → 2007-09-19 (+5d) | 2007-10-01 → 2007-10-04 (+3d) |  |  | 25.25d → 0d |  |
| 181 | Write Guide | 2007-09-14 → 2007-09-19 (+5d) | 2007-09-19 → 2007-09-24 (+5d) |  |  | 25.25d → 0d |  |
| 182 | Internal Review | 2007-09-19 → 2007-09-24 (+5d) | 2007-09-19 → 2007-09-24 (+5d) |  |  | 25.25d → 0d |  |
| 183 | Update Per Review | 2007-09-19 → 2007-09-24 (+5d) | 2007-09-21 → 2007-09-26 (+5d) |  |  | 25.25d → 0d |  |
| 184 | Draft for Review By Tech Writing | 2007-09-21 → 2007-09-26 (+5d) | 2007-09-21 → 2007-09-26 (+5d) |  |  | 25.25d → 0d |  |
| 185 | Tech Writing Review | 2007-09-21 → 2007-09-26 (+5d) | 2007-10-01 → 2007-10-04 (+3d) |  |  | 25.25d → 30.5d |  |
| 186 | **Production Packaging** | 2007-09-14 → 2007-09-26 (+12d) | 2007-09-27 → 2007-10-09 (+12d) |  |  |  |  |
| 187 | Update Download Site | 2007-09-14 → 2007-09-26 (+12d) | 2007-09-18 → 2007-09-28 (+10d) |  |  |  | 178 → 184, 178 |
| 188 | Develop Production promotion Documentation | 2007-09-18 → 2007-09-28 (+10d) | 2007-09-20 → 2007-10-02 (+12d) |  |  |  |  |
| 189 | Push to Produciton | 2007-09-20 → 2007-10-02 (+12d) | 2007-09-27 → 2007-10-09 (+12d) |  |  |  |  |
| 190 | 4.0 Release Complete | 2007-09-27 → 2007-10-09 (+12d) | 2007-09-27 → 2007-10-09 (+12d) |  |  |  |  |
| 191 | **caCORE SDK v4.X** |  | 2007-11-05 → 2007-11-15 (+10d) | 86.75d → 95d |  |  |  |
| 192 | **Iteration 1** |  | 2007-11-05 → 2007-11-15 (+10d) | 86.75d → 95d |  |  |  |
| 195 | **Construction** | 2007-09-18 → 2007-09-28 (+10d) | 2007-10-30 → 2007-11-09 (+10d) |  |  |  |  |
| 196 | **Support interfaces (including marker interfaces), abstract class, enumeration** | 2007-09-18 → 2007-09-28 (+10d) | 2007-10-08 → 2007-10-18 (+10d) |  |  |  |  |
| 197 | Design | 2007-09-18 → 2007-09-28 (+10d) | 2007-09-19 → 2007-10-01 (+12d) |  |  |  |  |
| 198 | Design Review | 2007-09-19 → 2007-10-02 (+13d) | 2007-09-20 → 2007-10-02 (+12d) |  |  |  |  |
| 199 | Design Update | 2007-09-20 → 2007-10-02 (+12d) | 2007-09-20 → 2007-10-02 (+12d) |  |  |  |  |
| 200 | Development/Unit Test | 2007-09-20 → 2007-10-03 (+13d) | 2007-10-08 → 2007-10-18 (+10d) |  |  |  |  |
| 201 | **Allow user to Specify name of the remoteService.xml file externally** | 2007-10-08 → 2007-10-19 (+11d) | 2007-10-10 → 2007-10-22 (+12d) |  |  |  |  |
| 202 | Development/Unit Test | 2007-10-08 → 2007-10-19 (+11d) | 2007-10-10 → 2007-10-22 (+12d) |  |  |  |  |
| 203 | **Allow to use composition/class as attributes** | 2007-09-20 → 2007-10-02 (+12d) | 2007-09-28 → 2007-10-10 (+12d) |  |  |  |  |
| 204 | Design | 2007-09-20 → 2007-10-02 (+12d) | 2007-09-21 → 2007-10-03 (+12d) |  |  |  |  |
| 205 | Design Review | 2007-09-21 → 2007-10-03 (+12d) | 2007-09-21 → 2007-10-03 (+12d) |  |  |  |  |
| 206 | Design Update | 2007-09-21 → 2007-10-03 (+12d) | 2007-09-21 → 2007-10-03 (+12d) |  |  |  |  |
| 207 | Development/Unit Test | 2007-09-21 → 2007-10-04 (+13d) | 2007-09-28 → 2007-10-10 (+12d) |  |  |  |  |
| 208 | **Transient Variable Support** | 2007-09-28 → 2007-10-11 (+13d) | 2007-10-10 → 2007-10-22 (+12d) |  |  |  |  |
| 209 | Design | 2007-09-28 → 2007-10-11 (+13d) | 2007-10-01 → 2007-10-11 (+10d) |  |  |  |  |
| 210 | Design Review | 2007-10-01 → 2007-10-12 (+11d) | 2007-10-01 → 2007-10-12 (+11d) |  |  |  |  |
| 211 | Design Update | 2007-10-02 → 2007-10-12 (+10d) | 2007-10-02 → 2007-10-12 (+10d) |  |  |  |  |
| 212 | Development/Unit Test | 2007-10-02 → 2007-10-12 (+10d) | 2007-10-10 → 2007-10-22 (+12d) |  |  |  |  |
| 213 | **QA** | 2007-09-20 → 2007-10-03 (+13d) | 2007-10-22 → 2007-11-01 (+10d) |  |  |  |  |
| 214 | Test Development | 2007-09-20 → 2007-10-03 (+13d) | 2007-09-27 → 2007-10-09 (+12d) |  |  |  |  |
| 215 | Test Execution | 2007-10-10 → 2007-10-23 (+13d) | 2007-10-22 → 2007-11-01 (+10d) |  |  |  |  |
| 216 | Test Support | 2007-10-10 → 2007-10-23 (+13d) | 2007-10-22 → 2007-11-01 (+10d) |  |  |  |  |
| 217 | **Integration Testing** | 2007-10-22 → 2007-11-02 (+11d) | 2007-10-30 → 2007-11-09 (+10d) |  |  |  |  |
| 218 | Promote to Staging | 2007-10-22 → 2007-11-02 (+11d) | 2007-10-23 → 2007-11-02 (+10d) |  |  |  |  |
| 219 | Test | 2007-10-23 → 2007-11-02 (+10d) | 2007-10-30 → 2007-11-09 (+10d) |  |  |  |  |
| 220 | Test Support | 2007-10-23 → 2007-11-02 (+10d) | 2007-10-30 → 2007-11-09 (+10d) |  |  |  |  |
| 221 | **Transition** | 2007-10-10 → 2007-10-23 (+13d) | 2007-11-05 → 2007-11-15 (+10d) |  |  |  |  |

| ID | Task | Start | Finish |
| --- | --- | --- | --- |
| 222 | **Documentation** | 2007-10-10 → 2007-10-23 (+13d) | 2007-10-24 → 2007-11-05 (+12d) |
| 223 | users guide | 2007-10-10 → 2007-10-23 (+13d) | 2007-10-17 → 2007-10-29 (+12d) |
| 224 | technical guide | 2007-10-10 → 2007-10-23 (+13d) | 2007-10-24 → 2007-11-05 (+12d) |
| 225 | How to examples | 2007-10-17 → 2007-10-30 (+13d) | 2007-10-24 → 2007-11-05 (+12d) |
| 226 | **Production Packaging** | 2007-10-24 → 2007-11-06 (+13d) | 2007-11-05 → 2007-11-15 (+10d) |
| 227 | Update Download Site | 2007-10-24 → 2007-11-06 (+13d) | 2007-10-30 → 2007-11-09 (+10d) |
| 228 | Develop Production promotion Documentation | 2007-10-24 → 2007-11-06 (+13d) | 2007-10-30 → 2007-11-09 (+10d) |
| 229 | Push to Produciton | 2007-10-30 → 2007-11-12 (+13d) | 2007-11-05 → 2007-11-15 (+10d) |

## Version 25 (saved 2007-10-01)

Note of the change: updated per 10/1 weekly status meeting

Last finish 2007-11-15 → 2007-11-21 (+6d). Complete tasks 125 → 129.

Added:

| ID | Task | Duration | Start | Finish | Predecessors | Resources |
| --- | --- | --- | --- | --- | --- | --- |
| 187 | Create Database Scripts | 2d | 2007-09-26 A | 2007-09-28 | 174 | Satish |
| 188 | QA Database Scripts and Argo Model | 5d | 2007-09-28 | 2007-10-05 | 187 | Aynur |
| 190 | Zope Site Approval | 2d | 2007-10-02 | 2007-10-04 | 189 | Avinash |

Changed:

| ID | Task | Start | Finish | Duration | Complete | Total float | Predecessors | Other |
| --- | --- | --- | --- | --- | --- | --- | --- | --- |
| 1 | **caCORE SDK v4.0** |  | 2007-10-09 → 2007-10-15 (+6d) | 183.5d? → 187.5d? | 93% → 94% | 27.5d → 27d |  |  |
| 172 | **Transition** |  | 2007-10-09 → 2007-10-15 (+6d) | 31.5d → 35.5d | 28% → 48% | 27.5d → 27d |  |  |
| 173 | **Documentation** |  | 2007-10-04 → 2007-10-15 (+11d) | 28.5d → 35.25d | 35% → 70% | 30.5d → 27.25d |  |  |
| 174 | **SDK 4.0 Guide** |  | 2007-09-27 A |  | 52% → 100% | 35.75d → none |  |  |
| 176 | Internal Review |  | 2007-09-12 A |  | 50% → 100% | 0d → none |  |  |
| 177 | Update Per Review | 2007-09-12 A | 2007-09-19 A |  | 0% → 100% | 0d → none |  |  |
| 178 | Draft for Review By Tech Writing | 2007-09-19 A | 2007-09-19 A |  | 0% → 100% | 0d → none |  |  |
| 179 | Tech Writing Review | 2007-09-19 A | 2007-09-27 A |  | 0% → 100% | 35.75d → none |  |  |
| 180 | **SDK 4.0 Migration Guide** | 2007-09-19 → 2007-09-28 A (+9d) | 2007-10-04 → 2007-10-15 (+11d) |  | 0% → 9% | 0d → 27.25d |  |  |
| 181 | Write Guide | 2007-09-19 → 2007-09-28 A (+9d) | 2007-09-24 → 2007-10-02 (+8d) |  | 0% → 33% | 0d → 27.25d | 178 → none | constraint none → start no earlier than 2007-09-28 |
| 182 | Internal Review | 2007-09-24 → 2007-10-03 (+9d) | 2007-09-24 → 2007-10-03 (+9d) |  |  | 0d → 27.25d |  |  |
| 183 | Update Per Review | 2007-09-24 → 2007-10-03 (+9d) | 2007-09-26 → 2007-10-05 (+9d) |  |  | 0d → 27.25d |  |  |
| 184 | Draft for Review By Tech Writing | 2007-09-26 → 2007-10-05 (+9d) | 2007-09-26 → 2007-10-05 (+9d) |  |  | 0d → 27.25d |  |  |
| 185 | Tech Writing Review | 2007-09-26 → 2007-10-05 (+9d) | 2007-10-04 → 2007-10-15 (+11d) |  |  | 30.5d → 27.25d |  |  |
| 186 | **Production Packaging** | 2007-09-26 A | 2007-10-09 → 2007-10-15 (+6d) | 9d → 13d | 0% → 6% | 0d → 27d |  |  |
| 189 | Update Zope Site | 2007-09-26 → 2007-09-28 (+2d) | 2007-09-28 → 2007-10-02 (+4d) |  |  |  | 184, 178 → 187, 178 | was named Update Download Site |
| 191 | Develop Production promotion Documentation | 2007-09-28 → 2007-10-04 (+6d) | 2007-10-02 → 2007-10-08 (+6d) |  |  | 0.5d → 0d | 189 → 190, 189 |  |
| 192 | Push to Produciton | 2007-10-02 → 2007-10-08 (+6d) | 2007-10-09 → 2007-10-15 (+6d) |  |  | 27.5d → 27d |  |  |
| 193 | 4.0 Release Complete | 2007-10-09 → 2007-10-15 (+6d) | 2007-10-09 → 2007-10-15 (+6d) |  |  | 27.5d → 27d |  |  |
| 194 | **caCORE SDK v4.X** |  | 2007-11-15 → 2007-11-21 (+6d) | 95d → 98.5d |  |  |  |  |
| 195 | **Iteration 1** |  | 2007-11-15 → 2007-11-21 (+6d) | 95d → 98.5d |  |  |  |  |
| 198 | **Construction** | 2007-09-28 → 2007-10-02 (+4d) | 2007-11-09 → 2007-11-14 (+5d) | 30d → 31.5d |  | 0d → 1.5d |  |  |
| 199 | **Support interfaces (including marker interfaces), abstract class, enumeration** | 2007-09-28 → 2007-10-02 (+4d) | 2007-10-18 → 2007-10-22 (+4d) |  |  | 0d → 1.5d |  |  |
| 200 | Design | 2007-09-28 → 2007-10-02 (+4d) | 2007-10-01 → 2007-10-03 (+2d) |  |  | 0d → 1.5d |  |  |
| 201 | Design Review | 2007-10-02 → 2007-10-04 (+2d) | 2007-10-02 → 2007-10-04 (+2d) |  |  | 0d → 1.5d |  |  |
| 202 | Design Update | 2007-10-02 → 2007-10-04 (+2d) | 2007-10-02 → 2007-10-04 (+2d) |  |  | 0d → 1.5d |  |  |
| 203 | Development/Unit Test | 2007-10-03 → 2007-10-05 (+2d) | 2007-10-18 → 2007-10-22 (+4d) |  |  | 0d → 1.5d |  |  |
| 204 | **Allow user to Specify name of the remoteService.xml file externally** | 2007-10-19 → 2007-10-23 (+4d) | 2007-10-22 → 2007-10-24 (+2d) |  |  | 0d → 1.5d |  |  |
| 205 | Development/Unit Test | 2007-10-19 → 2007-10-23 (+4d) | 2007-10-22 → 2007-10-24 (+2d) |  |  | 0d → 1.5d |  |  |
| 206 | **Allow to use composition/class as attributes** | 2007-10-02 → 2007-10-08 (+6d) | 2007-10-10 → 2007-10-16 (+6d) |  |  | 0.5d → 0d |  |  |
| 207 | Design | 2007-10-02 → 2007-10-08 (+6d) | 2007-10-03 → 2007-10-09 (+6d) |  |  | 0.5d → 0d |  |  |
| 208 | Design Review | 2007-10-03 → 2007-10-09 (+6d) | 2007-10-03 → 2007-10-09 (+6d) |  |  | 0.5d → 0d |  |  |
| 209 | Design Update | 2007-10-03 → 2007-10-09 (+6d) | 2007-10-03 → 2007-10-09 (+6d) |  |  | 0.5d → 0d |  |  |
| 210 | Development/Unit Test | 2007-10-04 → 2007-10-10 (+6d) | 2007-10-10 → 2007-10-16 (+6d) |  |  | 0.5d → 0d |  |  |
| 211 | **Transient Variable Support** | 2007-10-11 → 2007-10-17 (+6d) | 2007-10-22 → 2007-10-26 (+4d) |  |  | 0.5d → 0d |  |  |
| 212 | Design | 2007-10-11 → 2007-10-17 (+6d) | 2007-10-11 → 2007-10-17 (+6d) |  |  | 0.5d → 0d |  |  |
| 213 | Design Review | 2007-10-12 → 2007-10-18 (+6d) | 2007-10-12 → 2007-10-18 (+6d) |  |  | 0.5d → 0d |  |  |
| 214 | Design Update | 2007-10-12 → 2007-10-18 (+6d) | 2007-10-12 → 2007-10-18 (+6d) |  |  | 0.5d → 0d |  |  |
| 215 | Development/Unit Test | 2007-10-12 → 2007-10-18 (+6d) | 2007-10-22 → 2007-10-26 (+4d) |  |  | 0.5d → 0d |  |  |
| 216 | **QA** | 2007-10-03 → 2007-10-05 (+2d) | 2007-11-01 → 2007-11-07 (+6d) | 22d → 23.5d |  |  |  |  |
| 217 | Test Development | 2007-10-03 → 2007-10-05 (+2d) | 2007-10-09 → 2007-10-11 (+2d) |  |  | 21.5d → 23d |  |  |
| 218 | Test Execution | 2007-10-23 → 2007-10-26 (+3d) | 2007-11-01 → 2007-11-07 (+6d) |  |  |  |  |  |
| 219 | Test Support | 2007-10-23 → 2007-10-26 (+3d) | 2007-11-01 → 2007-11-07 (+6d) |  |  |  |  |  |
| 220 | **Integration Testing** | 2007-11-02 → 2007-11-07 (+5d) | 2007-11-09 → 2007-11-14 (+5d) |  |  |  |  |  |
| 221 | Promote to Staging | 2007-11-02 → 2007-11-07 (+5d) | 2007-11-02 → 2007-11-07 (+5d) |  |  |  |  |  |
| 222 | Test | 2007-11-02 → 2007-11-08 (+6d) | 2007-11-09 → 2007-11-14 (+5d) |  |  |  |  |  |
| 223 | Test Support | 2007-11-02 → 2007-11-08 (+6d) | 2007-11-09 → 2007-11-14 (+5d) |  |  |  |  |  |
| 224 | **Transition** | 2007-10-23 → 2007-10-26 (+3d) | 2007-11-15 → 2007-11-21 (+6d) |  |  |  |  |  |
| 225 | **Documentation** | 2007-10-23 → 2007-10-26 (+3d) | 2007-11-05 → 2007-11-09 (+4d) |  |  |  |  |  |
| 226 | users guide | 2007-10-23 → 2007-10-26 (+3d) | 2007-10-29 → 2007-11-02 (+4d) |  |  |  |  |  |
| 227 | technical guide | 2007-10-23 → 2007-10-26 (+3d) | 2007-11-05 → 2007-11-09 (+4d) |  |  |  |  |  |
| 228 | How to examples | 2007-10-30 → 2007-11-02 (+3d) | 2007-11-05 → 2007-11-09 (+4d) |  |  |  |  |  |
| 229 | **Production Packaging** | 2007-11-06 → 2007-11-09 (+3d) | 2007-11-15 → 2007-11-21 (+6d) |  |  |  |  |  |
| 230 | Update Download Site | 2007-11-06 → 2007-11-09 (+3d) | 2007-11-09 → 2007-11-15 (+6d) |  |  |  |  |  |
| 231 | Develop Production promotion Documentation | 2007-11-06 → 2007-11-09 (+3d) | 2007-11-09 → 2007-11-15 (+6d) |  |  |  |  |  |
| 232 | Push to Produciton | 2007-11-12 → 2007-11-15 (+3d) | 2007-11-15 → 2007-11-21 (+6d) |  |  |  |  |  |

## Version 26 (saved 2007-10-29)

Note of the change: Updates for 4.0.1

Last finish 2007-11-21 → 2007-12-21 (+30d). Complete tasks 129 → 138.

Changed:

| ID | Task | Start | Finish | Duration | Complete | Total float | Predecessors | Other |
| --- | --- | --- | --- | --- | --- | --- | --- | --- |
| 1 | **caCORE SDK v4.0** |  | 2007-10-15 → 2007-11-02 (+18d) | 187.5d? → 202d? | 94% → 98% | 27d → 34.5d |  |  |
| 172 | **Transition** |  | 2007-10-15 → 2007-11-02 (+18d) | 35.5d → 50d | 48% → 86% | 27d → 34.5d |  |  |
| 173 | **Documentation** |  | 2007-10-15 A |  | 70% → 100% | 27.25d → none |  |  |
| 174 | **SDK 4.0 Guide** |  |  |  |  |  | 165 → none |  |
| 180 | **SDK 4.0 Migration Guide** |  | 2007-10-15 A |  | 9% → 100% | 27.25d → none |  |  |
| 181 | Write Guide |  | 2007-10-02 A |  | 33% → 100% | 27.25d → none |  |  |
| 182 | Internal Review | 2007-10-03 A | 2007-10-03 A |  | 0% → 100% | 27.25d → none |  |  |
| 183 | Update Per Review | 2007-10-03 A | 2007-10-05 A |  | 0% → 100% | 27.25d → none |  |  |
| 184 | Draft for Review By Tech Writing | 2007-10-05 A | 2007-10-05 A |  | 0% → 100% | 27.25d → none |  |  |
| 185 | Tech Writing Review | 2007-10-05 A | 2007-10-15 A |  | 0% → 100% | 27.25d → none |  |  |
| 186 | **Production Packaging** |  | 2007-10-15 → 2007-11-02 (+18d) | 13d → 27.5d | 6% → 58% | 27d → 34.5d |  |  |
| 187 | Create Database Scripts |  | 2007-09-28 A |  | 50% → 100% | 0d → none |  |  |
| 189 | Update Zope Site | 2007-09-28 A | 2007-10-02 A |  | 0% → 100% | 0d → none | 187, 178 → 187 |  |
| 190 | Zope Site Approval | 2007-10-02 A | 2007-10-04 A |  | 0% → 100% | 0d → none |  |  |
| 191 | Develop Production promotion Documentation | 2007-10-04 A | 2007-10-08 A |  | 0% → 100% | 0d → none | 190, 189 → 190 |  |
| 192 | Push to Produciton | 2007-10-08 → 2007-10-29 A (+21d) | 2007-10-15 → 2007-11-02 (+18d) |  | 0% → 50% | 27d → 0d |  | resources Terpsys → Terpsys; Satish |
| 193 | 4.0 Release Complete | 2007-10-15 → 2007-11-02 (+18d) | 2007-10-15 → 2007-11-02 (+18d) |  |  | 27d → 34.5d |  |  |
| 194 | **caCORE SDK v4.0.1** | 2007-07-06 → 2007-10-08 (+94d) | 2007-11-21 → 2007-12-21 (+30d) | 98.5d → 54d |  |  |  | was named caCORE SDK v4.X |
| 195 | **Iteration 1** | 2007-07-06 → 2007-10-08 (+94d) | 2007-11-21 → 2007-12-21 (+30d) | 98.5d → 54d |  |  |  |  |
| 196 | **Elaboration** | 2007-07-06 → 2007-10-29 (+115d) | 2007-07-10 → 2007-10-31 (+113d) |  |  | 95.5d → 36.5d |  |  |
| 197 | Review Client Feature Request/Revise Task Plan | 2007-07-06 → 2007-10-29 (+115d) | 2007-07-10 → 2007-10-31 (+113d) |  |  | 95.5d → 36.5d |  | constraint start no earlier than 2007-07-06 → start no earlier than 2007-10-29 |
| 198 | **Construction** | 2007-10-02 → 2007-10-08 (+6d) | 2007-11-14 → 2007-12-14 (+30d) | 31.5d → 49.5d |  | 1.5d → 4.5d |  |  |
| 199 | **Support interfaces (including marker interfaces), abstract class, enumeration** | 2007-10-02 → 2007-11-05 (+34d) | 2007-10-22 → 2007-11-23 (+32d) |  |  | 1.5d → 0d |  |  |
| 200 | Design | 2007-10-02 → 2007-11-05 (+34d) | 2007-10-03 → 2007-11-06 (+34d) |  |  | 1.5d → 0d | 189 → 192 |  |
| 201 | Design Review | 2007-10-04 → 2007-11-06 (+33d) | 2007-10-04 → 2007-11-06 (+33d) |  |  | 1.5d → 0d |  |  |
| 202 | Design Update | 2007-10-04 → 2007-11-07 (+34d) | 2007-10-04 → 2007-11-07 (+34d) |  |  | 1.5d → 0d |  |  |
| 203 | Development/Unit Test | 2007-10-05 → 2007-11-07 (+33d) | 2007-10-22 → 2007-11-23 (+32d) |  |  | 1.5d → 0d |  |  |
| 204 | **Allow user to Specify name of the remoteService.xml file externally** | 2007-10-23 → 2007-11-23 (+31d) | 2007-10-24 → 2007-11-27 (+34d) |  |  | 1.5d → 0d |  |  |
| 205 | Development/Unit Test | 2007-10-23 → 2007-11-23 (+31d) | 2007-10-24 → 2007-11-27 (+34d) |  |  | 1.5d → 0d |  |  |
| 216 | **QA** | 2007-10-05 → 2007-11-07 (+33d) | 2007-11-07 → 2007-12-07 (+30d) | 23.5d → 22d |  |  |  |  |
| 217 | Test Development | 2007-10-05 → 2007-11-07 (+33d) | 2007-10-11 → 2007-11-14 (+34d) |  |  | 23d → 21.5d |  |  |
| 218 | Test Execution | 2007-10-26 → 2007-11-27 (+32d) | 2007-11-07 → 2007-12-07 (+30d) |  |  |  |  |  |
| 219 | Test Support | 2007-10-26 → 2007-11-27 (+32d) | 2007-11-07 → 2007-12-07 (+30d) |  |  |  |  |  |
| 220 | **Integration Testing** | 2007-11-07 → 2007-12-07 (+30d) | 2007-11-14 → 2007-12-14 (+30d) |  |  |  |  |  |
| 221 | Promote to Staging | 2007-11-07 → 2007-12-07 (+30d) | 2007-11-07 → 2007-12-07 (+30d) |  |  |  |  |  |
| 222 | Test | 2007-11-08 → 2007-12-10 (+32d) | 2007-11-14 → 2007-12-14 (+30d) |  |  |  |  |  |
| 223 | Test Support | 2007-11-08 → 2007-12-10 (+32d) | 2007-11-14 → 2007-12-14 (+30d) |  |  |  |  |  |
| 224 | **Transition** | 2007-10-26 → 2007-11-27 (+32d) | 2007-11-21 → 2007-12-21 (+30d) |  |  |  |  |  |
| 225 | **Documentation** | 2007-10-26 → 2007-11-27 (+32d) | 2007-11-09 → 2007-12-11 (+32d) |  |  |  |  |  |
| 226 | users guide | 2007-10-26 → 2007-11-27 (+32d) | 2007-11-02 → 2007-12-04 (+32d) |  |  |  |  |  |
| 227 | technical guide | 2007-10-26 → 2007-11-27 (+32d) | 2007-11-09 → 2007-12-11 (+32d) |  |  |  |  |  |
| 228 | How to examples | 2007-11-02 → 2007-12-04 (+32d) | 2007-11-09 → 2007-12-11 (+32d) |  |  |  |  |  |
| 229 | **Production Packaging** | 2007-11-09 → 2007-12-11 (+32d) | 2007-11-21 → 2007-12-21 (+30d) |  |  |  |  |  |
| 230 | Update Download Site | 2007-11-09 → 2007-12-11 (+32d) | 2007-11-15 → 2007-12-17 (+32d) |  |  |  |  |  |
| 231 | Develop Production promotion Documentation | 2007-11-09 → 2007-12-11 (+32d) | 2007-11-15 → 2007-12-17 (+32d) |  |  |  |  |  |
| 232 | Push to Produciton | 2007-11-15 → 2007-12-17 (+32d) | 2007-11-21 → 2007-12-21 (+30d) |  |  |  |  |  |
